# УП_Матвих

How a schedule from MS Project changed from version to version. A marks actual dates.

## Version 1 (data date 2025-04-01, saved 2026-11-09)

| ID | WBS | Task | Duration | Start | Finish | Predecessors | Complete | Total float | Constraint |
| --- | --- | --- | --- | --- | --- | --- | --- | --- | --- |
| 1 | 1 | **Этап 1. Инициация проекта и анализ производства** | 14.5d | 2025-02-03 05:00 A | 2025-02-21 14:00 A |  | 100% |  |  |
| 2 |  | Утверждение концепции и устава проекта | 3d | 2025-02-03 05:00 A | 2025-02-05 13:00 A |  | 100% |  |  |
| 3 |  | Обследование производственной линии и участков контроля | 5d | 2025-02-05 14:00 A | 2025-02-12 13:00 A | 2 | 100% |  |  |
| 4 |  | Сбор и систематизация требований к системе | 6d | 2025-02-10 14:00 A | 2025-02-18 13:00 A | 2 | 100% |  |  |
| 5 |  | Изучение требований промышленной безопасности и ГОСТ | 4d | 2025-02-12 14:00 A | 2025-02-18 13:00 A | 3 | 100% |  |  |
| 6 |  | Анализ существующих систем машинного зрения | 4d | 2025-02-12 14:00 A | 2025-02-18 13:00 A | 3 | 100% |  |  |
| 7 |  | Формирование бэклога и критериев приёмки | 3d | 2025-02-18 14:00 A | 2025-02-21 13:00 A | 4, 5, 6 | 100% |  |  |
| 8 |  | Создание репозитория и настройка CI/CD-конвейера | 3d | 2025-02-05 09:00 A | 2025-02-07 18:00 A | 2SS+2d | 100% |  |  |
| 9 |  | Развёртывание GPU-стенда и средств разметки | 5d | 2025-02-10 09:00 A | 2025-02-14 18:00 A | 8 | 100% |  |  |
| 10 |  | Веха 1. Требования и план проекта согласованы | 0d | 2025-02-21 14:00 A | 2025-02-21 14:00 A | 7, 9 | 100% |  |  |
| 11 | 2 | **Этап 2. Проектирование системы технического зрения** | 21d | 2025-02-21 14:00 A | 2025-03-24 14:00 A |  | 100% |  |  |
| 12 |  | Разработка архитектуры системы технического зрения | 6d | 2025-02-21 14:00 A | 2025-03-03 13:00 A | 10 | 100% |  |  |
| 13 |  | Проектирование интерфейса оператора линии | 8d | 2025-02-21 14:00 A | 2025-03-05 13:00 A | 10 | 100% |  |  |
| 14 |  | Проектирование интеграции с АСУ ТП | 6d | 2025-03-03 14:00 A | 2025-03-11 13:00 A | 12 | 100% |  |  |
| 15 |  | Проектирование схемы БД истории дефектов | 5d | 2025-03-04 14:00 A | 2025-03-11 13:00 A | 12 | 100% |  |  |
| 16 |  | Проектирование защиты данных и доступа | 5d | 2025-03-03 14:00 A | 2025-03-10 13:00 A | 12 | 100% |  |  |
| 17 |  | Разработка технического задания и протоколов обмена | 6d | 2025-03-11 14:00 A | 2025-03-19 13:00 A | 13, 14, 15, 16 | 100% |  |  |
| 18 |  | Разработка макетов экранов оператора | 6d | 2025-03-05 14:00 A | 2025-03-13 13:00 A | 13 | 100% |  |  |
| 19 |  | Согласование макетов с заказчиком | 4d | 2025-03-13 14:00 A | 2025-03-19 13:00 A | 18 | 100% |  |  |
| 20 |  | Рецензирование архитектурных решений | 3d | 2025-03-19 14:00 A | 2025-03-24 13:00 A | 17 | 100% |  |  |
| 21 |  | Веха 2. Архитектура системы согласована | 0d | 2025-03-24 14:00 A | 2025-03-24 14:00 A | 19, 20 | 100% |  |  |
| 22 | 3 | **Этап 3. Формирование датасета и обучение модели** | 32d | 2025-03-24 14:00 A | 2025-05-13 13:00 |  | 8% | 0d |  |
| 23 |  | Настройка конвейера сбора и обработки изображений | 8d | 2025-03-24 14:00 A | 2025-04-03 13:00 | 21 | 80% |  |  |
| 24 |  | Калибровка камер и освещения | 6d | 2025-04-03 14:00 A | 2025-04-11 13:00 | 23 | 1% |  |  |
| 25 |  | Сбор исходного датасета изображений | 6d | 2025-04-03 14:00 A | 2025-04-11 13:00 | 23 | 1% |  |  |
| 26 |  | Разметка изображений и выделение дефектов | 10d | 2025-04-11 14:00 | 2025-04-25 13:00 | 24, 25 |  |  | must start on 2025-04-11 14:00 |
| 27 |  | Аугментация и балансировка датасета | 6d | 2025-04-11 14:00 | 2025-04-21 13:00 | 25 |  |  |  |
| 28 |  | Разделение данных на обучающую и тестовую выборки | 5d | 2025-04-11 14:00 | 2025-04-18 13:00 | 25 |  |  |  |
| 29 |  | Обучение базовой модели детекции дефектов | 8d | 2025-04-25 14:00 | 2025-05-13 13:00 | 26 |  |  |  |
| 30 |  | Валидация модели на контрольной выборке | 4d | 2025-04-03 14:00 | 2025-04-09 13:00 | 23 |  |  |  |
| 31 |  | Анализ ошибок и ложных срабатываний | 6d | 2025-04-11 14:00 | 2025-04-21 13:00 | 25 |  |  |  |
| 32 |  | Доразметка редких видов дефектов | 6d | 2025-04-03 14:00 A | 2025-04-11 13:00 | 15, 23 | 1% |  |  |
| 33 |  | Повторное обучение модели на расширенном датасете | 5d | 2025-04-21 14:00 | 2025-04-28 13:00 | 31SF+2d |  |  |  |
| 34 |  | Квантование и оптимизация модели для инференса | 7d | 2025-04-25 14:00 | 2025-05-12 13:00 | 24, 26, 27, 28, 32 |  |  | start no earlier than 2025-04-25 14:00 |
| 35 |  | Тестирование скорости инференса | 5d | 2025-04-30 14:00 | 2025-05-12 13:00 | 34FF+1d |  |  |  |
| 36 |  | Веха 3. Модель обучена и оптимизирована | 0d | 2025-05-07 14:00 | 2025-05-07 14:00 | 30, 33, 34, 35 |  |  |  |
| 37 | 4 | **Этап 4. Интеграция с производственной инфраструктурой** | 26.5d | 2025-05-07 14:00 | 2025-06-17 13:00 |  |  | 0d |  |
| 38 |  | Разработка серверной службы обработки кадров | 8d | 2025-05-07 14:00 | 2025-05-20 13:00 | 36 |  |  |  |
| 39 |  | Интеграция с промышленной АСУ ТП | 7d | 2025-05-19 14:00 | 2025-05-28 13:00 | 38 |  |  |  |
| 40 |  | Интеграция с системой отбраковки | 5d | 2025-05-19 14:00 | 2025-05-26 13:00 | 24, 38 |  |  |  |
| 41 |  | Интеграция с конвейерной линией | 4d | 2025-05-19 14:00 | 2025-05-23 13:00 | 30, 38 |  |  |  |
| 42 |  | Интеграция с MES-системой предприятия | 6d | 2025-05-20 14:00 | 2025-05-28 13:00 | 27, 38 |  |  |  |
| 43 |  | Настройка мониторинга и журналирования | 4d | 2025-05-19 14:00 | 2025-05-23 13:00 | 38 |  |  |  |
| 44 |  | Проверка соответствия требованиям безопасности | 5d | 2025-05-26 14:00 | 2025-06-02 13:00 | 16, 40 |  |  |  |
| 45 |  | Регрессионное тестирование интеграций | 6d | 2025-06-02 14:00 | 2025-06-10 13:00 | 39, 40, 41, 42, 43, 44 |  |  |  |
| 46 |  | Тестирование отказоустойчивости при обрыве связи | 4d | 2025-06-10 14:00 | 2025-06-17 13:00 | 43, 45 |  |  |  |
| 47 |  | Веха 4. Интеграция завершена | 0d | 2025-06-16 14:00 | 2025-06-16 14:00 | 45, 46 |  |  |  |
| 48 | 5 | **Этап 5. Тестирование и опытная эксплуатация** | 47.5d | 2025-05-07 14:00 | 2025-07-16 14:00 |  |  | 0d |  |
| 49 |  | Разработка тест-плана и тест-кейсов | 5d | 2025-05-07 14:00 | 2025-05-15 13:00 | 36 |  |  |  |
| 50 |  | Функциональное тестирование | 8d | 2025-06-10 14:00 | 2025-06-23 13:00 | 45, 49 |  |  |  |
| 51 |  | Оценка удобства работы оператора | 4d | 2025-06-20 14:00 | 2025-06-26 13:00 | 50 |  |  |  |
| 52 |  | Проверка защищённости и прав доступа | 5d | 2025-06-20 14:00 | 2025-06-27 13:00 | 44, 50 |  |  |  |
| 53 |  | Тестирование на целевом оборудовании линии | 5d | 2025-06-20 14:00 | 2025-06-27 13:00 | 50 |  |  |  |
| 54 |  | Тестирование при деградации освещения и связи | 3d | 2025-06-20 14:00 | 2025-06-25 13:00 | 29, 50 |  |  |  |
| 55 |  | Исправление выявленных дефектов системы | 10d | 2025-06-27 14:00 | 2025-07-11 13:00 | 51, 52, 53, 54 |  |  | finish no later than 2025-07-16 13:00 |
| 56 |  | Подготовка отчёта о тестировании | 3d | 2025-07-11 14:00 | 2025-07-16 13:00 | 55 |  |  |  |
| 57 |  | Веха 5. Тестирование завершено | 0d | 2025-07-16 14:00 | 2025-07-16 14:00 | 56 |  |  |  |
| 58 | 6 | **Этап 6. Внедрение и сопровождение** | 131.5d | 2025-02-07 05:00 | 2025-08-18 13:00 |  |  | 0d |  |
| 59 |  | Подготовка руководства оператора | 4d | 2025-07-16 14:00 | 2025-07-22 13:00 | 57 |  |  |  |
| 60 |  | Обучение операторов и инженеров ОТК | 3d | 2025-07-22 14:00 | 2025-07-25 13:00 | 59 |  |  |  |
| 61 |  | Настройка продуктивной среды и резервного копирования | 3d | 2025-07-16 14:00 | 2025-07-21 13:00 | 43, 57 |  |  |  |
| 62 |  | Развёртывание системы на производственной линии | 5d | 2025-07-16 14:00 | 2025-07-23 13:00 | 57 |  |  |  |
| 63 |  | Проведение приёмочных испытаний с заказчиком | 4d | 2025-07-25 14:00 | 2025-07-31 13:00 | 57, 60 |  |  | must finish on 2025-07-31 13:00 |
| 64 |  | Передача документации и исходного кода | 3d | 2025-07-23 14:00 | 2025-07-28 13:00 | 59, 62 |  |  |  |
| 65 |  | Опытно-промышленная эксплуатация | 6d | 2025-07-31 14:00 | 2025-08-08 13:00 | 63 |  |  |  |
| 66 |  | Анализ обратной связи операторов и корректировка | 4d | 2025-08-08 14:00 | 2025-08-14 13:00 | 62, 63, 65 |  |  |  |
| 67 |  | Веха 6. Система введена в промышленную эксплуатацию | 0d | 2025-08-14 14:00 | 2025-08-14 14:00 | 61, 64, 66 |  |  |  |
| 68 | 6.10 | **Совещание** | 130d | 2025-02-07 05:00 | 2025-08-15 06:00 |  |  | 0d |  |
| 69 |  | Совещание 1 | 1h | 2025-02-07 05:00 | 2025-02-07 06:00 |  |  |  | start no earlier than 2025-02-07 05:00 |
| 70 |  | Совещание 2 | 1h | 2025-02-14 05:00 | 2025-02-14 06:00 |  |  |  | start no earlier than 2025-02-14 05:00 |

| ID | Task | Duration | Start | Finish | Predecessors | Constraint |
| --- | --- | --- | --- | --- | --- | --- |
| 71 | Совещание 3 | 1h | 2025-02-21 05:00 | 2025-02-21 06:00 |  | start no earlier than 2025-02-21 05:00 |
| 72 | Совещание 4 | 1h | 2025-02-28 05:00 | 2025-02-28 06:00 |  | start no earlier than 2025-02-28 05:00 |
| 73 | Совещание 5 | 1h | 2025-03-07 05:00 | 2025-03-07 06:00 |  | start no earlier than 2025-03-07 05:00 |
| 74 | Совещание 6 | 1h | 2025-03-14 05:00 | 2025-03-14 06:00 |  | start no earlier than 2025-03-14 05:00 |
| 75 | Совещание 7 | 1h | 2025-03-21 05:00 | 2025-03-21 06:00 |  | start no earlier than 2025-03-21 05:00 |
| 76 | Совещание 8 | 1h | 2025-03-28 05:00 | 2025-03-28 06:00 |  | start no earlier than 2025-03-28 05:00 |
| 77 | Совещание 9 | 1h | 2025-04-04 05:00 | 2025-04-04 06:00 |  | start no earlier than 2025-04-04 05:00 |
| 78 | Совещание 10 | 1h | 2025-04-11 05:00 | 2025-04-11 06:00 |  | start no earlier than 2025-04-11 05:00 |
| 79 | Совещание 11 | 1h | 2025-04-18 05:00 | 2025-04-18 06:00 |  | start no earlier than 2025-04-18 05:00 |
| 80 | Совещание 12 | 1h | 2025-04-25 05:00 | 2025-04-25 06:00 |  | start no earlier than 2025-04-25 05:00 |
| 81 | Совещание 13 | 1h | 2025-05-02 05:00 | 2025-05-02 06:00 |  | start no earlier than 2025-05-02 05:00 |
| 82 | Совещание 14 | 1h | 2025-05-09 05:00 | 2025-05-09 06:00 |  | start no earlier than 2025-05-09 05:00 |
| 83 | Совещание 15 | 1h | 2025-05-16 05:00 | 2025-05-16 06:00 |  | start no earlier than 2025-05-16 05:00 |
| 84 | Совещание 16 | 1h | 2025-05-23 05:00 | 2025-05-23 06:00 |  | start no earlier than 2025-05-23 05:00 |
| 85 | Совещание 17 | 1h | 2025-05-30 05:00 | 2025-05-30 06:00 |  | start no earlier than 2025-05-30 05:00 |
| 86 | Совещание 18 | 1h | 2025-06-06 05:00 | 2025-06-06 06:00 |  | start no earlier than 2025-06-06 05:00 |
| 87 | Совещание 19 | 1h | 2025-06-13 05:00 | 2025-06-13 06:00 |  | start no earlier than 2025-06-13 05:00 |
| 88 | Совещание 20 | 1h | 2025-06-20 05:00 | 2025-06-20 06:00 |  | start no earlier than 2025-06-20 05:00 |
| 89 | Совещание 21 | 1h | 2025-06-27 05:00 | 2025-06-27 06:00 |  | start no earlier than 2025-06-27 05:00 |
| 90 | Совещание 22 | 1h | 2025-07-04 05:00 | 2025-07-04 06:00 |  | start no earlier than 2025-07-04 05:00 |
| 91 | Совещание 23 | 1h | 2025-07-11 05:00 | 2025-07-11 06:00 |  | start no earlier than 2025-07-11 05:00 |
| 92 | Совещание 24 | 1h | 2025-07-18 05:00 | 2025-07-18 06:00 |  | start no earlier than 2025-07-18 05:00 |
| 93 | Совещание 25 | 1h | 2025-07-25 05:00 | 2025-07-25 06:00 |  | start no earlier than 2025-07-25 05:00 |
| 94 | Совещание 26 | 1h | 2025-08-01 05:00 | 2025-08-01 06:00 |  | start no earlier than 2025-08-01 05:00 |
| 95 | Совещание 27 | 1h | 2025-08-08 05:00 | 2025-08-08 06:00 |  | start no earlier than 2025-08-08 05:00 |
| 96 | Совещание 28 | 1h | 2025-08-15 05:00 | 2025-08-15 06:00 |  | start no earlier than 2025-08-15 05:00 |
| 97 | Закрытие проекта и архивирование | 2d | 2025-08-14 14:00 | 2025-08-18 13:00 | 67 |  |

## Version 2 (data date 2027-03-31, saved 2026-11-17)

Note of the change: Align Matvih report to 2027 schedule and Samara salary rates

Last finish 2025-08-18 → 2027-08-17 (+729d).

Changed:

| ID | Task | Start | Finish | Duration | Other |
| --- | --- | --- | --- | --- | --- |
| 1 | **Этап 1. Инициация проекта и анализ производства** | 2025-02-03 05:00 A → 2027-02-03 09:00 A (+730d) | 2025-02-21 14:00 A → 2027-02-22 18:00 A (+731d) | 14.5d → 14d | baseline start 2025-02-03 05:00 → 2027-02-03 09:00; baseline finish 2025-02-21 14:00 → 2027-02-22 18:00 |
| 2 | Утверждение концепции и устава проекта | 2025-02-03 05:00 A → 2027-02-03 09:00 A (+730d) | 2025-02-05 13:00 A → 2027-02-05 18:00 A (+730d) |  | baseline start 2025-02-03 05:00 → 2027-02-03 09:00; baseline finish 2025-02-05 13:00 → 2027-02-05 18:00 |
| 3 | Обследование производственной линии и участков контроля | 2025-02-05 14:00 A → 2027-02-05 09:00 A (+730d) | 2025-02-12 13:00 A → 2027-02-11 18:00 A (+729d) |  | baseline start 2025-02-05 14:00 → 2027-02-05 09:00; baseline finish 2025-02-12 13:00 → 2027-02-11 18:00 |
| 4 | Сбор и систематизация требований к системе | 2025-02-10 14:00 A → 2027-02-10 09:00 A (+730d) | 2025-02-18 13:00 A → 2027-02-17 18:00 A (+729d) |  | baseline start 2025-02-10 14:00 → 2027-02-10 09:00; baseline finish 2025-02-18 13:00 → 2027-02-17 18:00 |
| 5 | Изучение требований промышленной безопасности и ГОСТ | 2025-02-12 14:00 A → 2027-02-12 09:00 A (+730d) | 2025-02-18 13:00 A → 2027-02-17 18:00 A (+729d) |  | baseline start 2025-02-12 14:00 → 2027-02-12 09:00; baseline finish 2025-02-18 13:00 → 2027-02-17 18:00 |
| 6 | Анализ существующих систем машинного зрения | 2025-02-12 14:00 A → 2027-02-12 09:00 A (+730d) | 2025-02-18 13:00 A → 2027-02-17 18:00 A (+729d) |  | baseline start 2025-02-12 14:00 → 2027-02-12 09:00; baseline finish 2025-02-18 13:00 → 2027-02-17 18:00 |
| 7 | Формирование бэклога и критериев приёмки | 2025-02-18 14:00 A → 2027-02-18 09:00 A (+730d) | 2025-02-21 13:00 A → 2027-02-22 18:00 A (+731d) |  | baseline start 2025-02-18 14:00 → 2027-02-18 09:00; baseline finish 2025-02-21 13:00 → 2027-02-22 18:00 |
| 8 | Создание репозитория и настройка CI/CD-конвейера | 2025-02-05 09:00 A → 2027-02-05 09:00 A (+730d) | 2025-02-07 18:00 A → 2027-02-09 18:00 A (+732d) |  | baseline start 2025-02-05 09:00 → 2027-02-05 09:00; baseline finish 2025-02-07 18:00 → 2027-02-09 18:00 |
| 9 | Развёртывание GPU-стенда и средств разметки | 2025-02-10 09:00 A → 2027-02-10 09:00 A (+730d) | 2025-02-14 18:00 A → 2027-02-16 18:00 A (+732d) |  | baseline start 2025-02-10 09:00 → 2027-02-10 09:00; baseline finish 2025-02-14 18:00 → 2027-02-16 18:00 |
| 10 | Веха 1. Требования и план проекта согласованы | 2025-02-21 14:00 A → 2027-02-22 09:00 A (+731d) | 2025-02-21 14:00 A → 2027-02-22 09:00 A (+731d) |  | baseline start 2025-02-21 14:00 → 2027-02-22 09:00; baseline finish 2025-02-21 14:00 → 2027-02-22 09:00 |
| 11 | **Этап 2. Проектирование системы технического зрения** | 2025-02-21 14:00 A → 2027-02-22 09:00 A (+731d) | 2025-03-24 14:00 A → 2027-03-24 09:00 A (+730d) | 21d → 22d | baseline start 2025-02-21 14:00 → 2027-02-22 09:00; baseline finish 2025-03-24 14:00 → 2027-03-24 09:00 |
| 12 | Разработка архитектуры системы технического зрения | 2025-02-21 14:00 A → 2027-02-22 09:00 A (+731d) | 2025-03-03 13:00 A → 2027-03-01 18:00 A (+728d) |  | baseline start 2025-02-21 14:00 → 2027-02-22 09:00; baseline finish 2025-03-03 13:00 → 2027-03-01 18:00 |
| 13 | Проектирование интерфейса оператора линии | 2025-02-21 14:00 A → 2027-02-22 09:00 A (+731d) | 2025-03-05 13:00 A → 2027-03-03 18:00 A (+728d) |  | baseline start 2025-02-21 14:00 → 2027-02-22 09:00; baseline finish 2025-03-05 13:00 → 2027-03-03 18:00 |
| 14 | Проектирование интеграции с АСУ ТП | 2025-03-03 14:00 A → 2027-03-03 09:00 A (+730d) | 2025-03-11 13:00 A → 2027-03-10 18:00 A (+729d) |  | baseline start 2025-03-03 14:00 → 2027-03-03 09:00; baseline finish 2025-03-11 13:00 → 2027-03-10 18:00 |
| 15 | Проектирование схемы БД истории дефектов | 2025-03-04 14:00 A → 2027-03-04 09:00 A (+730d) | 2025-03-11 13:00 A → 2027-03-10 18:00 A (+729d) |  | baseline start 2025-03-04 14:00 → 2027-03-04 09:00; baseline finish 2025-03-11 13:00 → 2027-03-10 18:00 |
| 16 | Проектирование защиты данных и доступа | 2025-03-03 14:00 A → 2027-03-03 09:00 A (+730d) | 2025-03-10 13:00 A → 2027-03-09 18:00 A (+729d) |  | baseline start 2025-03-03 14:00 → 2027-03-03 09:00; baseline finish 2025-03-10 13:00 → 2027-03-09 18:00 |
| 17 | Разработка технического задания и протоколов обмена | 2025-03-11 14:00 A → 2027-03-11 09:00 A (+730d) | 2025-03-19 13:00 A → 2027-03-18 18:00 A (+729d) |  | baseline start 2025-03-11 14:00 → 2027-03-11 09:00; baseline finish 2025-03-19 13:00 → 2027-03-18 18:00 |
| 18 | Разработка макетов экранов оператора | 2025-03-05 14:00 A → 2027-03-05 09:00 A (+730d) | 2025-03-13 13:00 A → 2027-03-12 18:00 A (+729d) |  | baseline start 2025-03-05 14:00 → 2027-03-05 09:00; baseline finish 2025-03-13 13:00 → 2027-03-12 18:00 |
| 19 | Согласование макетов с заказчиком | 2025-03-13 14:00 A → 2027-03-15 09:00 A (+732d) | 2025-03-19 13:00 A → 2027-03-18 18:00 A (+729d) |  | baseline start 2025-03-13 14:00 → 2027-03-15 09:00; baseline finish 2025-03-19 13:00 → 2027-03-18 18:00 |
| 20 | Рецензирование архитектурных решений | 2025-03-19 14:00 A → 2027-03-19 09:00 A (+730d) | 2025-03-24 13:00 A → 2027-03-23 18:00 A (+729d) |  | baseline start 2025-03-19 14:00 → 2027-03-19 09:00; baseline finish 2025-03-24 13:00 → 2027-03-23 18:00 |
| 21 | Веха 2. Архитектура системы согласована | 2025-03-24 14:00 A → 2027-03-24 09:00 A (+730d) | 2025-03-24 14:00 A → 2027-03-24 09:00 A (+730d) |  | baseline start 2025-03-24 14:00 → 2027-03-24 09:00; baseline finish 2025-03-24 14:00 → 2027-03-24 09:00 |
| 22 | **Этап 3. Формирование датасета и обучение модели** | 2025-03-24 14:00 A → 2027-03-24 09:00 A (+730d) | 2025-05-13 13:00 → 2027-05-07 09:00 (+724d) |  | baseline start 2025-03-24 14:00 → 2027-03-24 09:00; baseline finish 2025-06-09 13:00 → 2027-05-07 09:00 |
| 23 | Настройка конвейера сбора и обработки изображений | 2025-03-24 14:00 A → 2027-03-24 09:00 A (+730d) | 2025-04-03 13:00 → 2027-04-02 18:00 (+729d) |  | baseline start 2025-03-24 14:00 → 2027-03-24 09:00; baseline finish 2025-04-03 13:00 → 2027-04-02 18:00 |
| 24 | Калибровка камер и освещения | 2025-04-03 14:00 A → 2027-04-05 09:00 A (+732d) | 2025-04-11 13:00 → 2027-04-12 18:00 (+731d) |  | baseline start 2025-04-03 14:00 → 2027-04-05 09:00; baseline finish 2025-04-11 13:00 → 2027-04-12 18:00 |
| 25 | Сбор исходного датасета изображений | 2025-04-03 14:00 A → 2027-04-05 09:00 A (+732d) | 2025-04-11 13:00 → 2027-04-12 18:00 (+731d) |  | baseline start 2025-04-03 14:00 → 2027-04-05 09:00; baseline finish 2025-04-11 13:00 → 2027-04-12 18:00 |
| 26 | Разметка изображений и выделение дефектов | 2025-04-11 14:00 → 2027-04-12 09:00 (+731d) | 2025-04-25 13:00 → 2027-04-23 18:00 (+728d) |  | constraint must start on 2025-04-11 14:00 → must start on 2027-04-12 09:00; baseline start 2025-04-11 14:00 → 2027-04-12 09:00; baseline finish 2025-04-25 13:00 → 2027-04-23 18:00 |
| 27 | Аугментация и балансировка датасета | 2025-04-11 14:00 → 2027-04-12 09:00 (+731d) | 2025-04-21 13:00 → 2027-04-19 18:00 (+728d) |  | baseline start 2025-04-11 14:00 → 2027-04-12 09:00; baseline finish 2025-04-21 13:00 → 2027-04-19 18:00 |
| 28 | Разделение данных на обучающую и тестовую выборки | 2025-04-11 14:00 → 2027-04-12 09:00 (+731d) | 2025-04-18 13:00 → 2027-04-16 18:00 (+728d) |  | baseline start 2025-04-18 14:00 → 2027-04-12 09:00; baseline finish 2025-04-25 13:00 → 2027-04-16 18:00 |
| 29 | Обучение базовой модели детекции дефектов | 2025-04-25 14:00 → 2027-04-26 09:00 (+731d) | 2025-05-13 13:00 → 2027-05-05 18:00 (+722d) |  | baseline start 2025-05-28 14:00 → 2027-04-26 09:00; baseline finish 2025-06-09 13:00 → 2027-05-05 18:00 |
| 30 | Валидация модели на контрольной выборке | 2025-04-03 14:00 → 2027-04-05 09:00 (+732d) | 2025-04-09 13:00 → 2027-04-08 18:00 (+729d) |  | baseline start 2025-04-25 14:00 → 2027-04-05 09:00; baseline finish 2025-05-05 13:00 → 2027-04-08 18:00 |
| 31 | Анализ ошибок и ложных срабатываний | 2025-04-11 14:00 → 2027-04-12 09:00 (+731d) | 2025-04-21 13:00 → 2027-04-19 18:00 (+728d) |  | baseline start 2025-04-11 14:00 → 2027-04-12 09:00; baseline finish 2025-04-21 13:00 → 2027-04-19 18:00 |
| 32 | Доразметка редких видов дефектов | 2025-04-03 14:00 A → 2027-04-05 09:00 A (+732d) | 2025-04-11 13:00 → 2027-04-12 18:00 (+731d) |  | baseline start 2025-04-03 14:00 → 2027-04-05 09:00; baseline finish 2025-04-11 13:00 → 2027-04-12 18:00 |
| 33 | Повторное обучение модели на расширенном датасете | 2025-04-21 14:00 → 2027-04-21 09:00 (+730d) | 2025-04-28 13:00 → 2027-04-27 18:00 (+729d) |  | baseline start 2025-04-25 14:00 → 2027-04-21 09:00; baseline finish 2025-05-06 13:00 → 2027-04-27 18:00 |
| 34 | Квантование и оптимизация модели для инференса | 2025-04-25 14:00 → 2027-04-26 09:00 (+731d) | 2025-05-12 13:00 → 2027-05-04 18:00 (+722d) |  | constraint start no earlier than 2025-04-25 14:00 → start no earlier than 2027-04-26 09:00; baseline start 2025-04-25 14:00 → 2027-04-26 09:00; baseline finish 2025-05-12 13:00 → 2027-05-04 18:00 |
| 35 | Тестирование скорости инференса | 2025-04-30 14:00 → 2027-04-30 09:00 (+730d) | 2025-05-12 13:00 → 2027-05-06 18:00 (+724d) |  | baseline start 2025-04-30 14:00 → 2027-04-30 09:00; baseline finish 2025-05-12 13:00 → 2027-05-06 18:00 |
| 36 | Веха 3. Модель обучена и оптимизирована | 2025-05-07 14:00 → 2027-05-07 09:00 (+730d) | 2025-05-07 14:00 → 2027-05-07 09:00 (+730d) |  | baseline start 2025-05-07 14:00 → 2027-05-07 09:00; baseline finish 2025-05-07 14:00 → 2027-05-07 09:00 |
| 37 | **Этап 4. Интеграция с производственной инфраструктурой** | 2025-05-07 14:00 → 2027-05-07 09:00 (+730d) | 2025-06-17 13:00 → 2027-06-16 09:00 (+729d) | 26.5d → 28d | baseline start 2025-05-07 14:00 → 2027-05-07 09:00; baseline finish 2025-07-02 13:00 → 2027-06-16 09:00 |
| 38 | Разработка серверной службы обработки кадров | 2025-05-07 14:00 → 2027-05-07 09:00 (+730d) | 2025-05-20 13:00 → 2027-05-18 18:00 (+728d) |  | baseline start 2025-05-07 14:00 → 2027-05-07 09:00; baseline finish 2025-05-20 13:00 → 2027-05-18 18:00 |
| 39 | Интеграция с промышленной АСУ ТП | 2025-05-19 14:00 → 2027-05-19 09:00 (+730d) | 2025-05-28 13:00 → 2027-05-27 18:00 (+729d) |  | baseline start 2025-05-20 14:00 → 2027-05-19 09:00; baseline finish 2025-05-29 13:00 → 2027-05-27 18:00 |
| 40 | Интеграция с системой отбраковки | 2025-05-19 14:00 → 2027-05-19 09:00 (+730d) | 2025-05-26 13:00 → 2027-05-25 18:00 (+729d) |  | baseline start 2025-05-19 14:00 → 2027-05-19 09:00; baseline finish 2025-05-26 13:00 → 2027-05-25 18:00 |
| 41 | Интеграция с конвейерной линией | 2025-05-19 14:00 → 2027-05-19 09:00 (+730d) | 2025-05-23 13:00 → 2027-05-24 18:00 (+731d) |  | baseline start 2025-05-19 14:00 → 2027-05-19 09:00; baseline finish 2025-05-23 13:00 → 2027-05-24 18:00 |
| 42 | Интеграция с MES-системой предприятия | 2025-05-20 14:00 → 2027-05-20 09:00 (+730d) | 2025-05-28 13:00 → 2027-05-27 18:00 (+729d) |  | baseline start 2025-05-20 14:00 → 2027-05-20 09:00; baseline finish 2025-05-28 13:00 → 2027-05-27 18:00 |
| 43 | Настройка мониторинга и журналирования | 2025-05-19 14:00 → 2027-05-19 09:00 (+730d) | 2025-05-23 13:00 → 2027-05-24 18:00 (+731d) |  | baseline start 2025-05-23 14:00 → 2027-05-19 09:00; baseline finish 2025-05-29 13:00 → 2027-05-24 18:00 |
| 44 | Проверка соответствия требованиям безопасности | 2025-05-26 14:00 → 2027-05-26 09:00 (+730d) | 2025-06-02 13:00 → 2027-06-01 18:00 (+729d) |  | baseline start 2025-05-26 14:00 → 2027-05-26 09:00; baseline finish 2025-06-02 13:00 → 2027-06-01 18:00 |
| 45 | Регрессионное тестирование интеграций | 2025-06-02 14:00 → 2027-06-02 09:00 (+730d) | 2025-06-10 13:00 → 2027-06-09 18:00 (+729d) |  | baseline start 2025-06-02 14:00 → 2027-06-02 09:00; baseline finish 2025-06-10 13:00 → 2027-06-09 18:00 |
| 46 | Тестирование отказоустойчивости при обрыве связи | 2025-06-10 14:00 → 2027-06-10 09:00 (+730d) | 2025-06-17 13:00 → 2027-06-15 18:00 (+728d) |  | baseline start 2025-06-26 14:00 → 2027-06-10 09:00; baseline finish 2025-07-02 13:00 → 2027-06-15 18:00 |
| 47 | Веха 4. Интеграция завершена | 2025-06-16 14:00 → 2027-06-16 09:00 (+730d) | 2025-06-16 14:00 → 2027-06-16 09:00 (+730d) |  | baseline start 2025-06-16 14:00 → 2027-06-16 09:00; baseline finish 2025-06-16 14:00 → 2027-06-16 09:00 |
| 48 | **Этап 5. Тестирование и опытная эксплуатация** | 2025-05-07 14:00 → 2027-05-07 09:00 (+730d) | 2025-07-16 14:00 → 2027-07-16 09:00 (+730d) | 47.5d → 50d | baseline start 2025-05-12 14:00 → 2027-05-07 09:00; baseline finish 2025-07-16 14:00 → 2027-07-16 09:00 |
| 49 | Разработка тест-плана и тест-кейсов | 2025-05-07 14:00 → 2027-05-07 09:00 (+730d) | 2025-05-15 13:00 → 2027-05-13 18:00 (+728d) |  | baseline start 2025-05-12 14:00 → 2027-05-07 09:00; baseline finish 2025-05-19 13:00 → 2027-05-13 18:00 |
| 50 | Функциональное тестирование | 2025-06-10 14:00 → 2027-06-10 09:00 (+730d) | 2025-06-23 13:00 → 2027-06-21 18:00 (+728d) |  | baseline start 2025-06-10 14:00 → 2027-06-10 09:00; baseline finish 2025-06-23 13:00 → 2027-06-21 18:00 |
| 51 | Оценка удобства работы оператора | 2025-06-20 14:00 → 2027-06-21 09:00 (+731d) | 2025-06-26 13:00 → 2027-06-24 18:00 (+728d) |  | baseline start 2025-06-20 14:00 → 2027-06-21 09:00; baseline finish 2025-06-26 13:00 → 2027-06-24 18:00 |
| 52 | Проверка защищённости и прав доступа | 2025-06-20 14:00 → 2027-06-21 09:00 (+731d) | 2025-06-27 13:00 → 2027-06-25 18:00 (+728d) |  | baseline start 2025-06-20 14:00 → 2027-06-21 09:00; baseline finish 2025-06-27 13:00 → 2027-06-25 18:00 |
| 53 | Тестирование на целевом оборудовании линии | 2025-06-20 14:00 → 2027-06-21 09:00 (+731d) | 2025-06-27 13:00 → 2027-06-25 18:00 (+728d) |  | baseline start 2025-06-20 14:00 → 2027-06-21 09:00; baseline finish 2025-06-27 13:00 → 2027-06-25 18:00 |
| 54 | Тестирование при деградации освещения и связи | 2025-06-20 14:00 → 2027-06-21 09:00 (+731d) | 2025-06-25 13:00 → 2027-06-23 18:00 (+728d) |  | baseline start 2025-06-23 14:00 → 2027-06-21 09:00; baseline finish 2025-06-26 13:00 → 2027-06-23 18:00 |
| 55 | Исправление выявленных дефектов системы | 2025-06-27 14:00 → 2027-06-28 09:00 (+731d) | 2025-07-11 13:00 → 2027-07-09 18:00 (+728d) |  | constraint finish no later than 2025-07-16 13:00 → finish no later than 2027-07-14 18:00; baseline start 2025-06-27 14:00 → 2027-06-28 09:00; baseline finish 2025-07-11 13:00 → 2027-07-09 18:00 |
| 56 | Подготовка отчёта о тестировании | 2025-07-11 14:00 → 2027-07-12 09:00 (+731d) | 2025-07-16 13:00 → 2027-07-14 18:00 (+728d) |  | baseline start 2025-07-11 14:00 → 2027-07-12 09:00; baseline finish 2025-07-16 13:00 → 2027-07-14 18:00 |
| 57 | Веха 5. Тестирование завершено | 2025-07-16 14:00 → 2027-07-16 09:00 (+730d) | 2025-07-16 14:00 → 2027-07-16 09:00 (+730d) |  | baseline start 2025-07-16 14:00 → 2027-07-16 09:00; baseline finish 2025-07-16 14:00 → 2027-07-16 09:00 |
| 58 | **Этап 6. Внедрение и сопровождение** | 2025-02-07 05:00 → 2027-02-08 09:00 (+731d) | 2025-08-18 13:00 → 2027-08-17 18:00 (+729d) | 131.5d → 137d | baseline start 2025-07-16 14:00 → 2027-02-08 09:00; baseline finish 2025-08-18 13:00 → 2027-08-17 18:00 |
| 59 | Подготовка руководства оператора | 2025-07-16 14:00 → 2027-07-16 09:00 (+730d) | 2025-07-22 13:00 → 2027-07-21 18:00 (+729d) |  | baseline start 2025-07-16 14:00 → 2027-07-16 09:00; baseline finish 2025-07-22 13:00 → 2027-07-21 18:00 |
| 60 | Обучение операторов и инженеров ОТК | 2025-07-22 14:00 → 2027-07-22 09:00 (+730d) | 2025-07-25 13:00 → 2027-07-26 18:00 (+731d) |  | baseline start 2025-07-22 14:00 → 2027-07-22 09:00; baseline finish 2025-07-25 13:00 → 2027-07-26 18:00 |
| 61 | Настройка продуктивной среды и резервного копирования | 2025-07-16 14:00 → 2027-07-16 09:00 (+730d) | 2025-07-21 13:00 → 2027-07-20 18:00 (+729d) |  | baseline start 2025-07-23 14:00 → 2027-07-16 09:00; baseline finish 2025-07-28 13:00 → 2027-07-20 18:00 |
| 62 | Развёртывание системы на производственной линии | 2025-07-16 14:00 → 2027-07-16 09:00 (+730d) | 2025-07-23 13:00 → 2027-07-22 18:00 (+729d) |  | baseline start 2025-07-16 14:00 → 2027-07-16 09:00; baseline finish 2025-07-23 13:00 → 2027-07-22 18:00 |
| 63 | Проведение приёмочных испытаний с заказчиком | 2025-07-25 14:00 → 2027-07-26 09:00 (+731d) | 2025-07-31 13:00 → 2027-07-29 18:00 (+728d) |  | constraint must finish on 2025-07-31 13:00 → must finish on 2027-08-01 08:00; baseline start 2025-07-25 14:00 → 2027-07-26 09:00; baseline finish 2025-07-31 13:00 → 2027-07-29 18:00 |
| 64 | Передача документации и исходного кода | 2025-07-23 14:00 → 2027-07-23 09:00 (+730d) | 2025-07-28 13:00 → 2027-07-27 18:00 (+729d) |  | baseline start 2025-07-23 14:00 → 2027-07-23 09:00; baseline finish 2025-07-28 13:00 → 2027-07-27 18:00 |
| 65 | Опытно-промышленная эксплуатация | 2025-07-31 14:00 → 2027-08-02 09:00 (+732d) | 2025-08-08 13:00 → 2027-08-09 18:00 (+731d) |  | baseline start 2025-07-31 14:00 → 2027-08-02 09:00; baseline finish 2025-08-08 13:00 → 2027-08-09 18:00 |
| 66 | Анализ обратной связи операторов и корректировка | 2025-08-08 14:00 → 2027-08-09 09:00 (+731d) | 2025-08-14 13:00 → 2027-08-12 18:00 (+728d) |  | baseline start 2025-08-08 14:00 → 2027-08-09 09:00; baseline finish 2025-08-14 13:00 → 2027-08-12 18:00 |
| 67 | Веха 6. Система введена в промышленную эксплуатацию | 2025-08-14 14:00 → 2027-08-16 09:00 (+732d) | 2025-08-14 14:00 → 2027-08-16 09:00 (+732d) |  | baseline start 2025-08-14 14:00 → 2027-08-16 09:00; baseline finish 2025-08-14 14:00 → 2027-08-16 09:00 |
| 68 | **Совещание** | 2025-02-07 05:00 → 2027-02-08 09:00 (+731d) | 2025-08-15 06:00 → 2027-08-16 10:00 (+731d) | 130d → 135.12d | baseline start none → 2027-02-08 09:00; baseline finish none → 2027-08-16 10:00 |
| 69 | Совещание 1 | 2025-02-07 05:00 → 2027-02-08 09:00 (+731d) | 2025-02-07 06:00 → 2027-02-08 10:00 (+731d) |  | constraint start no earlier than 2025-02-07 05:00 → start no earlier than 2027-02-08 09:00; baseline start none → 2027-02-08 09:00; baseline finish none → 2027-02-08 10:00 |
| 70 | Совещание 2 | 2025-02-14 05:00 → 2027-02-15 09:00 (+731d) | 2025-02-14 06:00 → 2027-02-15 10:00 (+731d) |  | constraint start no earlier than 2025-02-14 05:00 → start no earlier than 2027-02-15 09:00; baseline start none → 2027-02-15 09:00; baseline finish none → 2027-02-15 10:00 |

| ID | Task | Start | Finish | Other |
| --- | --- | --- | --- | --- |
| 71 | Совещание 3 | 2025-02-21 05:00 → 2027-02-22 09:00 (+731d) | 2025-02-21 06:00 → 2027-02-22 10:00 (+731d) | constraint start no earlier than 2025-02-21 05:00 → start no earlier than 2027-02-22 09:00; baseline start none → 2027-02-22 09:00; baseline finish none → 2027-02-22 10:00 |
| 72 | Совещание 4 | 2025-02-28 05:00 → 2027-03-01 09:00 (+731d) | 2025-02-28 06:00 → 2027-03-01 10:00 (+731d) | constraint start no earlier than 2025-02-28 05:00 → start no earlier than 2027-03-01 09:00; baseline start none → 2027-03-01 09:00; baseline finish none → 2027-03-01 10:00 |
| 73 | Совещание 5 | 2025-03-07 05:00 → 2027-03-08 09:00 (+731d) | 2025-03-07 06:00 → 2027-03-08 10:00 (+731d) | constraint start no earlier than 2025-03-07 05:00 → start no earlier than 2027-03-08 09:00; baseline start none → 2027-03-08 09:00; baseline finish none → 2027-03-08 10:00 |
| 74 | Совещание 6 | 2025-03-14 05:00 → 2027-03-15 09:00 (+731d) | 2025-03-14 06:00 → 2027-03-15 10:00 (+731d) | constraint start no earlier than 2025-03-14 05:00 → start no earlier than 2027-03-15 09:00; baseline start none → 2027-03-15 09:00; baseline finish none → 2027-03-15 10:00 |
| 75 | Совещание 7 | 2025-03-21 05:00 → 2027-03-22 09:00 (+731d) | 2025-03-21 06:00 → 2027-03-22 10:00 (+731d) | constraint start no earlier than 2025-03-21 05:00 → start no earlier than 2027-03-22 09:00; baseline start none → 2027-03-22 09:00; baseline finish none → 2027-03-22 10:00 |
| 76 | Совещание 8 | 2025-03-28 05:00 → 2027-03-29 09:00 (+731d) | 2025-03-28 06:00 → 2027-03-29 10:00 (+731d) | constraint start no earlier than 2025-03-28 05:00 → start no earlier than 2027-03-29 09:00; baseline start none → 2027-03-29 09:00; baseline finish none → 2027-03-29 10:00 |
| 77 | Совещание 9 | 2025-04-04 05:00 → 2027-04-05 09:00 (+731d) | 2025-04-04 06:00 → 2027-04-05 10:00 (+731d) | constraint start no earlier than 2025-04-04 05:00 → start no earlier than 2027-04-05 09:00; baseline start none → 2027-04-05 09:00; baseline finish none → 2027-04-05 10:00 |
| 78 | Совещание 10 | 2025-04-11 05:00 → 2027-04-12 09:00 (+731d) | 2025-04-11 06:00 → 2027-04-12 10:00 (+731d) | constraint start no earlier than 2025-04-11 05:00 → start no earlier than 2027-04-12 09:00; baseline start none → 2027-04-12 09:00; baseline finish none → 2027-04-12 10:00 |
| 79 | Совещание 11 | 2025-04-18 05:00 → 2027-04-19 09:00 (+731d) | 2025-04-18 06:00 → 2027-04-19 10:00 (+731d) | constraint start no earlier than 2025-04-18 05:00 → start no earlier than 2027-04-19 09:00; baseline start none → 2027-04-19 09:00; baseline finish none → 2027-04-19 10:00 |
| 80 | Совещание 12 | 2025-04-25 05:00 → 2027-04-26 09:00 (+731d) | 2025-04-25 06:00 → 2027-04-26 10:00 (+731d) | constraint start no earlier than 2025-04-25 05:00 → start no earlier than 2027-04-26 09:00; baseline start none → 2027-04-26 09:00; baseline finish none → 2027-04-26 10:00 |
| 81 | Совещание 13 | 2025-05-02 05:00 → 2027-05-03 09:00 (+731d) | 2025-05-02 06:00 → 2027-05-03 10:00 (+731d) | constraint start no earlier than 2025-05-02 05:00 → start no earlier than 2027-05-03 09:00; baseline start none → 2027-05-03 09:00; baseline finish none → 2027-05-03 10:00 |
| 82 | Совещание 14 | 2025-05-09 05:00 → 2027-05-10 09:00 (+731d) | 2025-05-09 06:00 → 2027-05-10 10:00 (+731d) | constraint start no earlier than 2025-05-09 05:00 → start no earlier than 2027-05-10 09:00; baseline start none → 2027-05-10 09:00; baseline finish none → 2027-05-10 10:00 |
| 83 | Совещание 15 | 2025-05-16 05:00 → 2027-05-17 09:00 (+731d) | 2025-05-16 06:00 → 2027-05-17 10:00 (+731d) | constraint start no earlier than 2025-05-16 05:00 → start no earlier than 2027-05-17 09:00; baseline start none → 2027-05-17 09:00; baseline finish none → 2027-05-17 10:00 |
| 84 | Совещание 16 | 2025-05-23 05:00 → 2027-05-24 09:00 (+731d) | 2025-05-23 06:00 → 2027-05-24 10:00 (+731d) | constraint start no earlier than 2025-05-23 05:00 → start no earlier than 2027-05-24 09:00; baseline start none → 2027-05-24 09:00; baseline finish none → 2027-05-24 10:00 |
| 85 | Совещание 17 | 2025-05-30 05:00 → 2027-05-31 09:00 (+731d) | 2025-05-30 06:00 → 2027-05-31 10:00 (+731d) | constraint start no earlier than 2025-05-30 05:00 → start no earlier than 2027-05-31 09:00; baseline start none → 2027-05-31 09:00; baseline finish none → 2027-05-31 10:00 |
| 86 | Совещание 18 | 2025-06-06 05:00 → 2027-06-07 09:00 (+731d) | 2025-06-06 06:00 → 2027-06-07 10:00 (+731d) | constraint start no earlier than 2025-06-06 05:00 → start no earlier than 2027-06-07 09:00; baseline start none → 2027-06-07 09:00; baseline finish none → 2027-06-07 10:00 |
| 87 | Совещание 19 | 2025-06-13 05:00 → 2027-06-14 09:00 (+731d) | 2025-06-13 06:00 → 2027-06-14 10:00 (+731d) | constraint start no earlier than 2025-06-13 05:00 → start no earlier than 2027-06-14 09:00; baseline start none → 2027-06-14 09:00; baseline finish none → 2027-06-14 10:00 |
| 88 | Совещание 20 | 2025-06-20 05:00 → 2027-06-21 09:00 (+731d) | 2025-06-20 06:00 → 2027-06-21 10:00 (+731d) | constraint start no earlier than 2025-06-20 05:00 → start no earlier than 2027-06-21 09:00; baseline start none → 2027-06-21 09:00; baseline finish none → 2027-06-21 10:00 |
| 89 | Совещание 21 | 2025-06-27 05:00 → 2027-06-28 09:00 (+731d) | 2025-06-27 06:00 → 2027-06-28 10:00 (+731d) | constraint start no earlier than 2025-06-27 05:00 → start no earlier than 2027-06-28 09:00; baseline start none → 2027-06-28 09:00; baseline finish none → 2027-06-28 10:00 |
| 90 | Совещание 22 | 2025-07-04 05:00 → 2027-07-05 09:00 (+731d) | 2025-07-04 06:00 → 2027-07-05 10:00 (+731d) | constraint start no earlier than 2025-07-04 05:00 → start no earlier than 2027-07-05 09:00; baseline start none → 2027-07-05 09:00; baseline finish none → 2027-07-05 10:00 |
| 91 | Совещание 23 | 2025-07-11 05:00 → 2027-07-12 09:00 (+731d) | 2025-07-11 06:00 → 2027-07-12 10:00 (+731d) | constraint start no earlier than 2025-07-11 05:00 → start no earlier than 2027-07-12 09:00; baseline start none → 2027-07-12 09:00; baseline finish none → 2027-07-12 10:00 |
| 92 | Совещание 24 | 2025-07-18 05:00 → 2027-07-19 09:00 (+731d) | 2025-07-18 06:00 → 2027-07-19 10:00 (+731d) | constraint start no earlier than 2025-07-18 05:00 → start no earlier than 2027-07-19 09:00; baseline start none → 2027-07-19 09:00; baseline finish none → 2027-07-19 10:00 |
| 93 | Совещание 25 | 2025-07-25 05:00 → 2027-07-26 09:00 (+731d) | 2025-07-25 06:00 → 2027-07-26 10:00 (+731d) | constraint start no earlier than 2025-07-25 05:00 → start no earlier than 2027-07-26 09:00; baseline start none → 2027-07-26 09:00; baseline finish none → 2027-07-26 10:00 |
| 94 | Совещание 26 | 2025-08-01 05:00 → 2027-08-02 09:00 (+731d) | 2025-08-01 06:00 → 2027-08-02 10:00 (+731d) | constraint start no earlier than 2025-08-01 05:00 → start no earlier than 2027-08-02 09:00; baseline start none → 2027-08-02 09:00; baseline finish none → 2027-08-02 10:00 |
| 95 | Совещание 27 | 2025-08-08 05:00 → 2027-08-09 09:00 (+731d) | 2025-08-08 06:00 → 2027-08-09 10:00 (+731d) | constraint start no earlier than 2025-08-08 05:00 → start no earlier than 2027-08-09 09:00; baseline start none → 2027-08-09 09:00; baseline finish none → 2027-08-09 10:00 |
| 96 | Совещание 28 | 2025-08-15 05:00 → 2027-08-16 09:00 (+731d) | 2025-08-15 06:00 → 2027-08-16 10:00 (+731d) | constraint start no earlier than 2025-08-15 05:00 → start no earlier than 2027-08-16 09:00; baseline start none → 2027-08-16 09:00; baseline finish none → 2027-08-16 10:00 |
| 97 | Закрытие проекта и архивирование | 2025-08-14 14:00 → 2027-08-16 09:00 (+732d) | 2025-08-18 13:00 → 2027-08-17 18:00 (+729d) | baseline start 2025-08-14 14:00 → 2027-08-16 09:00; baseline finish 2025-08-18 13:00 → 2027-08-17 18:00 |
