# УП_Матвих_эксперимент

How a schedule from MS Project changed from version to version. A marks actual dates.

## Version 1 (data date 2025-04-01, saved 2026-11-08)

| ID | WBS | Task | Duration | Start | Finish | Predecessors | Complete | Total float | Constraint |
| --- | --- | --- | --- | --- | --- | --- | --- | --- | --- |
| 1 | 1 | **Совещание** | 130d | 2025-02-07 05:00 | 2025-08-15 06:00 |  |  | 0d |  |
| 2 |  | Совещание 1 | 1h | 2025-02-07 05:00 | 2025-02-07 06:00 |  |  |  | start no earlier than 2025-02-07 05:00 |
| 3 |  | Совещание 2 | 1h | 2025-02-14 05:00 | 2025-02-14 06:00 |  |  |  | start no earlier than 2025-02-14 05:00 |
| 4 |  | Совещание 3 | 1h | 2025-02-21 05:00 | 2025-02-21 06:00 |  |  |  | start no earlier than 2025-02-21 05:00 |
| 5 |  | Совещание 4 | 1h | 2025-02-28 05:00 | 2025-02-28 06:00 |  |  |  | start no earlier than 2025-02-28 05:00 |
| 6 |  | Совещание 5 | 1h | 2025-03-07 05:00 | 2025-03-07 06:00 |  |  |  | start no earlier than 2025-03-07 05:00 |
| 7 |  | Совещание 6 | 1h | 2025-03-14 05:00 | 2025-03-14 06:00 |  |  |  | start no earlier than 2025-03-14 05:00 |
| 8 |  | Совещание 7 | 1h | 2025-03-21 05:00 | 2025-03-21 06:00 |  |  |  | start no earlier than 2025-03-21 05:00 |
| 9 |  | Совещание 8 | 1h | 2025-03-28 05:00 | 2025-03-28 06:00 |  |  |  | start no earlier than 2025-03-28 05:00 |
| 10 |  | Совещание 9 | 1h | 2025-04-04 05:00 | 2025-04-04 06:00 |  |  |  | start no earlier than 2025-04-04 05:00 |
| 11 |  | Совещание 10 | 1h | 2025-04-11 05:00 | 2025-04-11 06:00 |  |  |  | start no earlier than 2025-04-11 05:00 |
| 12 |  | Совещание 11 | 1h | 2025-04-18 05:00 | 2025-04-18 06:00 |  |  |  | start no earlier than 2025-04-18 05:00 |
| 13 |  | Совещание 12 | 1h | 2025-04-25 05:00 | 2025-04-25 06:00 |  |  |  | start no earlier than 2025-04-25 05:00 |
| 14 |  | Совещание 13 | 1h | 2025-05-02 05:00 | 2025-05-02 06:00 |  |  |  | start no earlier than 2025-05-02 05:00 |
| 15 |  | Совещание 14 | 1h | 2025-05-09 05:00 | 2025-05-09 06:00 |  |  |  | start no earlier than 2025-05-09 05:00 |
| 16 |  | Совещание 15 | 1h | 2025-05-16 05:00 | 2025-05-16 06:00 |  |  |  | start no earlier than 2025-05-16 05:00 |
| 17 |  | Совещание 16 | 1h | 2025-05-23 05:00 | 2025-05-23 06:00 |  |  |  | start no earlier than 2025-05-23 05:00 |
| 18 |  | Совещание 17 | 1h | 2025-05-30 05:00 | 2025-05-30 06:00 |  |  |  | start no earlier than 2025-05-30 05:00 |
| 19 |  | Совещание 18 | 1h | 2025-06-06 05:00 | 2025-06-06 06:00 |  |  |  | start no earlier than 2025-06-06 05:00 |
| 20 |  | Совещание 19 | 1h | 2025-06-13 05:00 | 2025-06-13 06:00 |  |  |  | start no earlier than 2025-06-13 05:00 |
| 21 |  | Совещание 20 | 1h | 2025-06-20 05:00 | 2025-06-20 06:00 |  |  |  | start no earlier than 2025-06-20 05:00 |
| 22 |  | Совещание 21 | 1h | 2025-06-27 05:00 | 2025-06-27 06:00 |  |  |  | start no earlier than 2025-06-27 05:00 |
| 23 |  | Совещание 22 | 1h | 2025-07-04 05:00 | 2025-07-04 06:00 |  |  |  | start no earlier than 2025-07-04 05:00 |
| 24 |  | Совещание 23 | 1h | 2025-07-11 05:00 | 2025-07-11 06:00 |  |  |  | start no earlier than 2025-07-11 05:00 |
| 25 |  | Совещание 24 | 1h | 2025-07-18 05:00 | 2025-07-18 06:00 |  |  |  | start no earlier than 2025-07-18 05:00 |
| 26 |  | Совещание 25 | 1h | 2025-07-25 05:00 | 2025-07-25 06:00 |  |  |  | start no earlier than 2025-07-25 05:00 |
| 27 |  | Совещание 26 | 1h | 2025-08-01 05:00 | 2025-08-01 06:00 |  |  |  | start no earlier than 2025-08-01 05:00 |
| 28 |  | Совещание 27 | 1h | 2025-08-08 05:00 | 2025-08-08 06:00 |  |  |  | start no earlier than 2025-08-08 05:00 |
| 29 |  | Совещание 28 | 1h | 2025-08-15 05:00 | 2025-08-15 06:00 |  |  |  | start no earlier than 2025-08-15 05:00 |
| 30 | 2 | **Этап 1. Инициация проекта и анализ производства** | 14.5d | 2025-02-03 05:00 A | 2025-02-21 14:00 A |  | 100% |  |  |
| 31 |  | Утверждение концепции и устава проекта | 3d | 2025-02-03 05:00 A | 2025-02-05 13:00 A |  | 100% |  |  |
| 32 |  | Обследование производственной линии и участков контроля | 5d | 2025-02-05 14:00 A | 2025-02-12 13:00 A | 31 | 100% |  |  |
| 33 |  | Сбор и систематизация требований к системе | 6d | 2025-02-10 14:00 A | 2025-02-18 13:00 A | 31 | 100% |  |  |
| 34 |  | Изучение требований промышленной безопасности и ГОСТ | 4d | 2025-02-12 14:00 A | 2025-02-18 13:00 A | 32 | 100% |  |  |
| 35 |  | Анализ существующих систем машинного зрения | 4d | 2025-02-12 14:00 A | 2025-02-18 13:00 A | 32 | 100% |  |  |
| 36 |  | Формирование бэклога и критериев приёмки | 3d | 2025-02-18 14:00 A | 2025-02-21 13:00 A | 33, 34, 35 | 100% |  |  |
| 37 |  | Создание репозитория и настройка CI/CD-конвейера | 3d | 2025-02-05 09:00 A | 2025-02-07 18:00 A | 31SS+2d | 100% |  |  |
| 38 |  | Развёртывание GPU-стенда и средств разметки | 5d | 2025-02-10 09:00 A | 2025-02-14 18:00 A | 37 | 100% |  |  |
| 39 |  | Веха 1. Требования и план проекта согласованы | 0d | 2025-02-21 14:00 A | 2025-02-21 14:00 A | 36, 38 | 100% |  |  |
| 40 | 3 | **Этап 2. Проектирование системы технического зрения** | 21d | 2025-02-21 14:00 A | 2025-03-24 14:00 A |  | 100% |  |  |
| 41 |  | Разработка архитектуры системы технического зрения | 6d | 2025-02-21 14:00 A | 2025-03-03 13:00 A | 39 | 100% |  |  |
| 42 |  | Проектирование интерфейса оператора линии | 8d | 2025-02-21 14:00 A | 2025-03-05 13:00 A | 39 | 100% |  |  |
| 43 |  | Проектирование интеграции с АСУ ТП | 6d | 2025-03-03 14:00 A | 2025-03-11 13:00 A | 41 | 100% |  |  |
| 44 |  | Проектирование схемы БД истории дефектов | 5d | 2025-03-04 14:00 A | 2025-03-11 13:00 A | 41 | 100% |  |  |
| 45 |  | Проектирование защиты данных и доступа | 5d | 2025-03-03 14:00 A | 2025-03-10 13:00 A | 41 | 100% |  |  |
| 46 |  | Разработка технического задания и протоколов обмена | 6d | 2025-03-11 14:00 A | 2025-03-19 13:00 A | 42, 43, 44, 45 | 100% |  |  |
| 47 |  | Разработка макетов экранов оператора | 6d | 2025-03-05 14:00 A | 2025-03-13 13:00 A | 42 | 100% |  |  |
| 48 |  | Согласование макетов с заказчиком | 4d | 2025-03-13 14:00 A | 2025-03-19 13:00 A | 47 | 100% |  |  |
| 49 |  | Рецензирование архитектурных решений | 3d | 2025-03-19 14:00 A | 2025-03-24 13:00 A | 46 | 100% |  |  |
| 50 |  | Веха 2. Архитектура системы согласована | 0d | 2025-03-24 14:00 A | 2025-03-24 14:00 A | 48, 49 | 100% |  |  |
| 51 | 4 | **Этап 3. Формирование датасета и обучение модели** | 51d | 2025-03-24 14:00 A | 2025-06-09 13:00 |  | 3% | 0d |  |
| 52 |  | Настройка конвейера сбора и обработки изображений | 28.1d | 2025-03-24 14:00 A | 2025-05-05 14:48 | 50 | 23% |  |  |
| 53 |  | Калибровка камер и освещения | 24d | 2025-04-03 14:00 A | 2025-05-13 13:00 | 52 |  |  |  |
| 54 |  | Сбор исходного датасета изображений | 24d | 2025-04-03 14:00 A | 2025-05-13 13:00 | 52 |  |  |  |
| 55 |  | Разметка изображений и выделение дефектов | 22d | 2025-04-11 14:00 | 2025-05-19 13:00 | 53, 54 |  |  | must start on 2025-04-11 14:00 |
| 56 |  | Аугментация и балансировка датасета | 18d | 2025-04-11 14:00 | 2025-05-13 13:00 | 54 |  |  |  |
| 57 |  | Разделение данных на обучающую и тестовую выборки | 12d | 2025-04-18 14:00 | 2025-05-12 13:00 | 54 |  |  |  |
| 58 |  | Обучение базовой модели детекции дефектов | 8d | 2025-05-28 14:00 | 2025-06-09 13:00 | 55 |  |  |  |
| 59 |  | Валидация модели на контрольной выборке | 6d | 2025-04-25 14:00 | 2025-05-09 13:00 | 52 |  |  |  |
| 60 |  | Анализ ошибок и ложных срабатываний | 6d | 2025-04-11 14:00 | 2025-04-21 13:00 | 54 |  |  |  |
| 61 |  | Доразметка редких видов дефектов | 24d | 2025-04-03 14:00 A | 2025-05-13 13:00 | 44, 52 |  |  |  |
| 62 |  | Повторное обучение модели на расширенном датасете | 7d | 2025-04-25 14:00 | 2025-05-12 13:00 | 60SF+2d |  |  |  |
| 63 |  | Квантование и оптимизация модели для инференса | 6.25d | 2025-04-25 14:00 | 2025-05-09 16:00 | 53, 55, 56, 57, 61 |  |  | start no earlier than 2025-04-25 14:00 |
| 64 |  | Тестирование скорости инференса | 5d | 2025-04-30 14:00 | 2025-05-12 13:00 | 63FF+1d |  |  |  |
| 65 |  | Веха 3. Модель обучена и оптимизирована | 0d | 2025-05-07 14:00 | 2025-05-07 14:00 | 59, 62, 63, 64 |  |  |  |
| 66 | 5 | **Этап 4. Интеграция с производственной инфраструктурой** | 37.5d | 2025-05-07 14:00 | 2025-07-02 13:00 |  |  | 0d |  |
| 67 |  | Разработка серверной службы обработки кадров | 8d | 2025-05-07 14:00 | 2025-05-20 13:00 | 65 |  |  |  |
| 68 |  | Интеграция с промышленной АСУ ТП | 7d | 2025-05-20 14:00 | 2025-05-29 13:00 | 67 |  |  |  |
| 69 |  | Интеграция с системой отбраковки | 5d | 2025-05-19 14:00 | 2025-05-26 13:00 | 53, 67 |  |  |  |
| 70 |  | Интеграция с конвейерной линией | 4d | 2025-05-19 14:00 | 2025-05-23 13:00 | 59, 67 |  |  |  |

| ID | WBS | Task | Duration | Start | Finish | Predecessors | Total float | Constraint |
| --- | --- | --- | --- | --- | --- | --- | --- | --- |
| 71 |  | Интеграция с MES-системой предприятия | 6d | 2025-05-20 14:00 | 2025-05-28 13:00 | 56, 67 |  |  |
| 72 |  | Настройка мониторинга и журналирования | 4d | 2025-05-23 14:00 | 2025-05-29 13:00 | 67 |  |  |
| 73 |  | Проверка соответствия требованиям безопасности | 5d | 2025-05-26 14:00 | 2025-06-02 13:00 | 45, 69 |  |  |
| 74 |  | Регрессионное тестирование интеграций | 6d | 2025-06-02 14:00 | 2025-06-10 13:00 | 68, 69, 70, 71, 72, 73 |  |  |
| 75 |  | Тестирование отказоустойчивости при обрыве связи | 4d | 2025-06-26 14:00 | 2025-07-02 13:00 | 72, 74 |  |  |
| 76 |  | Веха 4. Интеграция завершена | 0d | 2025-06-16 14:00 | 2025-06-16 14:00 | 74, 75 |  |  |
| 77 | 6 | **Этап 5. Тестирование и опытная эксплуатация** | 46d | 2025-05-12 14:00 | 2025-07-16 14:00 |  | 0d |  |
| 78 |  | Разработка тест-плана и тест-кейсов | 5d | 2025-05-12 14:00 | 2025-05-19 13:00 | 65 |  |  |
| 79 |  | Функциональное тестирование | 8d | 2025-06-10 14:00 | 2025-06-23 13:00 | 74, 78 |  |  |
| 80 |  | Оценка удобства работы оператора | 4d | 2025-06-20 14:00 | 2025-06-26 13:00 | 79 |  |  |
| 81 |  | Проверка защищённости и прав доступа | 5d | 2025-06-20 14:00 | 2025-06-27 13:00 | 73, 79 |  |  |
| 82 |  | Тестирование на целевом оборудовании линии | 5d | 2025-06-20 14:00 | 2025-06-27 13:00 | 79 |  |  |
| 83 |  | Тестирование при деградации освещения и связи | 3d | 2025-06-23 14:00 | 2025-06-26 13:00 | 58, 79 |  |  |
| 84 |  | Исправление выявленных дефектов системы | 10d | 2025-06-27 14:00 | 2025-07-11 13:00 | 80, 81, 82, 83 |  | finish no later than 2025-07-16 13:00 |
| 85 |  | Подготовка отчёта о тестировании | 3d | 2025-07-11 14:00 | 2025-07-16 13:00 | 84 |  |  |
| 86 |  | Веха 5. Тестирование завершено | 0d | 2025-07-16 14:00 | 2025-07-16 14:00 | 85 |  |  |
| 87 | 7 | **Этап 6. Внедрение и сопровождение** | 23d | 2025-07-16 14:00 | 2025-08-18 13:00 |  | 0d |  |
| 88 |  | Подготовка руководства оператора | 4d | 2025-07-16 14:00 | 2025-07-22 13:00 | 86 |  |  |
| 89 |  | Обучение операторов и инженеров ОТК | 3d | 2025-07-22 14:00 | 2025-07-25 13:00 | 88 |  |  |
| 90 |  | Настройка продуктивной среды и резервного копирования | 3d | 2025-07-23 14:00 | 2025-07-28 13:00 | 72, 86 |  |  |
| 91 |  | Развёртывание системы на производственной линии | 5d | 2025-07-16 14:00 | 2025-07-23 13:00 | 86 |  |  |
| 92 |  | Проведение приёмочных испытаний с заказчиком | 4d | 2025-07-25 14:00 | 2025-07-31 13:00 | 86, 89 |  | must finish on 2025-07-31 13:00 |
| 93 |  | Передача документации и исходного кода | 3d | 2025-07-23 14:00 | 2025-07-28 13:00 | 88, 91 |  |  |
| 94 |  | Опытно-промышленная эксплуатация | 6d | 2025-07-31 14:00 | 2025-08-08 13:00 | 92 |  |  |
| 95 |  | Анализ обратной связи операторов и корректировка | 4d | 2025-08-08 14:00 | 2025-08-14 13:00 | 91, 92, 94 |  |  |
| 96 |  | Веха 6. Система введена в промышленную эксплуатацию | 0d | 2025-08-14 14:00 | 2025-08-14 14:00 | 90, 93, 95 |  |  |
| 97 |  | Закрытие проекта и архивирование | 2d | 2025-08-14 14:00 | 2025-08-18 13:00 | 96 |  |  |

## Version 2 (data date 2027-03-31, saved 2026-11-17)

Note of the change: Align Matvih report to 2027 schedule and Samara salary rates

Last finish 2025-08-18 → 2027-08-17 (+729d).

Changed:

| ID | Task | Start | Finish | Duration | Complete | Other |
| --- | --- | --- | --- | --- | --- | --- |
| 1 | **Этап 1. Инициация проекта и анализ производства** | 2025-02-03 05:00 A → 2027-02-03 09:00 A (+730d) | 2025-02-21 14:00 A → 2027-02-22 18:00 A (+731d) | 14.5d → 14d |  | baseline start 2025-02-03 05:00 → 2027-02-03 09:00; baseline finish 2025-02-21 14:00 → 2027-02-22 18:00 |
| 2 | Утверждение концепции и устава проекта | 2025-02-03 05:00 A → 2027-02-03 09:00 A (+730d) | 2025-02-05 13:00 A → 2027-02-05 18:00 A (+730d) |  |  | baseline start 2025-02-03 05:00 → 2027-02-03 09:00; baseline finish 2025-02-05 13:00 → 2027-02-05 18:00 |
| 3 | Обследование производственной линии и участков контроля | 2025-02-05 14:00 A → 2027-02-05 09:00 A (+730d) | 2025-02-12 13:00 A → 2027-02-11 18:00 A (+729d) |  |  | baseline start 2025-02-05 14:00 → 2027-02-05 09:00; baseline finish 2025-02-12 13:00 → 2027-02-11 18:00 |
| 4 | Сбор и систематизация требований к системе | 2025-02-10 14:00 A → 2027-02-10 09:00 A (+730d) | 2025-02-18 13:00 A → 2027-02-17 18:00 A (+729d) |  |  | baseline start 2025-02-10 14:00 → 2027-02-10 09:00; baseline finish 2025-02-18 13:00 → 2027-02-17 18:00 |
| 5 | Изучение требований промышленной безопасности и ГОСТ | 2025-02-12 14:00 A → 2027-02-12 09:00 A (+730d) | 2025-02-18 13:00 A → 2027-02-17 18:00 A (+729d) |  |  | baseline start 2025-02-12 14:00 → 2027-02-12 09:00; baseline finish 2025-02-18 13:00 → 2027-02-17 18:00 |
| 6 | Анализ существующих систем машинного зрения | 2025-02-12 14:00 A → 2027-02-12 09:00 A (+730d) | 2025-02-18 13:00 A → 2027-02-17 18:00 A (+729d) |  |  | baseline start 2025-02-12 14:00 → 2027-02-12 09:00; baseline finish 2025-02-18 13:00 → 2027-02-17 18:00 |
| 7 | Формирование бэклога и критериев приёмки | 2025-02-18 14:00 A → 2027-02-18 09:00 A (+730d) | 2025-02-21 13:00 A → 2027-02-22 18:00 A (+731d) |  |  | baseline start 2025-02-18 14:00 → 2027-02-18 09:00; baseline finish 2025-02-21 13:00 → 2027-02-22 18:00 |
| 8 | Создание репозитория и настройка CI/CD-конвейера | 2025-02-05 09:00 A → 2027-02-05 09:00 A (+730d) | 2025-02-07 18:00 A → 2027-02-09 18:00 A (+732d) |  |  | baseline start 2025-02-05 09:00 → 2027-02-05 09:00; baseline finish 2025-02-07 18:00 → 2027-02-09 18:00 |
| 9 | Развёртывание GPU-стенда и средств разметки | 2025-02-10 09:00 A → 2027-02-10 09:00 A (+730d) | 2025-02-14 18:00 A → 2027-02-16 18:00 A (+732d) |  |  | baseline start 2025-02-10 09:00 → 2027-02-10 09:00; baseline finish 2025-02-14 18:00 → 2027-02-16 18:00 |
| 10 | Веха 1. Требования и план проекта согласованы | 2025-02-21 14:00 A → 2027-02-22 09:00 A (+731d) | 2025-02-21 14:00 A → 2027-02-22 09:00 A (+731d) |  |  | baseline start 2025-02-21 14:00 → 2027-02-22 09:00; baseline finish 2025-02-21 14:00 → 2027-02-22 09:00 |
| 11 | **Этап 2. Проектирование системы технического зрения** | 2025-02-21 14:00 A → 2027-02-22 09:00 A (+731d) | 2025-03-24 14:00 A → 2027-03-24 09:00 A (+730d) | 21d → 22d |  | baseline start 2025-02-21 14:00 → 2027-02-22 09:00; baseline finish 2025-03-24 14:00 → 2027-03-24 09:00 |
| 12 | Разработка архитектуры системы технического зрения | 2025-02-21 14:00 A → 2027-02-22 09:00 A (+731d) | 2025-03-03 13:00 A → 2027-03-01 18:00 A (+728d) |  |  | baseline start 2025-02-21 14:00 → 2027-02-22 09:00; baseline finish 2025-03-03 13:00 → 2027-03-01 18:00 |
| 13 | Проектирование интерфейса оператора линии | 2025-02-21 14:00 A → 2027-02-22 09:00 A (+731d) | 2025-03-05 13:00 A → 2027-03-03 18:00 A (+728d) |  |  | baseline start 2025-02-21 14:00 → 2027-02-22 09:00; baseline finish 2025-03-05 13:00 → 2027-03-03 18:00 |
| 14 | Проектирование интеграции с АСУ ТП | 2025-03-03 14:00 A → 2027-03-03 09:00 A (+730d) | 2025-03-11 13:00 A → 2027-03-10 18:00 A (+729d) |  |  | baseline start 2025-03-03 14:00 → 2027-03-03 09:00; baseline finish 2025-03-11 13:00 → 2027-03-10 18:00 |
| 15 | Проектирование схемы БД истории дефектов | 2025-03-04 14:00 A → 2027-03-04 09:00 A (+730d) | 2025-03-11 13:00 A → 2027-03-10 18:00 A (+729d) |  |  | baseline start 2025-03-04 14:00 → 2027-03-04 09:00; baseline finish 2025-03-11 13:00 → 2027-03-10 18:00 |
| 16 | Проектирование защиты данных и доступа | 2025-03-03 14:00 A → 2027-03-03 09:00 A (+730d) | 2025-03-10 13:00 A → 2027-03-09 18:00 A (+729d) |  |  | baseline start 2025-03-03 14:00 → 2027-03-03 09:00; baseline finish 2025-03-10 13:00 → 2027-03-09 18:00 |
| 17 | Разработка технического задания и протоколов обмена | 2025-03-11 14:00 A → 2027-03-11 09:00 A (+730d) | 2025-03-19 13:00 A → 2027-03-18 18:00 A (+729d) |  |  | baseline start 2025-03-11 14:00 → 2027-03-11 09:00; baseline finish 2025-03-19 13:00 → 2027-03-18 18:00 |
| 18 | Разработка макетов экранов оператора | 2025-03-05 14:00 A → 2027-03-05 09:00 A (+730d) | 2025-03-13 13:00 A → 2027-03-12 18:00 A (+729d) |  |  | baseline start 2025-03-05 14:00 → 2027-03-05 09:00; baseline finish 2025-03-13 13:00 → 2027-03-12 18:00 |
| 19 | Согласование макетов с заказчиком | 2025-03-13 14:00 A → 2027-03-15 09:00 A (+732d) | 2025-03-19 13:00 A → 2027-03-18 18:00 A (+729d) |  |  | baseline start 2025-03-13 14:00 → 2027-03-15 09:00; baseline finish 2025-03-19 13:00 → 2027-03-18 18:00 |
| 20 | Рецензирование архитектурных решений | 2025-03-19 14:00 A → 2027-03-19 09:00 A (+730d) | 2025-03-24 13:00 A → 2027-03-23 18:00 A (+729d) |  |  | baseline start 2025-03-19 14:00 → 2027-03-19 09:00; baseline finish 2025-03-24 13:00 → 2027-03-23 18:00 |
| 21 | Веха 2. Архитектура системы согласована | 2025-03-24 14:00 A → 2027-03-24 09:00 A (+730d) | 2025-03-24 14:00 A → 2027-03-24 09:00 A (+730d) |  |  | baseline start 2025-03-24 14:00 → 2027-03-24 09:00; baseline finish 2025-03-24 14:00 → 2027-03-24 09:00 |
| 22 | **Этап 3. Формирование датасета и обучение модели** | 2025-03-24 14:00 A → 2027-03-24 09:00 A (+730d) | 2025-06-09 13:00 → 2027-05-07 09:00 (+697d) | 51d → 32d | 3% → 8% | baseline start 2025-03-24 14:00 → 2027-03-24 09:00; baseline finish 2025-06-09 13:00 → 2027-05-07 09:00 |
| 23 | Настройка конвейера сбора и обработки изображений | 2025-03-24 14:00 A → 2027-03-24 09:00 A (+730d) | 2025-05-05 14:48 → 2027-04-02 18:00 (+697d) | 28.1d → 8d | 23% → 80% | baseline start 2025-03-24 14:00 → 2027-03-24 09:00; baseline finish 2025-04-03 13:00 → 2027-04-02 18:00 |
| 24 | Калибровка камер и освещения | 2025-04-03 14:00 A → 2027-04-05 09:00 A (+732d) | 2025-05-13 13:00 → 2027-04-12 18:00 (+699d) | 24d → 6d | 0% → 1% | baseline start 2025-04-03 14:00 → 2027-04-05 09:00; baseline finish 2025-04-11 13:00 → 2027-04-12 18:00 |
| 25 | Сбор исходного датасета изображений | 2025-04-03 14:00 A → 2027-04-05 09:00 A (+732d) | 2025-05-13 13:00 → 2027-04-12 18:00 (+699d) | 24d → 6d | 0% → 1% | baseline start 2025-04-03 14:00 → 2027-04-05 09:00; baseline finish 2025-04-11 13:00 → 2027-04-12 18:00 |
| 26 | Разметка изображений и выделение дефектов | 2025-04-11 14:00 → 2027-04-12 09:00 (+731d) | 2025-05-19 13:00 → 2027-04-23 18:00 (+704d) | 22d → 10d |  | constraint must start on 2025-04-11 14:00 → must start on 2027-04-12 09:00; baseline start 2025-04-11 14:00 → 2027-04-12 09:00; baseline finish 2025-04-25 13:00 → 2027-04-23 18:00 |
| 27 | Аугментация и балансировка датасета | 2025-04-11 14:00 → 2027-04-12 09:00 (+731d) | 2025-05-13 13:00 → 2027-04-19 18:00 (+706d) | 18d → 6d |  | baseline start 2025-04-11 14:00 → 2027-04-12 09:00; baseline finish 2025-04-21 13:00 → 2027-04-19 18:00 |
| 28 | Разделение данных на обучающую и тестовую выборки | 2025-04-18 14:00 → 2027-04-12 09:00 (+724d) | 2025-05-12 13:00 → 2027-04-16 18:00 (+704d) | 12d → 5d |  | baseline start 2025-04-18 14:00 → 2027-04-12 09:00; baseline finish 2025-04-25 13:00 → 2027-04-16 18:00 |
| 29 | Обучение базовой модели детекции дефектов | 2025-05-28 14:00 → 2027-04-26 09:00 (+698d) | 2025-06-09 13:00 → 2027-05-05 18:00 (+695d) |  |  | baseline start 2025-05-28 14:00 → 2027-04-26 09:00; baseline finish 2025-06-09 13:00 → 2027-05-05 18:00 |
| 30 | Валидация модели на контрольной выборке | 2025-04-25 14:00 → 2027-04-05 09:00 (+710d) | 2025-05-09 13:00 → 2027-04-08 18:00 (+699d) | 6d → 4d |  | baseline start 2025-04-25 14:00 → 2027-04-05 09:00; baseline finish 2025-05-05 13:00 → 2027-04-08 18:00 |
| 31 | Анализ ошибок и ложных срабатываний | 2025-04-11 14:00 → 2027-04-12 09:00 (+731d) | 2025-04-21 13:00 → 2027-04-19 18:00 (+728d) |  |  | baseline start 2025-04-11 14:00 → 2027-04-12 09:00; baseline finish 2025-04-21 13:00 → 2027-04-19 18:00 |
| 32 | Доразметка редких видов дефектов | 2025-04-03 14:00 A → 2027-04-05 09:00 A (+732d) | 2025-05-13 13:00 → 2027-04-12 18:00 (+699d) | 24d → 6d | 0% → 1% | baseline start 2025-04-03 14:00 → 2027-04-05 09:00; baseline finish 2025-04-11 13:00 → 2027-04-12 18:00 |
| 33 | Повторное обучение модели на расширенном датасете | 2025-04-25 14:00 → 2027-04-21 09:00 (+726d) | 2025-05-12 13:00 → 2027-04-27 18:00 (+715d) | 7d → 5d |  | baseline start 2025-04-25 14:00 → 2027-04-21 09:00; baseline finish 2025-05-06 13:00 → 2027-04-27 18:00 |
| 34 | Квантование и оптимизация модели для инференса | 2025-04-25 14:00 → 2027-04-26 09:00 (+731d) | 2025-05-09 16:00 → 2027-05-04 18:00 (+725d) | 6.25d → 7d |  | constraint start no earlier than 2025-04-25 14:00 → start no earlier than 2027-04-26 09:00; baseline start 2025-04-25 14:00 → 2027-04-26 09:00; baseline finish 2025-05-12 13:00 → 2027-05-04 18:00 |
| 35 | Тестирование скорости инференса | 2025-04-30 14:00 → 2027-04-30 09:00 (+730d) | 2025-05-12 13:00 → 2027-05-06 18:00 (+724d) |  |  | resources Тестировщик; DevOps-инженер [50%] → Тестировщик [99%]; DevOps-инженер [50%]; baseline start 2025-04-30 14:00 → 2027-04-30 09:00; baseline finish 2025-05-12 13:00 → 2027-05-06 18:00 |
| 36 | Веха 3. Модель обучена и оптимизирована | 2025-05-07 14:00 → 2027-05-07 09:00 (+730d) | 2025-05-07 14:00 → 2027-05-07 09:00 (+730d) |  |  | baseline start 2025-05-07 14:00 → 2027-05-07 09:00; baseline finish 2025-05-07 14:00 → 2027-05-07 09:00 |
| 37 | **Этап 4. Интеграция с производственной инфраструктурой** | 2025-05-07 14:00 → 2027-05-07 09:00 (+730d) | 2025-07-02 13:00 → 2027-06-16 09:00 (+714d) | 37.5d → 28d |  | baseline start 2025-05-07 14:00 → 2027-05-07 09:00; baseline finish 2025-07-02 13:00 → 2027-06-16 09:00 |
| 38 | Разработка серверной службы обработки кадров | 2025-05-07 14:00 → 2027-05-07 09:00 (+730d) | 2025-05-20 13:00 → 2027-05-18 18:00 (+728d) |  |  | resources CV-инженер [150%] → CV-инженер [149%]; baseline start 2025-05-07 14:00 → 2027-05-07 09:00; baseline finish 2025-05-20 13:00 → 2027-05-18 18:00 |
| 39 | Интеграция с промышленной АСУ ТП | 2025-05-20 14:00 → 2027-05-19 09:00 (+729d) | 2025-05-29 13:00 → 2027-05-27 18:00 (+728d) |  |  | baseline start 2025-05-20 14:00 → 2027-05-19 09:00; baseline finish 2025-05-29 13:00 → 2027-05-27 18:00 |
| 40 | Интеграция с системой отбраковки | 2025-05-19 14:00 → 2027-05-19 09:00 (+730d) | 2025-05-26 13:00 → 2027-05-25 18:00 (+729d) |  |  | baseline start 2025-05-19 14:00 → 2027-05-19 09:00; baseline finish 2025-05-26 13:00 → 2027-05-25 18:00 |
| 41 | Интеграция с конвейерной линией | 2025-05-19 14:00 → 2027-05-19 09:00 (+730d) | 2025-05-23 13:00 → 2027-05-24 18:00 (+731d) |  |  | baseline start 2025-05-19 14:00 → 2027-05-19 09:00; baseline finish 2025-05-23 13:00 → 2027-05-24 18:00 |
| 42 | Интеграция с MES-системой предприятия | 2025-05-20 14:00 → 2027-05-20 09:00 (+730d) | 2025-05-28 13:00 → 2027-05-27 18:00 (+729d) |  |  | baseline start 2025-05-20 14:00 → 2027-05-20 09:00; baseline finish 2025-05-28 13:00 → 2027-05-27 18:00 |
| 43 | Настройка мониторинга и журналирования | 2025-05-23 14:00 → 2027-05-19 09:00 (+726d) | 2025-05-29 13:00 → 2027-05-24 18:00 (+725d) |  |  | baseline start 2025-05-23 14:00 → 2027-05-19 09:00; baseline finish 2025-05-29 13:00 → 2027-05-24 18:00 |
| 44 | Проверка соответствия требованиям безопасности | 2025-05-26 14:00 → 2027-05-26 09:00 (+730d) | 2025-06-02 13:00 → 2027-06-01 18:00 (+729d) |  |  | baseline start 2025-05-26 14:00 → 2027-05-26 09:00; baseline finish 2025-06-02 13:00 → 2027-06-01 18:00 |
| 45 | Регрессионное тестирование интеграций | 2025-06-02 14:00 → 2027-06-02 09:00 (+730d) | 2025-06-10 13:00 → 2027-06-09 18:00 (+729d) |  |  | baseline start 2025-06-02 14:00 → 2027-06-02 09:00; baseline finish 2025-06-10 13:00 → 2027-06-09 18:00 |
| 46 | Тестирование отказоустойчивости при обрыве связи | 2025-06-26 14:00 → 2027-06-10 09:00 (+714d) | 2025-07-02 13:00 → 2027-06-15 18:00 (+713d) |  |  | baseline start 2025-06-26 14:00 → 2027-06-10 09:00; baseline finish 2025-07-02 13:00 → 2027-06-15 18:00 |
| 47 | Веха 4. Интеграция завершена | 2025-06-16 14:00 → 2027-06-16 09:00 (+730d) | 2025-06-16 14:00 → 2027-06-16 09:00 (+730d) |  |  | baseline start 2025-06-16 14:00 → 2027-06-16 09:00; baseline finish 2025-06-16 14:00 → 2027-06-16 09:00 |
| 48 | **Этап 5. Тестирование и опытная эксплуатация** | 2025-05-12 14:00 → 2027-05-07 09:00 (+725d) | 2025-07-16 14:00 → 2027-07-16 09:00 (+730d) | 46d → 50d |  | baseline start 2025-05-12 14:00 → 2027-05-07 09:00; baseline finish 2025-07-16 14:00 → 2027-07-16 09:00 |
| 49 | Разработка тест-плана и тест-кейсов | 2025-05-12 14:00 → 2027-05-07 09:00 (+725d) | 2025-05-19 13:00 → 2027-05-13 18:00 (+724d) |  |  | resources Тестировщик; Бизнес-аналитик [50%] → Тестировщик [99%]; Бизнес-аналитик [50%]; baseline start 2025-05-12 14:00 → 2027-05-07 09:00; baseline finish 2025-05-19 13:00 → 2027-05-13 18:00 |
| 50 | Функциональное тестирование | 2025-06-10 14:00 → 2027-06-10 09:00 (+730d) | 2025-06-23 13:00 → 2027-06-21 18:00 (+728d) |  |  | baseline start 2025-06-10 14:00 → 2027-06-10 09:00; baseline finish 2025-06-23 13:00 → 2027-06-21 18:00 |
| 51 | Оценка удобства работы оператора | 2025-06-20 14:00 → 2027-06-21 09:00 (+731d) | 2025-06-26 13:00 → 2027-06-24 18:00 (+728d) |  |  | baseline start 2025-06-20 14:00 → 2027-06-21 09:00; baseline finish 2025-06-26 13:00 → 2027-06-24 18:00 |
| 52 | Проверка защищённости и прав доступа | 2025-06-20 14:00 → 2027-06-21 09:00 (+731d) | 2025-06-27 13:00 → 2027-06-25 18:00 (+728d) |  |  | baseline start 2025-06-20 14:00 → 2027-06-21 09:00; baseline finish 2025-06-27 13:00 → 2027-06-25 18:00 |
| 53 | Тестирование на целевом оборудовании линии | 2025-06-20 14:00 → 2027-06-21 09:00 (+731d) | 2025-06-27 13:00 → 2027-06-25 18:00 (+728d) |  |  | baseline start 2025-06-20 14:00 → 2027-06-21 09:00; baseline finish 2025-06-27 13:00 → 2027-06-25 18:00 |
| 54 | Тестирование при деградации освещения и связи | 2025-06-23 14:00 → 2027-06-21 09:00 (+728d) | 2025-06-26 13:00 → 2027-06-23 18:00 (+727d) |  |  | baseline start 2025-06-23 14:00 → 2027-06-21 09:00; baseline finish 2025-06-26 13:00 → 2027-06-23 18:00 |
| 55 | Исправление выявленных дефектов системы | 2025-06-27 14:00 → 2027-06-28 09:00 (+731d) | 2025-07-11 13:00 → 2027-07-09 18:00 (+728d) |  |  | constraint finish no later than 2025-07-16 13:00 → finish no later than 2027-07-14 18:00; baseline start 2025-06-27 14:00 → 2027-06-28 09:00; baseline finish 2025-07-11 13:00 → 2027-07-09 18:00 |
| 56 | Подготовка отчёта о тестировании | 2025-07-11 14:00 → 2027-07-12 09:00 (+731d) | 2025-07-16 13:00 → 2027-07-14 18:00 (+728d) |  |  | baseline start 2025-07-11 14:00 → 2027-07-12 09:00; baseline finish 2025-07-16 13:00 → 2027-07-14 18:00 |
| 57 | Веха 5. Тестирование завершено | 2025-07-16 14:00 → 2027-07-16 09:00 (+730d) | 2025-07-16 14:00 → 2027-07-16 09:00 (+730d) |  |  | baseline start 2025-07-16 14:00 → 2027-07-16 09:00; baseline finish 2025-07-16 14:00 → 2027-07-16 09:00 |
| 58 | **Этап 6. Внедрение и сопровождение** | 2025-07-16 14:00 → 2027-02-08 09:00 (+572d) | 2025-08-18 13:00 → 2027-08-17 18:00 (+729d) | 23d → 137d |  | baseline start 2025-07-16 14:00 → 2027-02-08 09:00; baseline finish 2025-08-18 13:00 → 2027-08-17 18:00 |
| 59 | Подготовка руководства оператора | 2025-07-16 14:00 → 2027-07-16 09:00 (+730d) | 2025-07-22 13:00 → 2027-07-21 18:00 (+729d) |  |  | baseline start 2025-07-16 14:00 → 2027-07-16 09:00; baseline finish 2025-07-22 13:00 → 2027-07-21 18:00 |
| 60 | Обучение операторов и инженеров ОТК | 2025-07-22 14:00 → 2027-07-22 09:00 (+730d) | 2025-07-25 13:00 → 2027-07-26 18:00 (+731d) |  |  | baseline start 2025-07-22 14:00 → 2027-07-22 09:00; baseline finish 2025-07-25 13:00 → 2027-07-26 18:00 |
| 61 | Настройка продуктивной среды и резервного копирования | 2025-07-23 14:00 → 2027-07-16 09:00 (+723d) | 2025-07-28 13:00 → 2027-07-20 18:00 (+722d) |  |  | baseline start 2025-07-23 14:00 → 2027-07-16 09:00; baseline finish 2025-07-28 13:00 → 2027-07-20 18:00 |
| 62 | Развёртывание системы на производственной линии | 2025-07-16 14:00 → 2027-07-16 09:00 (+730d) | 2025-07-23 13:00 → 2027-07-22 18:00 (+729d) |  |  | baseline start 2025-07-16 14:00 → 2027-07-16 09:00; baseline finish 2025-07-23 13:00 → 2027-07-22 18:00 |
| 63 | Проведение приёмочных испытаний с заказчиком | 2025-07-25 14:00 → 2027-07-26 09:00 (+731d) | 2025-07-31 13:00 → 2027-07-29 18:00 (+728d) |  |  | constraint must finish on 2025-07-31 13:00 → must finish on 2027-08-01 08:00; baseline start 2025-07-25 14:00 → 2027-07-26 09:00; baseline finish 2025-07-31 13:00 → 2027-07-29 18:00 |
| 64 | Передача документации и исходного кода | 2025-07-23 14:00 → 2027-07-23 09:00 (+730d) | 2025-07-28 13:00 → 2027-07-27 18:00 (+729d) |  |  | baseline start 2025-07-23 14:00 → 2027-07-23 09:00; baseline finish 2025-07-28 13:00 → 2027-07-27 18:00 |
| 65 | Опытно-промышленная эксплуатация | 2025-07-31 14:00 → 2027-08-02 09:00 (+732d) | 2025-08-08 13:00 → 2027-08-09 18:00 (+731d) |  |  | baseline start 2025-07-31 14:00 → 2027-08-02 09:00; baseline finish 2025-08-08 13:00 → 2027-08-09 18:00 |
| 66 | Анализ обратной связи операторов и корректировка | 2025-08-08 14:00 → 2027-08-09 09:00 (+731d) | 2025-08-14 13:00 → 2027-08-12 18:00 (+728d) |  |  | baseline start 2025-08-08 14:00 → 2027-08-09 09:00; baseline finish 2025-08-14 13:00 → 2027-08-12 18:00 |
| 67 | Веха 6. Система введена в промышленную эксплуатацию | 2025-08-14 14:00 → 2027-08-16 09:00 (+732d) | 2025-08-14 14:00 → 2027-08-16 09:00 (+732d) |  |  | baseline start 2025-08-14 14:00 → 2027-08-16 09:00; baseline finish 2025-08-14 14:00 → 2027-08-16 09:00 |
| 68 | **Совещание** | 2025-02-07 05:00 → 2027-02-08 09:00 (+731d) | 2025-08-15 06:00 → 2027-08-16 10:00 (+731d) | 130d → 135.12d |  | baseline start none → 2027-02-08 09:00; baseline finish none → 2027-08-16 10:00 |
| 69 | Совещание 1 | 2025-02-07 05:00 → 2027-02-08 09:00 (+731d) | 2025-02-07 06:00 → 2027-02-08 10:00 (+731d) |  |  | constraint start no earlier than 2025-02-07 05:00 → start no earlier than 2027-02-08 09:00; baseline start none → 2027-02-08 09:00; baseline finish none → 2027-02-08 10:00 |
| 70 | Совещание 2 | 2025-02-14 05:00 → 2027-02-15 09:00 (+731d) | 2025-02-14 06:00 → 2027-02-15 10:00 (+731d) |  |  | constraint start no earlier than 2025-02-14 05:00 → start no earlier than 2027-02-15 09:00; baseline start none → 2027-02-15 09:00; baseline finish none → 2027-02-15 10:00 |

| ID | Task | Start | Finish | Other |
| --- | --- | --- | --- | --- |
| 71 | Совещание 3 | 2025-02-21 05:00 → 2027-02-22 09:00 (+731d) | 2025-02-21 06:00 → 2027-02-22 10:00 (+731d) | constraint start no earlier than 2025-02-21 05:00 → start no earlier than 2027-02-22 09:00; baseline start none → 2027-02-22 09:00; baseline finish none → 2027-02-22 10:00 |
| 72 | Совещание 4 | 2025-02-28 05:00 → 2027-03-01 09:00 (+731d) | 2025-02-28 06:00 → 2027-03-01 10:00 (+731d) | constraint start no earlier than 2025-02-28 05:00 → start no earlier than 2027-03-01 09:00; baseline start none → 2027-03-01 09:00; baseline finish none → 2027-03-01 10:00 |
| 73 | Совещание 5 | 2025-03-07 05:00 → 2027-03-08 09:00 (+731d) | 2025-03-07 06:00 → 2027-03-08 10:00 (+731d) | constraint start no earlier than 2025-03-07 05:00 → start no earlier than 2027-03-08 09:00; baseline start none → 2027-03-08 09:00; baseline finish none → 2027-03-08 10:00 |
| 74 | Совещание 6 | 2025-03-14 05:00 → 2027-03-15 09:00 (+731d) | 2025-03-14 06:00 → 2027-03-15 10:00 (+731d) | constraint start no earlier than 2025-03-14 05:00 → start no earlier than 2027-03-15 09:00; baseline start none → 2027-03-15 09:00; baseline finish none → 2027-03-15 10:00 |
| 75 | Совещание 7 | 2025-03-21 05:00 → 2027-03-22 09:00 (+731d) | 2025-03-21 06:00 → 2027-03-22 10:00 (+731d) | constraint start no earlier than 2025-03-21 05:00 → start no earlier than 2027-03-22 09:00; baseline start none → 2027-03-22 09:00; baseline finish none → 2027-03-22 10:00 |
| 76 | Совещание 8 | 2025-03-28 05:00 → 2027-03-29 09:00 (+731d) | 2025-03-28 06:00 → 2027-03-29 10:00 (+731d) | constraint start no earlier than 2025-03-28 05:00 → start no earlier than 2027-03-29 09:00; baseline start none → 2027-03-29 09:00; baseline finish none → 2027-03-29 10:00 |
| 77 | Совещание 9 | 2025-04-04 05:00 → 2027-04-05 09:00 (+731d) | 2025-04-04 06:00 → 2027-04-05 10:00 (+731d) | constraint start no earlier than 2025-04-04 05:00 → start no earlier than 2027-04-05 09:00; baseline start none → 2027-04-05 09:00; baseline finish none → 2027-04-05 10:00 |
| 78 | Совещание 10 | 2025-04-11 05:00 → 2027-04-12 09:00 (+731d) | 2025-04-11 06:00 → 2027-04-12 10:00 (+731d) | constraint start no earlier than 2025-04-11 05:00 → start no earlier than 2027-04-12 09:00; baseline start none → 2027-04-12 09:00; baseline finish none → 2027-04-12 10:00 |
| 79 | Совещание 11 | 2025-04-18 05:00 → 2027-04-19 09:00 (+731d) | 2025-04-18 06:00 → 2027-04-19 10:00 (+731d) | constraint start no earlier than 2025-04-18 05:00 → start no earlier than 2027-04-19 09:00; baseline start none → 2027-04-19 09:00; baseline finish none → 2027-04-19 10:00 |
| 80 | Совещание 12 | 2025-04-25 05:00 → 2027-04-26 09:00 (+731d) | 2025-04-25 06:00 → 2027-04-26 10:00 (+731d) | constraint start no earlier than 2025-04-25 05:00 → start no earlier than 2027-04-26 09:00; baseline start none → 2027-04-26 09:00; baseline finish none → 2027-04-26 10:00 |
| 81 | Совещание 13 | 2025-05-02 05:00 → 2027-05-03 09:00 (+731d) | 2025-05-02 06:00 → 2027-05-03 10:00 (+731d) | constraint start no earlier than 2025-05-02 05:00 → start no earlier than 2027-05-03 09:00; baseline start none → 2027-05-03 09:00; baseline finish none → 2027-05-03 10:00 |
| 82 | Совещание 14 | 2025-05-09 05:00 → 2027-05-10 09:00 (+731d) | 2025-05-09 06:00 → 2027-05-10 10:00 (+731d) | constraint start no earlier than 2025-05-09 05:00 → start no earlier than 2027-05-10 09:00; baseline start none → 2027-05-10 09:00; baseline finish none → 2027-05-10 10:00 |
| 83 | Совещание 15 | 2025-05-16 05:00 → 2027-05-17 09:00 (+731d) | 2025-05-16 06:00 → 2027-05-17 10:00 (+731d) | constraint start no earlier than 2025-05-16 05:00 → start no earlier than 2027-05-17 09:00; baseline start none → 2027-05-17 09:00; baseline finish none → 2027-05-17 10:00 |
| 84 | Совещание 16 | 2025-05-23 05:00 → 2027-05-24 09:00 (+731d) | 2025-05-23 06:00 → 2027-05-24 10:00 (+731d) | constraint start no earlier than 2025-05-23 05:00 → start no earlier than 2027-05-24 09:00; baseline start none → 2027-05-24 09:00; baseline finish none → 2027-05-24 10:00 |
| 85 | Совещание 17 | 2025-05-30 05:00 → 2027-05-31 09:00 (+731d) | 2025-05-30 06:00 → 2027-05-31 10:00 (+731d) | constraint start no earlier than 2025-05-30 05:00 → start no earlier than 2027-05-31 09:00; baseline start none → 2027-05-31 09:00; baseline finish none → 2027-05-31 10:00 |
| 86 | Совещание 18 | 2025-06-06 05:00 → 2027-06-07 09:00 (+731d) | 2025-06-06 06:00 → 2027-06-07 10:00 (+731d) | constraint start no earlier than 2025-06-06 05:00 → start no earlier than 2027-06-07 09:00; baseline start none → 2027-06-07 09:00; baseline finish none → 2027-06-07 10:00 |
| 87 | Совещание 19 | 2025-06-13 05:00 → 2027-06-14 09:00 (+731d) | 2025-06-13 06:00 → 2027-06-14 10:00 (+731d) | constraint start no earlier than 2025-06-13 05:00 → start no earlier than 2027-06-14 09:00; baseline start none → 2027-06-14 09:00; baseline finish none → 2027-06-14 10:00 |
| 88 | Совещание 20 | 2025-06-20 05:00 → 2027-06-21 09:00 (+731d) | 2025-06-20 06:00 → 2027-06-21 10:00 (+731d) | constraint start no earlier than 2025-06-20 05:00 → start no earlier than 2027-06-21 09:00; baseline start none → 2027-06-21 09:00; baseline finish none → 2027-06-21 10:00 |
| 89 | Совещание 21 | 2025-06-27 05:00 → 2027-06-28 09:00 (+731d) | 2025-06-27 06:00 → 2027-06-28 10:00 (+731d) | constraint start no earlier than 2025-06-27 05:00 → start no earlier than 2027-06-28 09:00; baseline start none → 2027-06-28 09:00; baseline finish none → 2027-06-28 10:00 |
| 90 | Совещание 22 | 2025-07-04 05:00 → 2027-07-05 09:00 (+731d) | 2025-07-04 06:00 → 2027-07-05 10:00 (+731d) | constraint start no earlier than 2025-07-04 05:00 → start no earlier than 2027-07-05 09:00; baseline start none → 2027-07-05 09:00; baseline finish none → 2027-07-05 10:00 |
| 91 | Совещание 23 | 2025-07-11 05:00 → 2027-07-12 09:00 (+731d) | 2025-07-11 06:00 → 2027-07-12 10:00 (+731d) | constraint start no earlier than 2025-07-11 05:00 → start no earlier than 2027-07-12 09:00; baseline start none → 2027-07-12 09:00; baseline finish none → 2027-07-12 10:00 |
| 92 | Совещание 24 | 2025-07-18 05:00 → 2027-07-19 09:00 (+731d) | 2025-07-18 06:00 → 2027-07-19 10:00 (+731d) | constraint start no earlier than 2025-07-18 05:00 → start no earlier than 2027-07-19 09:00; baseline start none → 2027-07-19 09:00; baseline finish none → 2027-07-19 10:00 |
| 93 | Совещание 25 | 2025-07-25 05:00 → 2027-07-26 09:00 (+731d) | 2025-07-25 06:00 → 2027-07-26 10:00 (+731d) | constraint start no earlier than 2025-07-25 05:00 → start no earlier than 2027-07-26 09:00; baseline start none → 2027-07-26 09:00; baseline finish none → 2027-07-26 10:00 |
| 94 | Совещание 26 | 2025-08-01 05:00 → 2027-08-02 09:00 (+731d) | 2025-08-01 06:00 → 2027-08-02 10:00 (+731d) | constraint start no earlier than 2025-08-01 05:00 → start no earlier than 2027-08-02 09:00; baseline start none → 2027-08-02 09:00; baseline finish none → 2027-08-02 10:00 |
| 95 | Совещание 27 | 2025-08-08 05:00 → 2027-08-09 09:00 (+731d) | 2025-08-08 06:00 → 2027-08-09 10:00 (+731d) | constraint start no earlier than 2025-08-08 05:00 → start no earlier than 2027-08-09 09:00; baseline start none → 2027-08-09 09:00; baseline finish none → 2027-08-09 10:00 |
| 96 | Совещание 28 | 2025-08-15 05:00 → 2027-08-16 09:00 (+731d) | 2025-08-15 06:00 → 2027-08-16 10:00 (+731d) | constraint start no earlier than 2025-08-15 05:00 → start no earlier than 2027-08-16 09:00; baseline start none → 2027-08-16 09:00; baseline finish none → 2027-08-16 10:00 |
| 97 | Закрытие проекта и архивирование | 2025-08-14 14:00 → 2027-08-16 09:00 (+732d) | 2025-08-18 13:00 → 2027-08-17 18:00 (+729d) | baseline start 2025-08-14 14:00 → 2027-08-16 09:00; baseline finish 2025-08-18 13:00 → 2027-08-17 18:00 |
