# УП_Шистерин

How a schedule from MS Project changed from version to version. A marks actual dates.

## Version 1 (data date 2025-04-01, saved 2026-11-09)

| ID | WBS | Task | Duration | Start | Finish | Predecessors | Complete | Total float | Constraint |
| --- | --- | --- | --- | --- | --- | --- | --- | --- | --- |
| 1 | 1 | **Этап 1. Инициализация проекта и анализ требований** | 14.5d | 2025-02-03 05:00 A | 2025-02-21 14:00 A |  | 100% |  |  |
| 2 |  | Утверждение концепции и устав проекта | 3d | 2025-02-03 05:00 A | 2025-02-05 13:00 A |  | 100% |  |  |
| 3 |  | Анализ бизнес-процессов интернет-банка | 5d | 2025-02-05 14:00 A | 2025-02-12 13:00 A | 2 | 100% |  |  |
| 4 |  | Сбор и систематизация требований заказчика | 6d | 2025-02-10 14:00 A | 2025-02-18 13:00 A | 2 | 100% |  |  |
| 5 |  | Изучение нормативных требований (152-ФЗ, ГОСТ Р 56920) | 4d | 2025-02-12 14:00 A | 2025-02-18 13:00 A | 3 | 100% |  |  |
| 6 |  | Анализ конкурентных мобильных банков | 4d | 2025-02-12 14:00 A | 2025-02-18 13:00 A | 3 | 100% |  |  |
| 7 |  | Формирование бэклога и критериев приёмки | 3d | 2025-02-18 14:00 A | 2025-02-21 13:00 A | 4, 5, 6 | 100% |  |  |
| 8 |  | Создание репозитория и настройка CI/CD-конвейера | 3d | 2025-02-05 09:00 A | 2025-02-07 18:00 A | 2SS+2d | 100% |  |  |
| 9 |  | Развёртывание тестового стенда и средств автоматизации | 5d | 2025-02-10 09:00 A | 2025-02-14 18:00 A | 8 | 100% |  |  |
| 10 |  | Веха 1. Согласование требований и плана проекта | 0d | 2025-02-21 14:00 A | 2025-02-21 14:00 A | 7, 9 | 100% |  |  |
| 11 | 2 | **Этап 2. Проектирование мобильного приложения** | 21d | 2025-02-21 14:00 A | 2025-03-24 14:00 A |  | 100% |  |  |
| 12 |  | Разработка целевой архитектуры мобильного приложения | 6d | 2025-02-21 14:00 A | 2025-03-03 13:00 A | 10 | 100% |  |  |
| 13 |  | Проектирование UX/UI мобильного интерфейса | 8d | 2025-02-21 14:00 A | 2025-03-05 13:00 A | 10 | 100% |  |  |
| 14 |  | Проектирование интеграционного слоя с API банка | 6d | 2025-03-03 14:00 A | 2025-03-11 13:00 A | 12 | 100% |  |  |
| 15 |  | Проектирование схемы БД офлайн-кэша | 5d | 2025-03-04 14:00 A | 2025-03-11 13:00 A | 12 | 100% |  |  |
| 16 |  | Проектирование модели безопасности и аутентификации | 5d | 2025-03-03 14:00 A | 2025-03-10 13:00 A | 12 | 100% |  |  |
| 17 |  | Разработка технического задания и API-контрактов | 6d | 2025-03-11 14:00 A | 2025-03-19 13:00 A | 13, 14, 15, 16 | 100% |  |  |
| 18 |  | Разработка дизайн-макетов ключевых экранов | 6d | 2025-03-05 14:00 A | 2025-03-13 13:00 A | 13 | 100% |  |  |
| 19 |  | Согласование дизайн-макетов с заказчиком | 4d | 2025-03-13 14:00 A | 2025-03-19 13:00 A | 18 | 100% |  |  |
| 20 |  | Рецензирование архитектурных решений | 3d | 2025-03-19 14:00 A | 2025-03-24 13:00 A | 17 | 100% |  |  |
| 21 |  | Веха 2. Архитектура мобильного приложения согласована | 0d | 2025-03-24 14:00 A | 2025-03-24 14:00 A | 19, 20 | 100% |  |  |
| 22 | 3 | **Этап 3. Разработка функционального ядра** | 32d | 2025-03-24 14:00 A | 2025-05-13 13:00 |  | 14% | 0d |  |
| 23 |  | Разработка каркаса приложения и навигации | 8d | 2025-03-24 14:00 A | 2025-04-03 13:00 | 21 | 80% |  |  |
| 24 |  | Реализация экрана аутентификации (PIN, биометрия) | 6d | 2025-04-03 14:00 A | 2025-04-11 13:00 | 23 | 21% |  |  |
| 25 |  | Реализация главного экрана и списка операций | 6d | 2025-04-03 14:00 A | 2025-04-11 13:00 | 23 | 21% |  |  |
| 26 |  | Реализация экрана платежей и переводов | 10d | 2025-04-11 14:00 | 2025-04-25 13:00 | 24, 25 |  |  | must start on 2025-04-11 14:00 |
| 27 |  | Реализация чатов с поддержкой банка | 6d | 2025-04-11 14:00 | 2025-04-21 13:00 | 25 |  |  |  |
| 28 |  | Реализация витрины продуктов и вкладов | 5d | 2025-04-11 14:00 | 2025-04-18 13:00 | 25 |  |  |  |
| 29 |  | Разработка офлайн-режима и механизма синхронизации | 8d | 2025-04-25 14:00 | 2025-05-13 13:00 | 26 |  |  |  |
| 30 |  | Интеграция с push-уведомлениями | 4d | 2025-04-03 14:00 A | 2025-04-09 13:00 | 23 | 32% |  |  |
| 31 |  | Реализация модуля аналитики и персонализации | 6d | 2025-04-11 14:00 | 2025-04-21 13:00 | 25 |  |  |  |
| 32 |  | Реализация офлайн-кэша на стороне клиента | 6d | 2025-04-03 14:00 A | 2025-04-11 13:00 | 15, 23 | 21% |  |  |
| 33 |  | Реализация аналитических дашбордов | 5d | 2025-04-21 14:00 | 2025-04-28 13:00 | 31SF+2d |  |  |  |
| 34 |  | Написание unit-тестов (целевое покрытие 80%) | 7d | 2025-04-25 14:00 | 2025-05-12 13:00 | 24, 26, 27, 28, 32 |  |  | start no earlier than 2025-04-25 14:00 |
| 35 |  | Нагрузочное тестирование API банка | 5d | 2025-04-30 14:00 | 2025-05-12 13:00 | 34FF+1d |  |  |  |
| 36 |  | Веха 3. Функциональное ядро разработано | 0d | 2025-05-07 14:00 | 2025-05-07 14:00 | 30, 33, 34, 35 |  |  |  |
| 37 | 4 | **Этап 4. Интеграция с банковскими сервисами** | 26.5d | 2025-05-07 14:00 | 2025-06-17 13:00 |  |  | 0d |  |
| 38 |  | Разработка клиента REST API интернет-банка | 8d | 2025-05-07 14:00 | 2025-05-20 13:00 | 36 |  |  |  |
| 39 |  | Интеграция с платёжным шлюзом | 7d | 2025-05-19 14:00 | 2025-05-28 13:00 | 38 |  |  |  |
| 40 |  | Интеграция с системой биометрической аутентификации | 5d | 2025-05-19 14:00 | 2025-05-26 13:00 | 24, 38 |  |  |  |
| 41 |  | Интеграция с push-сервисом банка | 4d | 2025-05-19 14:00 | 2025-05-23 13:00 | 30, 38 |  |  |  |
| 42 |  | Интеграция с CRM и системой чатов | 6d | 2025-05-19 14:00 | 2025-05-27 13:00 | 27, 38 |  |  |  |
| 43 |  | Настройка мониторинга и логирования (Sentry) | 4d | 2025-05-19 14:00 | 2025-05-23 13:00 | 38 |  |  |  |
| 44 |  | Проверка соответствия требованиям 152-ФЗ | 5d | 2025-05-26 14:00 | 2025-06-02 13:00 | 16, 40 |  |  |  |
| 45 |  | Регрессионное тестирование интеграций | 6d | 2025-06-02 14:00 | 2025-06-10 13:00 | 39, 40, 41, 42, 43, 44 |  |  |  |
| 46 |  | Тестирование отказоустойчивости каналов связи | 4d | 2025-06-10 14:00 | 2025-06-17 13:00 | 43, 45 |  |  |  |
| 47 |  | Веха 4. Интеграционные работы завершены | 0d | 2025-06-16 14:00 | 2025-06-16 14:00 | 45, 46 |  |  |  |
| 48 | 5 | **Этап 5. Тестирование и обеспечение качества** | 47.5d | 2025-05-07 14:00 | 2025-07-16 14:00 |  |  | 0d |  |
| 49 |  | Разработка тест-плана и тест-кейсов | 5d | 2025-05-07 14:00 | 2025-05-15 13:00 | 36 |  |  |  |
| 50 |  | Функциональное тестирование | 8d | 2025-06-10 14:00 | 2025-06-23 13:00 | 45, 49 |  |  |  |
| 51 |  | Тестирование удобства использования (UX) | 4d | 2025-06-20 14:00 | 2025-06-26 13:00 | 50 |  |  |  |
| 52 |  | Тестирование защищённости (pentest) | 5d | 2025-06-20 14:00 | 2025-06-27 13:00 | 44, 50 |  |  |  |
| 53 |  | Тестирование совместимости с устройствами и ОС | 5d | 2025-06-20 14:00 | 2025-06-27 13:00 | 50 |  |  |  |
| 54 |  | Тестирование офлайн-режима при потере связи | 3d | 2025-06-20 14:00 | 2025-06-25 13:00 | 29, 50 |  |  |  |
| 55 |  | Исправление выявленных дефектов | 10d | 2025-06-27 14:00 | 2025-07-11 13:00 | 51, 52, 53, 54 |  |  | finish no later than 2025-07-16 13:00 |
| 56 |  | Подготовка отчёта о тестировании | 3d | 2025-07-11 14:00 | 2025-07-16 13:00 | 55 |  |  |  |
| 57 |  | Веха 5. Тестирование завершено | 0d | 2025-07-16 14:00 | 2025-07-16 14:00 | 56 |  |  |  |
| 58 | 6 | **Этап 6. Подготовка к эксплуатации и выпуск** | 131.5d | 2025-02-07 05:00 | 2025-08-18 13:00 |  |  | 0d |  |
| 59 |  | Подготовка руководства пользователя | 4d | 2025-07-16 14:00 | 2025-07-22 13:00 | 57 |  |  |  |
| 60 |  | Обучение сотрудников поддержки | 3d | 2025-07-22 14:00 | 2025-07-25 13:00 | 59 |  |  |  |
| 61 |  | Настройка мониторинга продуктивной среды | 3d | 2025-07-16 14:00 | 2025-07-21 13:00 | 43, 57 |  |  |  |
| 62 |  | Публикация в App Store и Google Play | 5d | 2025-07-16 14:00 | 2025-07-23 13:00 | 57 |  |  |  |
| 63 |  | Проведение приёмочных испытаний с заказчиком | 4d | 2025-07-25 14:00 | 2025-07-31 13:00 | 57, 60 |  |  | must finish on 2025-07-31 13:00 |
| 64 |  | Передача документации и исходного кода | 3d | 2025-07-23 14:00 | 2025-07-28 13:00 | 59, 62 |  |  |  |
| 65 |  | Запуск рекламной кампании | 6d | 2025-07-31 14:00 | 2025-08-08 13:00 | 63 |  |  |  |
| 66 |  | Анализ первых отзывов и корректировка | 4d | 2025-08-08 14:00 | 2025-08-14 13:00 | 62, 63, 65 |  |  |  |
| 67 |  | Веха 6. Релиз мобильного приложения выполнен | 0d | 2025-08-14 14:00 | 2025-08-14 14:00 | 61, 64, 66 |  |  |  |
| 68 | 6.10 | **Совещание** | 130d | 2025-02-07 05:00 | 2025-08-15 06:00 |  |  | 0d |  |
| 69 |  | Совещание 1 | 1h | 2025-02-07 05:00 | 2025-02-07 06:00 |  |  |  | start no earlier than 2025-02-07 05:00 |
| 70 |  | Совещание 2 | 1h | 2025-02-14 05:00 | 2025-02-14 06:00 |  |  |  | start no earlier than 2025-02-14 05:00 |

| ID | Task | Duration | Start | Finish | Predecessors | Constraint |
| --- | --- | --- | --- | --- | --- | --- |
| 71 | Совещание 3 | 1h | 2025-02-21 05:00 | 2025-02-21 06:00 |  | start no earlier than 2025-02-21 05:00 |
| 72 | Совещание 4 | 1h | 2025-02-28 05:00 | 2025-02-28 06:00 |  | start no earlier than 2025-02-28 05:00 |
| 73 | Совещание 5 | 1h | 2025-03-07 05:00 | 2025-03-07 06:00 |  | start no earlier than 2025-03-07 05:00 |
| 74 | Совещание 6 | 1h | 2025-03-14 05:00 | 2025-03-14 06:00 |  | start no earlier than 2025-03-14 05:00 |
| 75 | Совещание 7 | 1h | 2025-03-21 05:00 | 2025-03-21 06:00 |  | start no earlier than 2025-03-21 05:00 |
| 76 | Совещание 8 | 1h | 2025-03-28 05:00 | 2025-03-28 06:00 |  | start no earlier than 2025-03-28 05:00 |
| 77 | Совещание 9 | 1h | 2025-04-04 05:00 | 2025-04-04 06:00 |  | start no earlier than 2025-04-04 05:00 |
| 78 | Совещание 10 | 1h | 2025-04-11 05:00 | 2025-04-11 06:00 |  | start no earlier than 2025-04-11 05:00 |
| 79 | Совещание 11 | 1h | 2025-04-18 05:00 | 2025-04-18 06:00 |  | start no earlier than 2025-04-18 05:00 |
| 80 | Совещание 12 | 1h | 2025-04-25 05:00 | 2025-04-25 06:00 |  | start no earlier than 2025-04-25 05:00 |
| 81 | Совещание 13 | 1h | 2025-05-02 05:00 | 2025-05-02 06:00 |  | start no earlier than 2025-05-02 05:00 |
| 82 | Совещание 14 | 1h | 2025-05-09 05:00 | 2025-05-09 06:00 |  | start no earlier than 2025-05-09 05:00 |
| 83 | Совещание 15 | 1h | 2025-05-16 05:00 | 2025-05-16 06:00 |  | start no earlier than 2025-05-16 05:00 |
| 84 | Совещание 16 | 1h | 2025-05-23 05:00 | 2025-05-23 06:00 |  | start no earlier than 2025-05-23 05:00 |
| 85 | Совещание 17 | 1h | 2025-05-30 05:00 | 2025-05-30 06:00 |  | start no earlier than 2025-05-30 05:00 |
| 86 | Совещание 18 | 1h | 2025-06-06 05:00 | 2025-06-06 06:00 |  | start no earlier than 2025-06-06 05:00 |
| 87 | Совещание 19 | 1h | 2025-06-13 05:00 | 2025-06-13 06:00 |  | start no earlier than 2025-06-13 05:00 |
| 88 | Совещание 20 | 1h | 2025-06-20 05:00 | 2025-06-20 06:00 |  | start no earlier than 2025-06-20 05:00 |
| 89 | Совещание 21 | 1h | 2025-06-27 05:00 | 2025-06-27 06:00 |  | start no earlier than 2025-06-27 05:00 |
| 90 | Совещание 22 | 1h | 2025-07-04 05:00 | 2025-07-04 06:00 |  | start no earlier than 2025-07-04 05:00 |
| 91 | Совещание 23 | 1h | 2025-07-11 05:00 | 2025-07-11 06:00 |  | start no earlier than 2025-07-11 05:00 |
| 92 | Совещание 24 | 1h | 2025-07-18 05:00 | 2025-07-18 06:00 |  | start no earlier than 2025-07-18 05:00 |
| 93 | Совещание 25 | 1h | 2025-07-25 05:00 | 2025-07-25 06:00 |  | start no earlier than 2025-07-25 05:00 |
| 94 | Совещание 26 | 1h | 2025-08-01 05:00 | 2025-08-01 06:00 |  | start no earlier than 2025-08-01 05:00 |
| 95 | Совещание 27 | 1h | 2025-08-08 05:00 | 2025-08-08 06:00 |  | start no earlier than 2025-08-08 05:00 |
| 96 | Совещание 28 | 1h | 2025-08-15 05:00 | 2025-08-15 06:00 |  | start no earlier than 2025-08-15 05:00 |
| 97 | Закрытие проекта и архивирование | 2d | 2025-08-14 14:00 | 2025-08-18 13:00 | 67 |  |

## Version 2 (data date 2027-04-01, saved 2026-11-10)

Note of the change: Shisterin: shift project to 2027, update docx and refreshed screenshots (39,41,43-46)

Last finish 2025-08-18 → 2027-08-17 (+729d).

Changed:

| ID | Task | Start | Finish | Duration | Other |
| --- | --- | --- | --- | --- | --- |
| 1 | **Этап 1. Инициализация проекта и анализ требований** | 2025-02-03 05:00 A → 2027-02-03 09:00 A (+730d) | 2025-02-21 14:00 A → 2027-02-23 13:00 A (+732d) |  | baseline start 2025-02-03 05:00 → 2027-02-03 09:00; baseline finish 2025-02-21 14:00 → 2027-02-23 13:00 |
| 2 | Утверждение концепции и устав проекта | 2025-02-03 05:00 A → 2027-02-03 09:00 A (+730d) | 2025-02-05 13:00 A → 2027-02-05 18:00 A (+730d) |  | baseline start 2025-02-03 05:00 → 2027-02-03 09:00; baseline finish 2025-02-05 13:00 → 2027-02-05 18:00 |
| 3 | Анализ бизнес-процессов интернет-банка | 2025-02-05 14:00 A → 2027-02-05 14:00 A (+730d) | 2025-02-12 13:00 A → 2027-02-12 13:00 A (+730d) |  | baseline start 2025-02-05 14:00 → 2027-02-05 14:00; baseline finish 2025-02-12 13:00 → 2027-02-12 13:00 |
| 4 | Сбор и систематизация требований заказчика | 2025-02-10 14:00 A → 2027-02-10 14:00 A (+730d) | 2025-02-18 13:00 A → 2027-02-18 13:00 A (+730d) |  | baseline start 2025-02-10 14:00 → 2027-02-10 14:00; baseline finish 2025-02-18 13:00 → 2027-02-18 13:00 |
| 5 | Изучение нормативных требований (152-ФЗ, ГОСТ Р 56920) | 2025-02-12 14:00 A → 2027-02-12 14:00 A (+730d) | 2025-02-18 13:00 A → 2027-02-18 13:00 A (+730d) |  | baseline start 2025-02-12 14:00 → 2027-02-12 14:00; baseline finish 2025-02-18 13:00 → 2027-02-18 13:00 |
| 6 | Анализ конкурентных мобильных банков | 2025-02-12 14:00 A → 2027-02-12 14:00 A (+730d) | 2025-02-18 13:00 A → 2027-02-18 13:00 A (+730d) |  | baseline start 2025-02-12 14:00 → 2027-02-12 14:00; baseline finish 2025-02-18 13:00 → 2027-02-18 13:00 |
| 7 | Формирование бэклога и критериев приёмки | 2025-02-18 14:00 A → 2027-02-18 14:00 A (+730d) | 2025-02-21 13:00 A → 2027-02-23 13:00 A (+732d) |  | baseline start 2025-02-18 14:00 → 2027-02-18 14:00; baseline finish 2025-02-21 13:00 → 2027-02-23 13:00 |
| 8 | Создание репозитория и настройка CI/CD-конвейера | 2025-02-05 09:00 A → 2027-02-05 09:00 A (+730d) | 2025-02-07 18:00 A → 2027-02-09 18:00 A (+732d) |  | baseline start 2025-02-05 09:00 → 2027-02-05 09:00; baseline finish 2025-02-07 18:00 → 2027-02-09 18:00 |
| 9 | Развёртывание тестового стенда и средств автоматизации | 2025-02-10 09:00 A → 2027-02-10 09:00 A (+730d) | 2025-02-14 18:00 A → 2027-02-16 18:00 A (+732d) |  | baseline start 2025-02-10 09:00 → 2027-02-10 09:00; baseline finish 2025-02-14 18:00 → 2027-02-16 18:00 |
| 10 | Веха 1. Согласование требований и плана проекта | 2025-02-21 14:00 A → 2027-02-22 09:00 A (+731d) | 2025-02-21 14:00 A → 2027-02-22 09:00 A (+731d) |  | baseline start 2025-02-21 14:00 → 2027-02-22 09:00; baseline finish 2025-02-21 14:00 → 2027-02-22 09:00 |
| 11 | **Этап 2. Проектирование мобильного приложения** | 2025-02-21 14:00 A → 2027-02-22 09:00 A (+731d) | 2025-03-24 14:00 A → 2027-03-24 14:00 A (+730d) | 21d → 22.5d | baseline start 2025-02-21 14:00 → 2027-02-22 09:00; baseline finish 2025-03-24 14:00 → 2027-03-24 14:00 |
| 12 | Разработка целевой архитектуры мобильного приложения | 2025-02-21 14:00 A → 2027-02-22 09:00 A (+731d) | 2025-03-03 13:00 A → 2027-03-01 18:00 A (+728d) |  | baseline start 2025-02-21 14:00 → 2027-02-22 09:00; baseline finish 2025-03-03 13:00 → 2027-03-01 18:00 |
| 13 | Проектирование UX/UI мобильного интерфейса | 2025-02-21 14:00 A → 2027-02-22 09:00 A (+731d) | 2025-03-05 13:00 A → 2027-03-03 18:00 A (+728d) |  | baseline start 2025-02-21 14:00 → 2027-02-22 09:00; baseline finish 2025-03-05 13:00 → 2027-03-03 18:00 |
| 14 | Проектирование интеграционного слоя с API банка | 2025-03-03 14:00 A → 2027-03-03 14:00 A (+730d) | 2025-03-11 13:00 A → 2027-03-11 13:00 A (+730d) |  | baseline start 2025-03-03 14:00 → 2027-03-03 14:00; baseline finish 2025-03-11 13:00 → 2027-03-11 13:00 |
| 15 | Проектирование схемы БД офлайн-кэша | 2025-03-04 14:00 A → 2027-03-04 14:00 A (+730d) | 2025-03-11 13:00 A → 2027-03-11 13:00 A (+730d) |  | baseline start 2025-03-04 14:00 → 2027-03-04 14:00; baseline finish 2025-03-11 13:00 → 2027-03-11 13:00 |
| 16 | Проектирование модели безопасности и аутентификации | 2025-03-03 14:00 A → 2027-03-03 14:00 A (+730d) | 2025-03-10 13:00 A → 2027-03-10 13:00 A (+730d) |  | baseline start 2025-03-03 14:00 → 2027-03-03 14:00; baseline finish 2025-03-10 13:00 → 2027-03-10 13:00 |
| 17 | Разработка технического задания и API-контрактов | 2025-03-11 14:00 A → 2027-03-11 14:00 A (+730d) | 2025-03-19 13:00 A → 2027-03-19 13:00 A (+730d) |  | baseline start 2025-03-11 14:00 → 2027-03-11 14:00; baseline finish 2025-03-19 13:00 → 2027-03-19 13:00 |
| 18 | Разработка дизайн-макетов ключевых экранов | 2025-03-05 14:00 A → 2027-03-05 14:00 A (+730d) | 2025-03-13 13:00 A → 2027-03-15 13:00 A (+732d) |  | baseline start 2025-03-05 14:00 → 2027-03-05 14:00; baseline finish 2025-03-13 13:00 → 2027-03-15 13:00 |
| 19 | Согласование дизайн-макетов с заказчиком | 2025-03-13 14:00 A → 2027-03-15 09:00 A (+732d) | 2025-03-19 13:00 A → 2027-03-18 18:00 A (+729d) |  | baseline start 2025-03-13 14:00 → 2027-03-15 09:00; baseline finish 2025-03-19 13:00 → 2027-03-18 18:00 |
| 20 | Рецензирование архитектурных решений | 2025-03-19 14:00 A → 2027-03-19 14:00 A (+730d) | 2025-03-24 13:00 A → 2027-03-24 13:00 A (+730d) |  | baseline start 2025-03-19 14:00 → 2027-03-19 14:00; baseline finish 2025-03-24 13:00 → 2027-03-24 13:00 |
| 21 | Веха 2. Архитектура мобильного приложения согласована | 2025-03-24 14:00 A → 2027-03-24 14:00 A (+730d) | 2025-03-24 14:00 A → 2027-03-24 14:00 A (+730d) |  | baseline start 2025-03-24 14:00 → 2027-03-24 14:00; baseline finish 2025-03-24 14:00 → 2027-03-24 14:00 |
| 22 | **Этап 3. Разработка функционального ядра** | 2025-03-24 14:00 A → 2027-03-24 14:00 A (+730d) | 2025-05-13 13:00 → 2027-05-07 14:00 (+724d) |  | baseline start 2025-03-24 14:00 → 2027-03-24 14:00; baseline finish 2025-05-13 13:00 → 2027-05-07 14:00 |
| 23 | Разработка каркаса приложения и навигации | 2025-03-24 14:00 A → 2027-03-24 14:00 A (+730d) | 2025-04-03 13:00 → 2027-04-05 13:00 (+732d) |  | baseline start 2025-03-24 14:00 → 2027-03-24 14:00; baseline finish 2025-04-03 13:00 → 2027-04-05 13:00 |
| 24 | Реализация экрана аутентификации (PIN, биометрия) | 2025-04-03 14:00 A → 2027-04-05 09:00 A (+732d) | 2025-04-11 13:00 → 2027-04-12 18:00 (+731d) |  | baseline start 2025-04-03 14:00 → 2027-04-05 09:00; baseline finish 2025-04-11 13:00 → 2027-04-12 18:00 |
| 25 | Реализация главного экрана и списка операций | 2025-04-03 14:00 A → 2027-04-05 09:00 A (+732d) | 2025-04-11 13:00 → 2027-04-12 18:00 (+731d) |  | baseline start 2025-04-03 14:00 → 2027-04-05 09:00; baseline finish 2025-04-11 13:00 → 2027-04-12 18:00 |
| 26 | Реализация экрана платежей и переводов | 2025-04-11 14:00 → 2027-04-12 09:00 (+731d) | 2025-04-25 13:00 → 2027-04-23 18:00 (+728d) |  | constraint must start on 2025-04-11 14:00 → must start on 2027-04-12 09:00; baseline start 2025-04-11 14:00 → 2027-04-12 09:00; baseline finish 2025-04-25 13:00 → 2027-04-23 18:00 |
| 27 | Реализация чатов с поддержкой банка | 2025-04-11 14:00 → 2027-04-12 09:00 (+731d) | 2025-04-21 13:00 → 2027-04-19 18:00 (+728d) |  | baseline start 2025-04-11 14:00 → 2027-04-12 09:00; baseline finish 2025-04-21 13:00 → 2027-04-19 18:00 |
| 28 | Реализация витрины продуктов и вкладов | 2025-04-11 14:00 → 2027-04-12 09:00 (+731d) | 2025-04-18 13:00 → 2027-04-16 18:00 (+728d) |  | baseline start 2025-04-11 14:00 → 2027-04-12 09:00; baseline finish 2025-04-18 13:00 → 2027-04-16 18:00 |
| 29 | Разработка офлайн-режима и механизма синхронизации | 2025-04-25 14:00 → 2027-04-26 09:00 (+731d) | 2025-05-13 13:00 → 2027-05-05 18:00 (+722d) |  | baseline start 2025-04-25 14:00 → 2027-04-26 09:00; baseline finish 2025-05-13 13:00 → 2027-05-05 18:00 |
| 30 | Интеграция с push-уведомлениями | 2025-04-03 14:00 A → 2027-04-05 09:00 A (+732d) | 2025-04-09 13:00 → 2027-04-08 18:00 (+729d) |  | baseline start 2025-04-03 14:00 → 2027-04-05 09:00; baseline finish 2025-04-09 13:00 → 2027-04-08 18:00 |
| 31 | Реализация модуля аналитики и персонализации | 2025-04-11 14:00 → 2027-04-12 09:00 (+731d) | 2025-04-21 13:00 → 2027-04-19 18:00 (+728d) |  | baseline start 2025-04-11 14:00 → 2027-04-12 09:00; baseline finish 2025-04-21 13:00 → 2027-04-19 18:00 |
| 32 | Реализация офлайн-кэша на стороне клиента | 2025-04-03 14:00 A → 2027-04-05 09:00 A (+732d) | 2025-04-11 13:00 → 2027-04-12 18:00 (+731d) |  | baseline start 2025-04-03 14:00 → 2027-04-05 09:00; baseline finish 2025-04-11 13:00 → 2027-04-12 18:00 |
| 33 | Реализация аналитических дашбордов | 2025-04-21 14:00 → 2027-04-21 14:00 (+730d) | 2025-04-28 13:00 → 2027-04-28 13:00 (+730d) |  | baseline start 2025-04-21 14:00 → 2027-04-21 14:00; baseline finish 2025-04-28 13:00 → 2027-04-28 13:00 |
| 34 | Написание unit-тестов (целевое покрытие 80%) | 2025-04-25 14:00 → 2027-04-26 09:00 (+731d) | 2025-05-12 13:00 → 2027-05-04 18:00 (+722d) |  | constraint start no earlier than 2025-04-25 14:00 → start no earlier than 2027-04-26 09:00; baseline start 2025-04-25 14:00 → 2027-04-26 09:00; baseline finish 2025-05-12 13:00 → 2027-05-04 18:00 |
| 35 | Нагрузочное тестирование API банка | 2025-04-30 14:00 → 2027-04-30 14:00 (+730d) | 2025-05-12 13:00 → 2027-05-07 13:00 (+725d) |  | baseline start 2025-04-30 14:00 → 2027-04-30 14:00; baseline finish 2025-05-12 13:00 → 2027-05-07 13:00 |
| 36 | Веха 3. Функциональное ядро разработано | 2025-05-07 14:00 → 2027-05-07 14:00 (+730d) | 2025-05-07 14:00 → 2027-05-07 14:00 (+730d) |  | baseline start 2025-05-07 14:00 → 2027-05-07 14:00; baseline finish 2025-05-07 14:00 → 2027-05-07 14:00 |
| 37 | **Этап 4. Интеграция с банковскими сервисами** | 2025-05-07 14:00 → 2027-05-07 14:00 (+730d) | 2025-06-17 13:00 → 2027-06-16 14:00 (+729d) | 26.5d → 28d | baseline start 2025-05-07 14:00 → 2027-05-07 14:00; baseline finish 2025-06-17 13:00 → 2027-06-16 14:00 |
| 38 | Разработка клиента REST API интернет-банка | 2025-05-07 14:00 → 2027-05-07 14:00 (+730d) | 2025-05-20 13:00 → 2027-05-19 13:00 (+729d) |  | baseline start 2025-05-07 14:00 → 2027-05-07 14:00; baseline finish 2025-05-20 13:00 → 2027-05-19 13:00 |
| 39 | Интеграция с платёжным шлюзом | 2025-05-19 14:00 → 2027-05-19 14:00 (+730d) | 2025-05-28 13:00 → 2027-05-28 13:00 (+730d) |  | baseline start 2025-05-19 14:00 → 2027-05-19 14:00; baseline finish 2025-05-28 13:00 → 2027-05-28 13:00 |
| 40 | Интеграция с системой биометрической аутентификации | 2025-05-19 14:00 → 2027-05-19 14:00 (+730d) | 2025-05-26 13:00 → 2027-05-26 13:00 (+730d) |  | baseline start 2025-05-19 14:00 → 2027-05-19 14:00; baseline finish 2025-05-26 13:00 → 2027-05-26 13:00 |
| 41 | Интеграция с push-сервисом банка | 2025-05-19 14:00 → 2027-05-19 14:00 (+730d) | 2025-05-23 13:00 → 2027-05-25 13:00 (+732d) |  | baseline start 2025-05-19 14:00 → 2027-05-19 14:00; baseline finish 2025-05-23 13:00 → 2027-05-25 13:00 |
| 42 | Интеграция с CRM и системой чатов | 2025-05-19 14:00 → 2027-05-19 14:00 (+730d) | 2025-05-27 13:00 → 2027-05-27 13:00 (+730d) |  | baseline start 2025-05-19 14:00 → 2027-05-19 14:00; baseline finish 2025-05-27 13:00 → 2027-05-27 13:00 |
| 43 | Настройка мониторинга и логирования (Sentry) | 2025-05-19 14:00 → 2027-05-19 14:00 (+730d) | 2025-05-23 13:00 → 2027-05-25 13:00 (+732d) |  | baseline start 2025-05-23 14:00 → 2027-05-19 14:00; baseline finish 2025-05-29 13:00 → 2027-05-25 13:00 |
| 44 | Проверка соответствия требованиям 152-ФЗ | 2025-05-26 14:00 → 2027-05-26 14:00 (+730d) | 2025-06-02 13:00 → 2027-06-02 13:00 (+730d) |  | baseline start 2025-05-26 14:00 → 2027-05-26 14:00; baseline finish 2025-06-02 13:00 → 2027-06-02 13:00 |
| 45 | Регрессионное тестирование интеграций | 2025-06-02 14:00 → 2027-06-02 14:00 (+730d) | 2025-06-10 13:00 → 2027-06-10 13:00 (+730d) |  | baseline start 2025-06-02 14:00 → 2027-06-02 14:00; baseline finish 2025-06-10 13:00 → 2027-06-10 13:00 |
| 46 | Тестирование отказоустойчивости каналов связи | 2025-06-10 14:00 → 2027-06-10 14:00 (+730d) | 2025-06-17 13:00 → 2027-06-16 13:00 (+729d) |  | baseline start 2025-06-10 14:00 → 2027-06-10 14:00; baseline finish 2025-06-17 13:00 → 2027-06-16 13:00 |
| 47 | Веха 4. Интеграционные работы завершены | 2025-06-16 14:00 → 2027-06-16 14:00 (+730d) | 2025-06-16 14:00 → 2027-06-16 14:00 (+730d) |  | baseline start 2025-06-16 14:00 → 2027-06-16 14:00; baseline finish 2025-06-16 14:00 → 2027-06-16 14:00 |
| 48 | **Этап 5. Тестирование и обеспечение качества** | 2025-05-07 14:00 → 2027-05-07 14:00 (+730d) | 2025-07-16 14:00 → 2027-07-16 14:00 (+730d) | 47.5d → 50d | baseline start 2025-05-07 14:00 → 2027-05-07 14:00; baseline finish 2025-07-16 14:00 → 2027-07-16 14:00 |
| 49 | Разработка тест-плана и тест-кейсов | 2025-05-07 14:00 → 2027-05-07 14:00 (+730d) | 2025-05-15 13:00 → 2027-05-14 13:00 (+729d) |  | baseline start 2025-05-07 14:00 → 2027-05-07 14:00; baseline finish 2025-05-15 13:00 → 2027-05-14 13:00 |
| 50 | Функциональное тестирование | 2025-06-10 14:00 → 2027-06-10 14:00 (+730d) | 2025-06-23 13:00 → 2027-06-22 13:00 (+729d) |  | baseline start 2025-06-10 14:00 → 2027-06-10 14:00; baseline finish 2025-06-23 13:00 → 2027-06-22 13:00 |
| 51 | Тестирование удобства использования (UX) | 2025-06-20 14:00 → 2027-06-21 09:00 (+731d) | 2025-06-26 13:00 → 2027-06-24 18:00 (+728d) |  | baseline start 2025-06-20 14:00 → 2027-06-21 09:00; baseline finish 2025-06-26 13:00 → 2027-06-24 18:00 |
| 52 | Тестирование защищённости (pentest) | 2025-06-20 14:00 → 2027-06-21 09:00 (+731d) | 2025-06-27 13:00 → 2027-06-25 18:00 (+728d) |  | baseline start 2025-06-20 14:00 → 2027-06-21 09:00; baseline finish 2025-06-27 13:00 → 2027-06-25 18:00 |
| 53 | Тестирование совместимости с устройствами и ОС | 2025-06-20 14:00 → 2027-06-21 09:00 (+731d) | 2025-06-27 13:00 → 2027-06-25 18:00 (+728d) |  | baseline start 2025-06-20 14:00 → 2027-06-21 09:00; baseline finish 2025-06-27 13:00 → 2027-06-25 18:00 |
| 54 | Тестирование офлайн-режима при потере связи | 2025-06-20 14:00 → 2027-06-21 09:00 (+731d) | 2025-06-25 13:00 → 2027-06-23 18:00 (+728d) |  | baseline start 2025-06-20 14:00 → 2027-06-21 09:00; baseline finish 2025-06-25 13:00 → 2027-06-23 18:00 |
| 55 | Исправление выявленных дефектов | 2025-06-27 14:00 → 2027-06-28 09:00 (+731d) | 2025-07-11 13:00 → 2027-07-09 18:00 (+728d) |  | constraint finish no later than 2025-07-16 13:00 → finish no later than 2027-07-14 18:00; baseline start 2025-06-27 14:00 → 2027-06-28 09:00; baseline finish 2025-07-11 13:00 → 2027-07-09 18:00 |
| 56 | Подготовка отчёта о тестировании | 2025-07-11 14:00 → 2027-07-12 09:00 (+731d) | 2025-07-16 13:00 → 2027-07-14 18:00 (+728d) |  | baseline start 2025-07-11 14:00 → 2027-07-12 09:00; baseline finish 2025-07-16 13:00 → 2027-07-14 18:00 |
| 57 | Веха 5. Тестирование завершено | 2025-07-16 14:00 → 2027-07-16 14:00 (+730d) | 2025-07-16 14:00 → 2027-07-16 14:00 (+730d) |  | baseline start 2025-07-16 14:00 → 2027-07-16 14:00; baseline finish 2025-07-16 14:00 → 2027-07-16 14:00 |
| 58 | **Этап 6. Подготовка к эксплуатации и выпуск** | 2025-02-07 05:00 → 2027-02-08 09:00 (+731d) | 2025-08-18 13:00 → 2027-08-17 18:00 (+729d) | 131.5d → 137d | baseline start 2025-07-16 14:00 → 2027-02-08 09:00; baseline finish 2025-08-18 13:00 → 2027-08-17 18:00 |
| 59 | Подготовка руководства пользователя | 2025-07-16 14:00 → 2027-07-16 14:00 (+730d) | 2025-07-22 13:00 → 2027-07-22 13:00 (+730d) |  | baseline start 2025-07-16 14:00 → 2027-07-16 14:00; baseline finish 2025-07-22 13:00 → 2027-07-22 13:00 |
| 60 | Обучение сотрудников поддержки | 2025-07-22 14:00 → 2027-07-22 14:00 (+730d) | 2025-07-25 13:00 → 2027-07-27 13:00 (+732d) |  | baseline start 2025-07-22 14:00 → 2027-07-22 14:00; baseline finish 2025-07-25 13:00 → 2027-07-27 13:00 |
| 61 | Настройка мониторинга продуктивной среды | 2025-07-16 14:00 → 2027-07-16 14:00 (+730d) | 2025-07-21 13:00 → 2027-07-21 13:00 (+730d) |  | baseline start 2025-07-23 14:00 → 2027-07-16 14:00; baseline finish 2025-07-28 13:00 → 2027-07-21 13:00 |
| 62 | Публикация в App Store и Google Play | 2025-07-16 14:00 → 2027-07-16 14:00 (+730d) | 2025-07-23 13:00 → 2027-07-23 13:00 (+730d) |  | baseline start 2025-07-16 14:00 → 2027-07-16 14:00; baseline finish 2025-07-23 13:00 → 2027-07-23 13:00 |
| 63 | Проведение приёмочных испытаний с заказчиком | 2025-07-25 14:00 → 2027-07-26 09:00 (+731d) | 2025-07-31 13:00 → 2027-07-29 18:00 (+728d) |  | constraint must finish on 2025-07-31 13:00 → must finish on 2027-08-01 08:00; baseline start 2025-07-25 14:00 → 2027-07-26 09:00; baseline finish 2025-07-31 13:00 → 2027-07-29 18:00 |
| 64 | Передача документации и исходного кода | 2025-07-23 14:00 → 2027-07-23 14:00 (+730d) | 2025-07-28 13:00 → 2027-07-28 13:00 (+730d) |  | baseline start 2025-07-23 14:00 → 2027-07-23 14:00; baseline finish 2025-07-28 13:00 → 2027-07-28 13:00 |
| 65 | Запуск рекламной кампании | 2025-07-31 14:00 → 2027-08-02 09:00 (+732d) | 2025-08-08 13:00 → 2027-08-09 18:00 (+731d) |  | baseline start 2025-07-31 14:00 → 2027-08-02 09:00; baseline finish 2025-08-08 13:00 → 2027-08-09 18:00 |
| 66 | Анализ первых отзывов и корректировка | 2025-08-08 14:00 → 2027-08-09 09:00 (+731d) | 2025-08-14 13:00 → 2027-08-12 18:00 (+728d) |  | baseline start 2025-08-08 14:00 → 2027-08-09 09:00; baseline finish 2025-08-14 13:00 → 2027-08-12 18:00 |
| 67 | Веха 6. Релиз мобильного приложения выполнен | 2025-08-14 14:00 → 2027-08-16 09:00 (+732d) | 2025-08-14 14:00 → 2027-08-16 09:00 (+732d) |  | baseline start 2025-08-14 14:00 → 2027-08-16 09:00; baseline finish 2025-08-14 14:00 → 2027-08-16 09:00 |
| 68 | **Совещание** | 2025-02-07 05:00 → 2027-02-08 09:00 (+731d) | 2025-08-15 06:00 → 2027-08-16 10:00 (+731d) | 130d → 135.12d | baseline start none → 2027-02-08 09:00; baseline finish none → 2027-08-16 10:00 |
| 69 | Совещание 1 | 2025-02-07 05:00 → 2027-02-08 09:00 (+731d) | 2025-02-07 06:00 → 2027-02-08 10:00 (+731d) |  | constraint start no earlier than 2025-02-07 05:00 → start no earlier than 2027-02-08 09:00; baseline start none → 2027-02-08 09:00; baseline finish none → 2027-02-08 10:00 |
| 70 | Совещание 2 | 2025-02-14 05:00 → 2027-02-15 09:00 (+731d) | 2025-02-14 06:00 → 2027-02-15 10:00 (+731d) |  | constraint start no earlier than 2025-02-14 05:00 → start no earlier than 2027-02-15 09:00; baseline start none → 2027-02-15 09:00; baseline finish none → 2027-02-15 10:00 |

| ID | Task | Start | Finish | Other |
| --- | --- | --- | --- | --- |
| 71 | Совещание 3 | 2025-02-21 05:00 → 2027-02-22 09:00 (+731d) | 2025-02-21 06:00 → 2027-02-22 10:00 (+731d) | constraint start no earlier than 2025-02-21 05:00 → start no earlier than 2027-02-22 09:00; baseline start none → 2027-02-22 09:00; baseline finish none → 2027-02-22 10:00 |
| 72 | Совещание 4 | 2025-02-28 05:00 → 2027-03-01 09:00 (+731d) | 2025-02-28 06:00 → 2027-03-01 10:00 (+731d) | constraint start no earlier than 2025-02-28 05:00 → start no earlier than 2027-03-01 09:00; baseline start none → 2027-03-01 09:00; baseline finish none → 2027-03-01 10:00 |
| 73 | Совещание 5 | 2025-03-07 05:00 → 2027-03-08 09:00 (+731d) | 2025-03-07 06:00 → 2027-03-08 10:00 (+731d) | constraint start no earlier than 2025-03-07 05:00 → start no earlier than 2027-03-08 09:00; baseline start none → 2027-03-08 09:00; baseline finish none → 2027-03-08 10:00 |
| 74 | Совещание 6 | 2025-03-14 05:00 → 2027-03-15 09:00 (+731d) | 2025-03-14 06:00 → 2027-03-15 10:00 (+731d) | constraint start no earlier than 2025-03-14 05:00 → start no earlier than 2027-03-15 09:00; baseline start none → 2027-03-15 09:00; baseline finish none → 2027-03-15 10:00 |
| 75 | Совещание 7 | 2025-03-21 05:00 → 2027-03-22 09:00 (+731d) | 2025-03-21 06:00 → 2027-03-22 10:00 (+731d) | constraint start no earlier than 2025-03-21 05:00 → start no earlier than 2027-03-22 09:00; baseline start none → 2027-03-22 09:00; baseline finish none → 2027-03-22 10:00 |
| 76 | Совещание 8 | 2025-03-28 05:00 → 2027-03-29 09:00 (+731d) | 2025-03-28 06:00 → 2027-03-29 10:00 (+731d) | constraint start no earlier than 2025-03-28 05:00 → start no earlier than 2027-03-29 09:00; baseline start none → 2027-03-29 09:00; baseline finish none → 2027-03-29 10:00 |
| 77 | Совещание 9 | 2025-04-04 05:00 → 2027-04-05 09:00 (+731d) | 2025-04-04 06:00 → 2027-04-05 10:00 (+731d) | constraint start no earlier than 2025-04-04 05:00 → start no earlier than 2027-04-05 09:00; baseline start none → 2027-04-05 09:00; baseline finish none → 2027-04-05 10:00 |
| 78 | Совещание 10 | 2025-04-11 05:00 → 2027-04-12 09:00 (+731d) | 2025-04-11 06:00 → 2027-04-12 10:00 (+731d) | constraint start no earlier than 2025-04-11 05:00 → start no earlier than 2027-04-12 09:00; baseline start none → 2027-04-12 09:00; baseline finish none → 2027-04-12 10:00 |
| 79 | Совещание 11 | 2025-04-18 05:00 → 2027-04-19 09:00 (+731d) | 2025-04-18 06:00 → 2027-04-19 10:00 (+731d) | constraint start no earlier than 2025-04-18 05:00 → start no earlier than 2027-04-19 09:00; baseline start none → 2027-04-19 09:00; baseline finish none → 2027-04-19 10:00 |
| 80 | Совещание 12 | 2025-04-25 05:00 → 2027-04-26 09:00 (+731d) | 2025-04-25 06:00 → 2027-04-26 10:00 (+731d) | constraint start no earlier than 2025-04-25 05:00 → start no earlier than 2027-04-26 09:00; baseline start none → 2027-04-26 09:00; baseline finish none → 2027-04-26 10:00 |
| 81 | Совещание 13 | 2025-05-02 05:00 → 2027-05-03 09:00 (+731d) | 2025-05-02 06:00 → 2027-05-03 10:00 (+731d) | constraint start no earlier than 2025-05-02 05:00 → start no earlier than 2027-05-03 09:00; baseline start none → 2027-05-03 09:00; baseline finish none → 2027-05-03 10:00 |
| 82 | Совещание 14 | 2025-05-09 05:00 → 2027-05-10 09:00 (+731d) | 2025-05-09 06:00 → 2027-05-10 10:00 (+731d) | constraint start no earlier than 2025-05-09 05:00 → start no earlier than 2027-05-10 09:00; baseline start none → 2027-05-10 09:00; baseline finish none → 2027-05-10 10:00 |
| 83 | Совещание 15 | 2025-05-16 05:00 → 2027-05-17 09:00 (+731d) | 2025-05-16 06:00 → 2027-05-17 10:00 (+731d) | constraint start no earlier than 2025-05-16 05:00 → start no earlier than 2027-05-17 09:00; baseline start none → 2027-05-17 09:00; baseline finish none → 2027-05-17 10:00 |
| 84 | Совещание 16 | 2025-05-23 05:00 → 2027-05-24 09:00 (+731d) | 2025-05-23 06:00 → 2027-05-24 10:00 (+731d) | constraint start no earlier than 2025-05-23 05:00 → start no earlier than 2027-05-24 09:00; baseline start none → 2027-05-24 09:00; baseline finish none → 2027-05-24 10:00 |
| 85 | Совещание 17 | 2025-05-30 05:00 → 2027-05-31 09:00 (+731d) | 2025-05-30 06:00 → 2027-05-31 10:00 (+731d) | constraint start no earlier than 2025-05-30 05:00 → start no earlier than 2027-05-31 09:00; baseline start none → 2027-05-31 09:00; baseline finish none → 2027-05-31 10:00 |
| 86 | Совещание 18 | 2025-06-06 05:00 → 2027-06-07 09:00 (+731d) | 2025-06-06 06:00 → 2027-06-07 10:00 (+731d) | constraint start no earlier than 2025-06-06 05:00 → start no earlier than 2027-06-07 09:00; baseline start none → 2027-06-07 09:00; baseline finish none → 2027-06-07 10:00 |
| 87 | Совещание 19 | 2025-06-13 05:00 → 2027-06-14 09:00 (+731d) | 2025-06-13 06:00 → 2027-06-14 10:00 (+731d) | constraint start no earlier than 2025-06-13 05:00 → start no earlier than 2027-06-14 09:00; baseline start none → 2027-06-14 09:00; baseline finish none → 2027-06-14 10:00 |
| 88 | Совещание 20 | 2025-06-20 05:00 → 2027-06-21 09:00 (+731d) | 2025-06-20 06:00 → 2027-06-21 10:00 (+731d) | constraint start no earlier than 2025-06-20 05:00 → start no earlier than 2027-06-21 09:00; baseline start none → 2027-06-21 09:00; baseline finish none → 2027-06-21 10:00 |
| 89 | Совещание 21 | 2025-06-27 05:00 → 2027-06-28 09:00 (+731d) | 2025-06-27 06:00 → 2027-06-28 10:00 (+731d) | constraint start no earlier than 2025-06-27 05:00 → start no earlier than 2027-06-28 09:00; baseline start none → 2027-06-28 09:00; baseline finish none → 2027-06-28 10:00 |
| 90 | Совещание 22 | 2025-07-04 05:00 → 2027-07-05 09:00 (+731d) | 2025-07-04 06:00 → 2027-07-05 10:00 (+731d) | constraint start no earlier than 2025-07-04 05:00 → start no earlier than 2027-07-05 09:00; baseline start none → 2027-07-05 09:00; baseline finish none → 2027-07-05 10:00 |
| 91 | Совещание 23 | 2025-07-11 05:00 → 2027-07-12 09:00 (+731d) | 2025-07-11 06:00 → 2027-07-12 10:00 (+731d) | constraint start no earlier than 2025-07-11 05:00 → start no earlier than 2027-07-12 09:00; baseline start none → 2027-07-12 09:00; baseline finish none → 2027-07-12 10:00 |
| 92 | Совещание 24 | 2025-07-18 05:00 → 2027-07-19 09:00 (+731d) | 2025-07-18 06:00 → 2027-07-19 10:00 (+731d) | constraint start no earlier than 2025-07-18 05:00 → start no earlier than 2027-07-19 09:00; baseline start none → 2027-07-19 09:00; baseline finish none → 2027-07-19 10:00 |
| 93 | Совещание 25 | 2025-07-25 05:00 → 2027-07-26 09:00 (+731d) | 2025-07-25 06:00 → 2027-07-26 10:00 (+731d) | constraint start no earlier than 2025-07-25 05:00 → start no earlier than 2027-07-26 09:00; baseline start none → 2027-07-26 09:00; baseline finish none → 2027-07-26 10:00 |
| 94 | Совещание 26 | 2025-08-01 05:00 → 2027-08-02 09:00 (+731d) | 2025-08-01 06:00 → 2027-08-02 10:00 (+731d) | constraint start no earlier than 2025-08-01 05:00 → start no earlier than 2027-08-02 09:00; baseline start none → 2027-08-02 09:00; baseline finish none → 2027-08-02 10:00 |
| 95 | Совещание 27 | 2025-08-08 05:00 → 2027-08-09 09:00 (+731d) | 2025-08-08 06:00 → 2027-08-09 10:00 (+731d) | constraint start no earlier than 2025-08-08 05:00 → start no earlier than 2027-08-09 09:00; baseline start none → 2027-08-09 09:00; baseline finish none → 2027-08-09 10:00 |
| 96 | Совещание 28 | 2025-08-15 05:00 → 2027-08-16 09:00 (+731d) | 2025-08-15 06:00 → 2027-08-16 10:00 (+731d) | constraint start no earlier than 2025-08-15 05:00 → start no earlier than 2027-08-16 09:00; baseline start none → 2027-08-16 09:00; baseline finish none → 2027-08-16 10:00 |
| 97 | Закрытие проекта и архивирование | 2025-08-14 14:00 → 2027-08-16 09:00 (+732d) | 2025-08-18 13:00 → 2027-08-17 18:00 (+729d) | baseline start 2025-08-14 14:00 → 2027-08-16 09:00; baseline finish 2025-08-18 13:00 → 2027-08-17 18:00 |

## Version 3 (data date 2027-04-01, saved 2026-11-18)

Note of the change: Reset project completion to 0% (Shisterin)

Last finish stays 2027-08-17. Complete tasks 19 → 0.

Changed:

| ID | Task | Start | Finish | Duration | Complete | Total float | Other |
| --- | --- | --- | --- | --- | --- | --- | --- |
| 1 | **Этап 1. Инициализация проекта и анализ требований** | 2027-02-03 09:00 A → 2027-02-03 09:00 | 2027-02-23 13:00 A → 2027-02-23 18:00 | 14.5d → 15d | 100% → 0% | none → -2d |  |
| 2 | Утверждение концепции и устав проекта | 2027-02-03 09:00 A → 2027-02-03 09:00 | 2027-02-05 18:00 A → 2027-02-05 18:00 |  | 100% → 0% | none → -2d |  |
| 3 | Анализ бизнес-процессов интернет-банка | 2027-02-05 14:00 A → 2027-02-08 09:00 (+3d) | 2027-02-12 13:00 A → 2027-02-12 18:00 |  | 100% → 0% | none → -2d |  |
| 4 | Сбор и систематизация требований заказчика | 2027-02-10 14:00 A → 2027-02-08 09:00 (-2d) | 2027-02-18 13:00 A → 2027-02-15 18:00 (-3d) |  | 100% → 0% | none → 1d |  |
| 5 | Изучение нормативных требований (152-ФЗ, ГОСТ Р 56920) | 2027-02-12 14:00 A → 2027-02-15 09:00 (+3d) | 2027-02-18 13:00 A → 2027-02-18 18:00 |  | 100% → 0% | none → -2d |  |
| 6 | Анализ конкурентных мобильных банков | 2027-02-12 14:00 A → 2027-02-15 09:00 (+3d) | 2027-02-18 13:00 A → 2027-02-18 18:00 |  | 100% → 0% | none → -2d |  |
| 7 | Формирование бэклога и критериев приёмки | 2027-02-18 14:00 A → 2027-02-19 09:00 (+1d) | 2027-02-23 13:00 A → 2027-02-23 18:00 |  | 100% → 0% | none → -2d |  |
| 8 | Создание репозитория и настройка CI/CD-конвейера | 2027-02-05 09:00 A → 2027-02-05 09:00 | 2027-02-09 18:00 A → 2027-02-09 18:00 |  | 100% → 0% | none → 3d |  |
| 9 | Развёртывание тестового стенда и средств автоматизации | 2027-02-10 09:00 A → 2027-02-10 09:00 | 2027-02-16 18:00 A → 2027-02-16 18:00 |  | 100% → 0% | none → 3d |  |
| 10 | Веха 1. Согласование требований и плана проекта | 2027-02-22 09:00 A → 2027-02-23 18:00 (+1d) | 2027-02-22 09:00 A → 2027-02-23 18:00 (+1d) |  | 100% → 0% | none → -2d |  |
| 11 | **Этап 2. Проектирование мобильного приложения** | 2027-02-22 09:00 A → 2027-02-24 09:00 (+2d) | 2027-03-24 14:00 A → 2027-03-24 18:00 | 22.5d → 21d | 100% → 0% | none → -2d |  |
| 12 | Разработка целевой архитектуры мобильного приложения | 2027-02-22 09:00 A → 2027-02-24 09:00 (+2d) | 2027-03-01 18:00 A → 2027-03-03 18:00 (+2d) |  | 100% → 0% | none → -2d |  |
| 13 | Проектирование UX/UI мобильного интерфейса | 2027-02-22 09:00 A → 2027-02-24 09:00 (+2d) | 2027-03-03 18:00 A → 2027-03-05 18:00 (+2d) |  | 100% → 0% | none → 1d |  |
| 14 | Проектирование интеграционного слоя с API банка | 2027-03-03 14:00 A → 2027-03-04 09:00 (+1d) | 2027-03-11 13:00 A → 2027-03-11 18:00 |  | 100% → 0% | none → -2d |  |
| 15 | Проектирование схемы БД офлайн-кэша | 2027-03-04 14:00 A → 2027-03-04 09:00 | 2027-03-11 13:00 A → 2027-03-10 18:00 (-1d) |  | 100% → 0% | none → -1d |  |
| 16 | Проектирование модели безопасности и аутентификации | 2027-03-03 14:00 A → 2027-03-04 09:00 (+1d) | 2027-03-10 13:00 A → 2027-03-10 18:00 |  | 100% → 0% | none → -1d |  |
| 17 | Разработка технического задания и API-контрактов | 2027-03-11 14:00 A → 2027-03-12 09:00 (+1d) | 2027-03-19 13:00 A → 2027-03-19 18:00 |  | 100% → 0% | none → -2d |  |
| 18 | Разработка дизайн-макетов ключевых экранов | 2027-03-05 14:00 A → 2027-03-08 09:00 (+3d) | 2027-03-15 13:00 A → 2027-03-15 18:00 |  | 100% → 0% | none → 1d |  |
| 19 | Согласование дизайн-макетов с заказчиком | 2027-03-15 09:00 A → 2027-03-16 09:00 (+1d) | 2027-03-18 18:00 A → 2027-03-19 18:00 (+1d) |  | 100% → 0% | none → 1d |  |
| 20 | Рецензирование архитектурных решений | 2027-03-19 14:00 A → 2027-03-22 09:00 (+3d) | 2027-03-24 13:00 A → 2027-03-24 18:00 |  | 100% → 0% | none → -2d |  |
| 21 | Веха 2. Архитектура мобильного приложения согласована | 2027-03-24 14:00 A → 2027-03-24 18:00 | 2027-03-24 14:00 A → 2027-03-24 18:00 |  | 100% → 0% | none → -2d |  |
| 22 | **Этап 3. Разработка функционального ядра** | 2027-03-24 14:00 A → 2027-03-25 09:00 (+1d) | 2027-05-07 14:00 → 2027-05-05 18:00 (-2d) | 32d → 30d | 14% → 0% | 0d → -2d |  |
| 23 | Разработка каркаса приложения и навигации | 2027-03-24 14:00 A → 2027-03-25 09:00 (+1d) | 2027-04-05 13:00 → 2027-04-05 18:00 |  | 80% → 0% | none → -2d |  |
| 24 | Реализация экрана аутентификации (PIN, биометрия) | 2027-04-05 09:00 A → 2027-04-06 09:00 (+1d) | 2027-04-12 18:00 → 2027-04-13 18:00 (+1d) |  | 21% → 0% | none → -2d |  |
| 25 | Реализация главного экрана и списка операций | 2027-04-05 09:00 A → 2027-04-06 09:00 (+1d) | 2027-04-12 18:00 → 2027-04-13 18:00 (+1d) |  | 21% → 0% | none → -2d |  |
| 27 | Реализация чатов с поддержкой банка | 2027-04-12 09:00 → 2027-04-14 09:00 (+2d) | 2027-04-19 18:00 → 2027-04-21 18:00 (+2d) |  |  | none → 3d |  |
| 28 | Реализация витрины продуктов и вкладов | 2027-04-12 09:00 → 2027-04-14 09:00 (+2d) | 2027-04-16 18:00 → 2027-04-20 18:00 (+4d) |  |  | none → 4d |  |
| 30 | Интеграция с push-уведомлениями | 2027-04-05 09:00 A → 2027-04-06 09:00 (+1d) | 2027-04-08 18:00 → 2027-04-09 18:00 (+1d) |  | 32% → 0% | none → 19d |  |
| 31 | Реализация модуля аналитики и персонализации | 2027-04-12 09:00 → 2027-04-14 09:00 (+2d) | 2027-04-19 18:00 → 2027-04-21 18:00 (+2d) |  |  | none → 6d |  |
| 32 | Реализация офлайн-кэша на стороне клиента | 2027-04-05 09:00 A → 2027-04-06 09:00 (+1d) | 2027-04-12 18:00 → 2027-04-13 18:00 (+1d) |  | 21% → 0% | none → 9d |  |
| 33 | Реализация аналитических дашбордов | 2027-04-21 14:00 → 2027-04-22 09:00 (+1d) | 2027-04-28 13:00 → 2027-04-28 18:00 |  |  | none → 6d |  |
| 35 | Нагрузочное тестирование API банка | 2027-04-30 14:00 → 2027-04-29 09:00 (-1d) | 2027-05-07 13:00 → 2027-05-05 18:00 (-2d) |  |  | none → 1d |  |
| 36 | Веха 3. Функциональное ядро разработано | 2027-05-07 14:00 → 2027-05-05 18:00 (-2d) | 2027-05-07 14:00 → 2027-05-05 18:00 (-2d) |  |  | none → 1d |  |
| 37 | **Этап 4. Интеграция с банковскими сервисами** | 2027-05-07 14:00 → 2027-05-06 09:00 (-1d) | 2027-06-16 14:00 → 2027-06-14 18:00 (-2d) |  |  | 0d → 1d |  |
| 38 | Разработка клиента REST API интернет-банка | 2027-05-07 14:00 → 2027-05-06 09:00 (-1d) | 2027-05-19 13:00 → 2027-05-17 18:00 (-2d) |  |  | none → 1d |  |
| 39 | Интеграция с платёжным шлюзом | 2027-05-19 14:00 → 2027-05-18 09:00 (-1d) | 2027-05-28 13:00 → 2027-05-26 18:00 (-2d) |  |  | none → 4d |  |
| 40 | Интеграция с системой биометрической аутентификации | 2027-05-19 14:00 → 2027-05-18 09:00 (-1d) | 2027-05-26 13:00 → 2027-05-24 18:00 (-2d) |  |  | none → 1d |  |
| 41 | Интеграция с push-сервисом банка | 2027-05-19 14:00 → 2027-05-18 09:00 (-1d) | 2027-05-25 13:00 → 2027-05-21 18:00 (-4d) |  |  | none → 7d |  |
| 42 | Интеграция с CRM и системой чатов | 2027-05-19 14:00 → 2027-05-18 09:00 (-1d) | 2027-05-27 13:00 → 2027-05-25 18:00 (-2d) |  |  | none → 5d |  |
| 43 | Настройка мониторинга и логирования (Sentry) | 2027-05-19 14:00 → 2027-05-18 09:00 (-1d) | 2027-05-25 13:00 → 2027-05-21 18:00 (-4d) |  |  | none → 7d |  |
| 44 | Проверка соответствия требованиям 152-ФЗ | 2027-05-26 14:00 → 2027-05-25 09:00 (-1d) | 2027-06-02 13:00 → 2027-05-31 18:00 (-2d) |  |  | none → 1d |  |
| 45 | Регрессионное тестирование интеграций | 2027-06-02 14:00 → 2027-06-01 09:00 (-1d) | 2027-06-10 13:00 → 2027-06-08 18:00 (-2d) |  |  | none → 1d |  |
| 46 | Тестирование отказоустойчивости каналов связи | 2027-06-10 14:00 → 2027-06-09 09:00 (-1d) | 2027-06-16 13:00 → 2027-06-14 18:00 (-2d) |  |  | none → 46d |  |
| 47 | Веха 4. Интеграционные работы завершены | 2027-06-16 14:00 → 2027-06-14 18:00 (-2d) | 2027-06-16 14:00 → 2027-06-14 18:00 (-2d) |  |  | none → 46d |  |
| 48 | **Этап 5. Тестирование и обеспечение качества** | 2027-05-07 14:00 → 2027-05-06 09:00 (-1d) | 2027-07-16 14:00 → 2027-07-14 18:00 (-2d) |  |  | 0d → 1d |  |
| 49 | Разработка тест-плана и тест-кейсов | 2027-05-07 14:00 → 2027-05-06 09:00 (-1d) | 2027-05-14 13:00 → 2027-05-12 18:00 (-2d) |  |  | none → 20d |  |
| 50 | Функциональное тестирование | 2027-06-10 14:00 → 2027-06-09 09:00 (-1d) | 2027-06-22 13:00 → 2027-06-18 18:00 (-4d) |  |  | none → 1d |  |
| 57 | Веха 5. Тестирование завершено | 2027-07-16 14:00 → 2027-07-14 18:00 (-2d) | 2027-07-16 14:00 → 2027-07-14 18:00 (-2d) |  |  | none → 1d |  |
| 59 | Подготовка руководства пользователя | 2027-07-16 14:00 → 2027-07-15 09:00 (-1d) | 2027-07-22 13:00 → 2027-07-20 18:00 (-2d) |  |  | none → 1d |  |
| 60 | Обучение сотрудников поддержки | 2027-07-22 14:00 → 2027-07-21 09:00 (-1d) | 2027-07-27 13:00 → 2027-07-23 18:00 (-4d) |  |  | none → 1d |  |
| 61 | Настройка мониторинга продуктивной среды | 2027-07-16 14:00 → 2027-07-15 09:00 (-1d) | 2027-07-21 13:00 → 2027-07-19 18:00 (-2d) |  |  | none → 19d |  |
| 62 | Публикация в App Store и Google Play | 2027-07-16 14:00 → 2027-07-15 09:00 (-1d) | 2027-07-23 13:00 → 2027-07-21 18:00 (-2d) |  |  | none → 13d |  |
| 63 | Проведение приёмочных испытаний с заказчиком | 2027-07-26 09:00 → 2027-07-27 09:00 (+1d) | 2027-07-29 18:00 → 2027-08-01 08:00 (+3d) |  |  | none → 0d |  |
| 64 | Передача документации и исходного кода | 2027-07-23 14:00 → 2027-07-22 09:00 (-1d) | 2027-07-28 13:00 → 2027-07-26 18:00 (-2d) |  |  | none → 14d |  |
| 66 | Анализ первых отзывов и корректировка | 2027-08-09 09:00 → 2027-08-10 09:00 (+1d) | 2027-08-12 18:00 → 2027-08-13 18:00 (+1d) |  |  | none → 0d |  |
| 67 | Веха 6. Релиз мобильного приложения выполнен | 2027-08-16 09:00 → 2027-08-13 18:00 (-3d) | 2027-08-16 09:00 → 2027-08-13 18:00 (-3d) |  |  | none → 0d |  |
| 69 | Совещание 1 |  |  |  |  | none → 136.88d | resources none → Руководитель проекта [50%]; Бизнес-аналитик; Архитектор; Мобильный разработчик; Бэкенд-разработчик; Тестировщик |
| 70 | Совещание 2 |  |  |  |  | none → 131.88d | resources none → Руководитель проекта [50%]; Бизнес-аналитик; Архитектор; Мобильный разработчик; Бэкенд-разработчик; Тестировщик |
| 71 | Совещание 3 |  |  |  |  | none → 126.88d | resources none → Руководитель проекта [50%]; Бизнес-аналитик; Архитектор; Мобильный разработчик; Бэкенд-разработчик; Тестировщик |
| 72 | Совещание 4 |  |  |  |  | none → 121.88d | resources none → Руководитель проекта [50%]; Бизнес-аналитик; Архитектор; Мобильный разработчик; Бэкенд-разработчик; Тестировщик |
| 73 | Совещание 5 |  |  |  |  | none → 116.88d | resources none → Руководитель проекта [50%]; Бизнес-аналитик; Архитектор; Мобильный разработчик; Бэкенд-разработчик; Тестировщик |
| 74 | Совещание 6 |  |  |  |  | none → 111.88d | resources none → Руководитель проекта [50%]; Бизнес-аналитик; Архитектор; Мобильный разработчик; Бэкенд-разработчик; Тестировщик |
| 75 | Совещание 7 |  |  |  |  | none → 106.88d | resources none → Руководитель проекта [50%]; Бизнес-аналитик; Архитектор; Мобильный разработчик; Бэкенд-разработчик; Тестировщик |
| 76 | Совещание 8 |  |  |  |  | none → 101.88d | resources none → Руководитель проекта [50%]; Бизнес-аналитик; Архитектор; Мобильный разработчик; Бэкенд-разработчик; Тестировщик |
| 77 | Совещание 9 |  |  |  |  | none → 96.88d | resources none → Руководитель проекта [50%]; Бизнес-аналитик; Архитектор; Мобильный разработчик; Бэкенд-разработчик; Тестировщик |
| 78 | Совещание 10 |  |  |  |  | none → 91.88d | resources none → Руководитель проекта [50%]; Бизнес-аналитик; Архитектор; Мобильный разработчик; Бэкенд-разработчик; Тестировщик |
| 79 | Совещание 11 |  |  |  |  | none → 86.88d | resources none → Руководитель проекта [50%]; Бизнес-аналитик; Архитектор; Мобильный разработчик; Бэкенд-разработчик; Тестировщик |
| 80 | Совещание 12 |  |  |  |  | none → 81.88d | resources none → Руководитель проекта [50%]; Бизнес-аналитик; Архитектор; Мобильный разработчик; Бэкенд-разработчик; Тестировщик |
| 81 | Совещание 13 |  |  |  |  | none → 76.88d | resources none → Руководитель проекта [50%]; Бизнес-аналитик; Архитектор; Мобильный разработчик; Бэкенд-разработчик; Тестировщик |
| 82 | Совещание 14 |  |  |  |  | none → 71.88d | resources none → Руководитель проекта [50%]; Бизнес-аналитик; Архитектор; Мобильный разработчик; Бэкенд-разработчик; Тестировщик |

| ID | Task | Total float | Other |
| --- | --- | --- | --- |
| 83 | Совещание 15 | none → 66.88d | resources none → Руководитель проекта [50%]; Бизнес-аналитик; Архитектор; Мобильный разработчик; Бэкенд-разработчик; Тестировщик |
| 84 | Совещание 16 | none → 61.88d | resources none → Руководитель проекта [50%]; Бизнес-аналитик; Архитектор; Мобильный разработчик; Бэкенд-разработчик; Тестировщик |
| 85 | Совещание 17 | none → 56.88d | resources none → Руководитель проекта [50%]; Бизнес-аналитик; Архитектор; Мобильный разработчик; Бэкенд-разработчик; Тестировщик |
| 86 | Совещание 18 | none → 51.88d | resources none → Руководитель проекта [50%]; Бизнес-аналитик; Архитектор; Мобильный разработчик; Бэкенд-разработчик; Тестировщик |
| 87 | Совещание 19 | none → 46.88d | resources none → Руководитель проекта [50%]; Бизнес-аналитик; Архитектор; Мобильный разработчик; Бэкенд-разработчик; Тестировщик |
| 88 | Совещание 20 | none → 41.88d | resources none → Руководитель проекта [50%]; Бизнес-аналитик; Архитектор; Мобильный разработчик; Бэкенд-разработчик; Тестировщик |
| 89 | Совещание 21 | none → 36.88d | resources none → Руководитель проекта [50%]; Бизнес-аналитик; Архитектор; Мобильный разработчик; Бэкенд-разработчик; Тестировщик |
| 90 | Совещание 22 | none → 31.88d | resources none → Руководитель проекта [50%]; Бизнес-аналитик; Архитектор; Мобильный разработчик; Бэкенд-разработчик; Тестировщик |
| 91 | Совещание 23 | none → 26.88d | resources none → Руководитель проекта [50%]; Бизнес-аналитик; Архитектор; Мобильный разработчик; Бэкенд-разработчик; Тестировщик |
| 92 | Совещание 24 | none → 21.88d | resources none → Руководитель проекта [50%]; Бизнес-аналитик; Архитектор; Мобильный разработчик; Бэкенд-разработчик; Тестировщик |
| 93 | Совещание 25 | none → 16.88d | resources none → Руководитель проекта [50%]; Бизнес-аналитик; Архитектор; Мобильный разработчик; Бэкенд-разработчик; Тестировщик |
| 94 | Совещание 26 | none → 11.88d | resources none → Руководитель проекта [50%]; Бизнес-аналитик; Архитектор; Мобильный разработчик; Бэкенд-разработчик; Тестировщик |
| 95 | Совещание 27 | none → 6.88d | resources none → Руководитель проекта [50%]; Бизнес-аналитик; Архитектор; Мобильный разработчик; Бэкенд-разработчик; Тестировщик |
| 96 | Совещание 28 | none → 1.88d | resources none → Руководитель проекта [50%]; Бизнес-аналитик; Архитектор; Мобильный разработчик; Бэкенд-разработчик; Тестировщик |
