# УП_Шистерин_эксперимент

How a schedule from MS Project changed from version to version. A marks actual dates.

## Version 1 (data date 2025-04-01, saved 2026-11-08)

| ID | WBS | Task | Duration | Start | Finish | Predecessors | Complete | Total float | Constraint |
| --- | --- | --- | --- | --- | --- | --- | --- | --- | --- |
| 1 | 1 | **Совещание** | 130d | 2025-02-07 05:00 | 2025-08-15 06:00 |  |  | 0d |  |
| 2 |  | Совещание 1 | 1h | 2025-02-07 05:00 | 2025-02-07 06:00 |  |  |  | start no earlier than 2025-02-07 05:00 |
| 3 |  | Совещание 2 | 1h | 2025-02-14 05:00 | 2025-02-14 06:00 |  |  |  | start no earlier than 2025-02-14 05:00 |
| 4 |  | Совещание 3 | 1h | 2025-02-21 05:00 | 2025-02-21 06:00 |  |  |  | start no earlier than 2025-02-21 05:00 |
| 5 |  | Совещание 4 | 1h | 2025-02-28 05:00 | 2025-02-28 06:00 |  |  |  | start no earlier than 2025-02-28 05:00 |
| 6 |  | Совещание 5 | 1h | 2025-03-07 05:00 | 2025-03-07 06:00 |  |  |  | start no earlier than 2025-03-07 05:00 |
| 7 |  | Совещание 6 | 1h | 2025-03-14 05:00 | 2025-03-14 06:00 |  |  |  | start no earlier than 2025-03-14 05:00 |
| 8 |  | Совещание 7 | 1h | 2025-03-21 05:00 | 2025-03-21 06:00 |  |  |  | start no earlier than 2025-03-21 05:00 |
| 9 |  | Совещание 8 | 1h | 2025-03-28 05:00 | 2025-03-28 06:00 |  |  |  | start no earlier than 2025-03-28 05:00 |
| 10 |  | Совещание 9 | 1h | 2025-04-04 05:00 | 2025-04-04 06:00 |  |  |  | start no earlier than 2025-04-04 05:00 |
| 11 |  | Совещание 10 | 1h | 2025-04-11 05:00 | 2025-04-11 06:00 |  |  |  | start no earlier than 2025-04-11 05:00 |
| 12 |  | Совещание 11 | 1h | 2025-04-18 05:00 | 2025-04-18 06:00 |  |  |  | start no earlier than 2025-04-18 05:00 |
| 13 |  | Совещание 12 | 1h | 2025-04-25 05:00 | 2025-04-25 06:00 |  |  |  | start no earlier than 2025-04-25 05:00 |
| 14 |  | Совещание 13 | 1h | 2025-05-02 05:00 | 2025-05-02 06:00 |  |  |  | start no earlier than 2025-05-02 05:00 |
| 15 |  | Совещание 14 | 1h | 2025-05-09 05:00 | 2025-05-09 06:00 |  |  |  | start no earlier than 2025-05-09 05:00 |
| 16 |  | Совещание 15 | 1h | 2025-05-16 05:00 | 2025-05-16 06:00 |  |  |  | start no earlier than 2025-05-16 05:00 |
| 17 |  | Совещание 16 | 1h | 2025-05-23 05:00 | 2025-05-23 06:00 |  |  |  | start no earlier than 2025-05-23 05:00 |
| 18 |  | Совещание 17 | 1h | 2025-05-30 05:00 | 2025-05-30 06:00 |  |  |  | start no earlier than 2025-05-30 05:00 |
| 19 |  | Совещание 18 | 1h | 2025-06-06 05:00 | 2025-06-06 06:00 |  |  |  | start no earlier than 2025-06-06 05:00 |
| 20 |  | Совещание 19 | 1h | 2025-06-13 05:00 | 2025-06-13 06:00 |  |  |  | start no earlier than 2025-06-13 05:00 |
| 21 |  | Совещание 20 | 1h | 2025-06-20 05:00 | 2025-06-20 06:00 |  |  |  | start no earlier than 2025-06-20 05:00 |
| 22 |  | Совещание 21 | 1h | 2025-06-27 05:00 | 2025-06-27 06:00 |  |  |  | start no earlier than 2025-06-27 05:00 |
| 23 |  | Совещание 22 | 1h | 2025-07-04 05:00 | 2025-07-04 06:00 |  |  |  | start no earlier than 2025-07-04 05:00 |
| 24 |  | Совещание 23 | 1h | 2025-07-11 05:00 | 2025-07-11 06:00 |  |  |  | start no earlier than 2025-07-11 05:00 |
| 25 |  | Совещание 24 | 1h | 2025-07-18 05:00 | 2025-07-18 06:00 |  |  |  | start no earlier than 2025-07-18 05:00 |
| 26 |  | Совещание 25 | 1h | 2025-07-25 05:00 | 2025-07-25 06:00 |  |  |  | start no earlier than 2025-07-25 05:00 |
| 27 |  | Совещание 26 | 1h | 2025-08-01 05:00 | 2025-08-01 06:00 |  |  |  | start no earlier than 2025-08-01 05:00 |
| 28 |  | Совещание 27 | 1h | 2025-08-08 05:00 | 2025-08-08 06:00 |  |  |  | start no earlier than 2025-08-08 05:00 |
| 29 |  | Совещание 28 | 1h | 2025-08-15 05:00 | 2025-08-15 06:00 |  |  |  | start no earlier than 2025-08-15 05:00 |
| 30 | 2 | **Этап 1. Инициализация проекта и анализ требований** | 14.5d | 2025-02-03 05:00 A | 2025-02-21 14:00 A |  | 100% |  |  |
| 31 |  | Утверждение концепции и устав проекта | 3d | 2025-02-03 05:00 A | 2025-02-05 13:00 A |  | 100% |  |  |
| 32 |  | Анализ бизнес-процессов интернет-банка | 5d | 2025-02-05 14:00 A | 2025-02-12 13:00 A | 31 | 100% |  |  |
| 33 |  | Сбор и систематизация требований заказчика | 6d | 2025-02-10 14:00 A | 2025-02-18 13:00 A | 31 | 100% |  |  |
| 34 |  | Изучение нормативных требований (152-ФЗ, ГОСТ Р 56920) | 4d | 2025-02-12 14:00 A | 2025-02-18 13:00 A | 32 | 100% |  |  |
| 35 |  | Анализ конкурентных мобильных банков | 4d | 2025-02-12 14:00 A | 2025-02-18 13:00 A | 32 | 100% |  |  |
| 36 |  | Формирование бэклога и критериев приёмки | 3d | 2025-02-18 14:00 A | 2025-02-21 13:00 A | 33, 34, 35 | 100% |  |  |
| 37 |  | Создание репозитория и настройка CI/CD-конвейера | 3d | 2025-02-05 09:00 A | 2025-02-07 18:00 A | 31SS+2d | 100% |  |  |
| 38 |  | Развёртывание тестового стенда и средств автоматизации | 5d | 2025-02-10 09:00 A | 2025-02-14 18:00 A | 37 | 100% |  |  |
| 39 |  | Веха 1. Согласование требований и плана проекта | 0d | 2025-02-21 14:00 A | 2025-02-21 14:00 A | 36, 38 | 100% |  |  |
| 40 | 3 | **Этап 2. Проектирование мобильного приложения** | 21d | 2025-02-21 14:00 A | 2025-03-24 14:00 A |  | 100% |  |  |
| 41 |  | Разработка целевой архитектуры мобильного приложения | 6d | 2025-02-21 14:00 A | 2025-03-03 13:00 A | 39 | 100% |  |  |
| 42 |  | Проектирование UX/UI мобильного интерфейса | 8d | 2025-02-21 14:00 A | 2025-03-05 13:00 A | 39 | 100% |  |  |
| 43 |  | Проектирование интеграционного слоя с API банка | 6d | 2025-03-03 14:00 A | 2025-03-11 13:00 A | 41 | 100% |  |  |
| 44 |  | Проектирование схемы БД офлайн-кэша | 5d | 2025-03-04 14:00 A | 2025-03-11 13:00 A | 41 | 100% |  |  |
| 45 |  | Проектирование модели безопасности и аутентификации | 5d | 2025-03-03 14:00 A | 2025-03-10 13:00 A | 41 | 100% |  |  |
| 46 |  | Разработка технического задания и API-контрактов | 6d | 2025-03-11 14:00 A | 2025-03-19 13:00 A | 42, 43, 44, 45 | 100% |  |  |
| 47 |  | Разработка дизайн-макетов ключевых экранов | 6d | 2025-03-05 14:00 A | 2025-03-13 13:00 A | 42 | 100% |  |  |
| 48 |  | Согласование дизайн-макетов с заказчиком | 4d | 2025-03-13 14:00 A | 2025-03-19 13:00 A | 47 | 100% |  |  |
| 49 |  | Рецензирование архитектурных решений | 3d | 2025-03-19 14:00 A | 2025-03-24 13:00 A | 46 | 100% |  |  |
| 50 |  | Веха 2. Архитектура мобильного приложения согласована | 0d | 2025-03-24 14:00 A | 2025-03-24 14:00 A | 48, 49 | 100% |  |  |
| 51 | 4 | **Этап 3. Разработка функционального ядра** | 36d | 2025-03-24 14:00 A | 2025-05-19 13:00 |  | 5% | 0d |  |
| 52 |  | Разработка каркаса приложения и навигации | 28.1d | 2025-03-24 14:00 A | 2025-05-05 14:48 | 50 | 23% |  |  |
| 53 |  | Реализация экрана аутентификации (PIN, биометрия) | 23.22d | 2025-04-03 14:00 A | 2025-05-12 15:45 | 52 | 6% |  |  |
| 54 |  | Реализация главного экрана и списка операций | 23.22d | 2025-04-03 14:00 A | 2025-05-12 15:45 | 52 | 6% |  |  |
| 55 |  | Реализация экрана платежей и переводов | 22d | 2025-04-11 14:00 | 2025-05-19 13:00 | 53, 54 |  |  | must start on 2025-04-11 14:00 |
| 56 |  | Реализация чатов с поддержкой банка | 18d | 2025-04-11 14:00 | 2025-05-13 13:00 | 54 |  |  |  |
| 57 |  | Реализация витрины продуктов и вкладов | 17d | 2025-04-11 14:00 | 2025-05-12 13:00 | 54 |  |  |  |
| 58 |  | Разработка офлайн-режима и механизма синхронизации | 10d | 2025-04-25 14:00 | 2025-05-15 13:00 | 55 |  |  |  |
| 59 |  | Интеграция с push-уведомлениями | 21.22d | 2025-04-03 14:00 A | 2025-05-06 15:45 | 52 | 6% |  |  |
| 60 |  | Реализация модуля аналитики и персонализации | 6d | 2025-04-11 14:00 | 2025-04-21 13:00 | 54 |  |  |  |
| 61 |  | Реализация офлайн-кэша на стороне клиента | 23.22d | 2025-04-03 14:00 A | 2025-05-12 15:45 | 44, 52 | 6% |  |  |
| 62 |  | Реализация аналитических дашбордов | 11d | 2025-04-21 14:00 | 2025-05-12 13:00 | 60SF+2d |  |  |  |
| 63 |  | Написание unit-тестов (целевое покрытие 80%) | 6.25d | 2025-04-25 14:00 | 2025-05-09 16:00 | 53, 55, 56, 57, 61 |  |  | start no earlier than 2025-04-25 14:00 |
| 64 |  | Нагрузочное тестирование API банка | 5d | 2025-04-30 14:00 | 2025-05-12 13:00 | 63FF+1d |  |  |  |
| 65 |  | Веха 3. Функциональное ядро разработано | 0d | 2025-05-07 14:00 | 2025-05-07 14:00 | 59, 62, 63, 64 |  |  |  |
| 66 | 5 | **Этап 4. Интеграция с банковскими сервисами** | 26.5d | 2025-05-07 14:00 | 2025-06-17 13:00 |  |  | 0d |  |
| 67 |  | Разработка клиента REST API интернет-банка | 8d | 2025-05-07 14:00 | 2025-05-20 13:00 | 65 |  |  |  |
| 68 |  | Интеграция с платёжным шлюзом | 7d | 2025-05-19 14:00 | 2025-05-28 13:00 | 67 |  |  |  |
| 69 |  | Интеграция с системой биометрической аутентификации | 5d | 2025-05-19 14:00 | 2025-05-26 13:00 | 53, 67 |  |  |  |
| 70 |  | Интеграция с push-сервисом банка | 4d | 2025-05-19 14:00 | 2025-05-23 13:00 | 59, 67 |  |  |  |

| ID | WBS | Task | Duration | Start | Finish | Predecessors | Total float | Constraint |
| --- | --- | --- | --- | --- | --- | --- | --- | --- |
| 71 |  | Интеграция с CRM и системой чатов | 6d | 2025-05-19 14:00 | 2025-05-27 13:00 | 56, 67 |  |  |
| 72 |  | Настройка мониторинга и логирования (Sentry) | 4d | 2025-05-23 14:00 | 2025-05-29 13:00 | 67 |  |  |
| 73 |  | Проверка соответствия требованиям 152-ФЗ | 5d | 2025-05-26 14:00 | 2025-06-02 13:00 | 45, 69 |  |  |
| 74 |  | Регрессионное тестирование интеграций | 6d | 2025-06-02 14:00 | 2025-06-10 13:00 | 68, 69, 70, 71, 72, 73 |  |  |
| 75 |  | Тестирование отказоустойчивости каналов связи | 4d | 2025-06-10 14:00 | 2025-06-17 13:00 | 72, 74 |  |  |
| 76 |  | Веха 4. Интеграционные работы завершены | 0d | 2025-06-16 14:00 | 2025-06-16 14:00 | 74, 75 |  |  |
| 77 | 6 | **Этап 5. Тестирование и обеспечение качества** | 47.5d | 2025-05-07 14:00 | 2025-07-16 14:00 |  | 0d |  |
| 78 |  | Разработка тест-плана и тест-кейсов | 5d | 2025-05-07 14:00 | 2025-05-15 13:00 | 65 |  |  |
| 79 |  | Функциональное тестирование | 8d | 2025-06-10 14:00 | 2025-06-23 13:00 | 74, 78 |  |  |
| 80 |  | Тестирование удобства использования (UX) | 4d | 2025-06-20 14:00 | 2025-06-26 13:00 | 79 |  |  |
| 81 |  | Тестирование защищённости (pentest) | 5d | 2025-06-20 14:00 | 2025-06-27 13:00 | 73, 79 |  |  |
| 82 |  | Тестирование совместимости с устройствами и ОС | 5d | 2025-06-20 14:00 | 2025-06-27 13:00 | 79 |  |  |
| 83 |  | Тестирование офлайн-режима при потере связи | 3d | 2025-06-20 14:00 | 2025-06-25 13:00 | 58, 79 |  |  |
| 84 |  | Исправление выявленных дефектов | 10d | 2025-06-27 14:00 | 2025-07-11 13:00 | 80, 81, 82, 83 |  | finish no later than 2025-07-16 13:00 |
| 85 |  | Подготовка отчёта о тестировании | 3d | 2025-07-11 14:00 | 2025-07-16 13:00 | 84 |  |  |
| 86 |  | Веха 5. Тестирование завершено | 0d | 2025-07-16 14:00 | 2025-07-16 14:00 | 85 |  |  |
| 87 | 7 | **Этап 6. Подготовка к эксплуатации и выпуск** | 23d | 2025-07-16 14:00 | 2025-08-18 13:00 |  | 0d |  |
| 88 |  | Подготовка руководства пользователя | 4d | 2025-07-16 14:00 | 2025-07-22 13:00 | 86 |  |  |
| 89 |  | Обучение сотрудников поддержки | 3d | 2025-07-22 14:00 | 2025-07-25 13:00 | 88 |  |  |
| 90 |  | Настройка мониторинга продуктивной среды | 3d | 2025-07-23 14:00 | 2025-07-28 13:00 | 72, 86 |  |  |
| 91 |  | Публикация в App Store и Google Play | 5d | 2025-07-16 14:00 | 2025-07-23 13:00 | 86 |  |  |
| 92 |  | Проведение приёмочных испытаний с заказчиком | 4d | 2025-07-25 14:00 | 2025-07-31 13:00 | 86, 89 |  | must finish on 2025-07-31 13:00 |
| 93 |  | Передача документации и исходного кода | 3d | 2025-07-23 14:00 | 2025-07-28 13:00 | 88, 91 |  |  |
| 94 |  | Запуск рекламной кампании | 6d | 2025-07-31 14:00 | 2025-08-08 13:00 | 92 |  |  |
| 95 |  | Анализ первых отзывов и корректировка | 4d | 2025-08-08 14:00 | 2025-08-14 13:00 | 91, 92, 94 |  |  |
| 96 |  | Веха 6. Релиз мобильного приложения выполнен | 0d | 2025-08-14 14:00 | 2025-08-14 14:00 | 90, 93, 95 |  |  |
| 97 |  | Закрытие проекта и архивирование | 2d | 2025-08-14 14:00 | 2025-08-18 13:00 | 96 |  |  |

## Version 2 (data date 2027-04-01, saved 2026-11-10)

Note of the change: Shisterin: shift project to 2027, update docx and refreshed screenshots (39,41,43-46)

Last finish 2025-08-18 → 2027-08-17 (+729d).

Changed:

| ID | Task | Start | Finish | Duration | Complete | Other |
| --- | --- | --- | --- | --- | --- | --- |
| 1 | **Этап 1. Инициализация проекта и анализ требований** | 2025-02-03 05:00 A → 2027-02-03 09:00 A (+730d) | 2025-02-21 14:00 A → 2027-02-23 13:00 A (+732d) |  |  | baseline start 2025-02-03 05:00 → 2027-02-03 09:00; baseline finish 2025-02-21 14:00 → 2027-02-23 13:00 |
| 2 | Утверждение концепции и устав проекта | 2025-02-03 05:00 A → 2027-02-03 09:00 A (+730d) | 2025-02-05 13:00 A → 2027-02-05 18:00 A (+730d) |  |  | baseline start 2025-02-03 05:00 → 2027-02-03 09:00; baseline finish 2025-02-05 13:00 → 2027-02-05 18:00 |
| 3 | Анализ бизнес-процессов интернет-банка | 2025-02-05 14:00 A → 2027-02-05 14:00 A (+730d) | 2025-02-12 13:00 A → 2027-02-12 13:00 A (+730d) |  |  | baseline start 2025-02-05 14:00 → 2027-02-05 14:00; baseline finish 2025-02-12 13:00 → 2027-02-12 13:00 |
| 4 | Сбор и систематизация требований заказчика | 2025-02-10 14:00 A → 2027-02-10 14:00 A (+730d) | 2025-02-18 13:00 A → 2027-02-18 13:00 A (+730d) |  |  | baseline start 2025-02-10 14:00 → 2027-02-10 14:00; baseline finish 2025-02-18 13:00 → 2027-02-18 13:00 |
| 5 | Изучение нормативных требований (152-ФЗ, ГОСТ Р 56920) | 2025-02-12 14:00 A → 2027-02-12 14:00 A (+730d) | 2025-02-18 13:00 A → 2027-02-18 13:00 A (+730d) |  |  | baseline start 2025-02-12 14:00 → 2027-02-12 14:00; baseline finish 2025-02-18 13:00 → 2027-02-18 13:00 |
| 6 | Анализ конкурентных мобильных банков | 2025-02-12 14:00 A → 2027-02-12 14:00 A (+730d) | 2025-02-18 13:00 A → 2027-02-18 13:00 A (+730d) |  |  | baseline start 2025-02-12 14:00 → 2027-02-12 14:00; baseline finish 2025-02-18 13:00 → 2027-02-18 13:00 |
| 7 | Формирование бэклога и критериев приёмки | 2025-02-18 14:00 A → 2027-02-18 14:00 A (+730d) | 2025-02-21 13:00 A → 2027-02-23 13:00 A (+732d) |  |  | baseline start 2025-02-18 14:00 → 2027-02-18 14:00; baseline finish 2025-02-21 13:00 → 2027-02-23 13:00 |
| 8 | Создание репозитория и настройка CI/CD-конвейера | 2025-02-05 09:00 A → 2027-02-05 09:00 A (+730d) | 2025-02-07 18:00 A → 2027-02-09 18:00 A (+732d) |  |  | baseline start 2025-02-05 09:00 → 2027-02-05 09:00; baseline finish 2025-02-07 18:00 → 2027-02-09 18:00 |
| 9 | Развёртывание тестового стенда и средств автоматизации | 2025-02-10 09:00 A → 2027-02-10 09:00 A (+730d) | 2025-02-14 18:00 A → 2027-02-16 18:00 A (+732d) |  |  | baseline start 2025-02-10 09:00 → 2027-02-10 09:00; baseline finish 2025-02-14 18:00 → 2027-02-16 18:00 |
| 10 | Веха 1. Согласование требований и плана проекта | 2025-02-21 14:00 A → 2027-02-22 09:00 A (+731d) | 2025-02-21 14:00 A → 2027-02-22 09:00 A (+731d) |  |  | baseline start 2025-02-21 14:00 → 2027-02-22 09:00; baseline finish 2025-02-21 14:00 → 2027-02-22 09:00 |
| 11 | **Этап 2. Проектирование мобильного приложения** | 2025-02-21 14:00 A → 2027-02-22 09:00 A (+731d) | 2025-03-24 14:00 A → 2027-03-24 14:00 A (+730d) | 21d → 22.5d |  | baseline start 2025-02-21 14:00 → 2027-02-22 09:00; baseline finish 2025-03-24 14:00 → 2027-03-24 14:00 |
| 12 | Разработка целевой архитектуры мобильного приложения | 2025-02-21 14:00 A → 2027-02-22 09:00 A (+731d) | 2025-03-03 13:00 A → 2027-03-01 18:00 A (+728d) |  |  | baseline start 2025-02-21 14:00 → 2027-02-22 09:00; baseline finish 2025-03-03 13:00 → 2027-03-01 18:00 |
| 13 | Проектирование UX/UI мобильного интерфейса | 2025-02-21 14:00 A → 2027-02-22 09:00 A (+731d) | 2025-03-05 13:00 A → 2027-03-03 18:00 A (+728d) |  |  | baseline start 2025-02-21 14:00 → 2027-02-22 09:00; baseline finish 2025-03-05 13:00 → 2027-03-03 18:00 |
| 14 | Проектирование интеграционного слоя с API банка | 2025-03-03 14:00 A → 2027-03-03 14:00 A (+730d) | 2025-03-11 13:00 A → 2027-03-11 13:00 A (+730d) |  |  | baseline start 2025-03-03 14:00 → 2027-03-03 14:00; baseline finish 2025-03-11 13:00 → 2027-03-11 13:00 |
| 15 | Проектирование схемы БД офлайн-кэша | 2025-03-04 14:00 A → 2027-03-04 14:00 A (+730d) | 2025-03-11 13:00 A → 2027-03-11 13:00 A (+730d) |  |  | baseline start 2025-03-04 14:00 → 2027-03-04 14:00; baseline finish 2025-03-11 13:00 → 2027-03-11 13:00 |
| 16 | Проектирование модели безопасности и аутентификации | 2025-03-03 14:00 A → 2027-03-03 14:00 A (+730d) | 2025-03-10 13:00 A → 2027-03-10 13:00 A (+730d) |  |  | baseline start 2025-03-03 14:00 → 2027-03-03 14:00; baseline finish 2025-03-10 13:00 → 2027-03-10 13:00 |
| 17 | Разработка технического задания и API-контрактов | 2025-03-11 14:00 A → 2027-03-11 14:00 A (+730d) | 2025-03-19 13:00 A → 2027-03-19 13:00 A (+730d) |  |  | baseline start 2025-03-11 14:00 → 2027-03-11 14:00; baseline finish 2025-03-19 13:00 → 2027-03-19 13:00 |
| 18 | Разработка дизайн-макетов ключевых экранов | 2025-03-05 14:00 A → 2027-03-05 14:00 A (+730d) | 2025-03-13 13:00 A → 2027-03-15 13:00 A (+732d) |  |  | baseline start 2025-03-05 14:00 → 2027-03-05 14:00; baseline finish 2025-03-13 13:00 → 2027-03-15 13:00 |
| 19 | Согласование дизайн-макетов с заказчиком | 2025-03-13 14:00 A → 2027-03-15 09:00 A (+732d) | 2025-03-19 13:00 A → 2027-03-18 18:00 A (+729d) |  |  | baseline start 2025-03-13 14:00 → 2027-03-15 09:00; baseline finish 2025-03-19 13:00 → 2027-03-18 18:00 |
| 20 | Рецензирование архитектурных решений | 2025-03-19 14:00 A → 2027-03-19 14:00 A (+730d) | 2025-03-24 13:00 A → 2027-03-24 13:00 A (+730d) |  |  | baseline start 2025-03-19 14:00 → 2027-03-19 14:00; baseline finish 2025-03-24 13:00 → 2027-03-24 13:00 |
| 21 | Веха 2. Архитектура мобильного приложения согласована | 2025-03-24 14:00 A → 2027-03-24 14:00 A (+730d) | 2025-03-24 14:00 A → 2027-03-24 14:00 A (+730d) |  |  | baseline start 2025-03-24 14:00 → 2027-03-24 14:00; baseline finish 2025-03-24 14:00 → 2027-03-24 14:00 |
| 22 | **Этап 3. Разработка функционального ядра** | 2025-03-24 14:00 A → 2027-03-24 14:00 A (+730d) | 2025-05-19 13:00 → 2027-05-12 18:00 (+723d) | 36d → 35.5d |  | baseline start 2025-03-24 14:00 → 2027-03-24 14:00; baseline finish 2025-05-13 13:00 → 2027-05-12 18:00 |
| 23 | Разработка каркаса приложения и навигации | 2025-03-24 14:00 A → 2027-03-24 14:00 A (+730d) | 2025-05-05 14:48 → 2027-05-03 14:48 (+728d) |  |  | baseline start 2025-03-24 14:00 → 2027-03-24 14:00; baseline finish 2025-04-03 13:00 → 2027-05-03 14:48 |
| 24 | Реализация экрана аутентификации (PIN, биометрия) | 2025-04-03 14:00 A → 2027-04-05 09:00 A (+732d) | 2025-05-12 15:45 → 2027-05-06 15:45 (+724d) | 23.22d → 23.72d | 6% → 5% | baseline start 2025-04-03 14:00 → 2027-04-05 09:00; baseline finish 2025-04-11 13:00 → 2027-05-06 15:45 |
| 25 | Реализация главного экрана и списка операций | 2025-04-03 14:00 A → 2027-04-05 09:00 A (+732d) | 2025-05-12 15:45 → 2027-05-06 15:45 (+724d) | 23.22d → 23.72d | 6% → 5% | baseline start 2025-04-03 14:00 → 2027-04-05 09:00; baseline finish 2025-04-11 13:00 → 2027-05-06 15:45 |
| 26 | Реализация экрана платежей и переводов | 2025-04-11 14:00 → 2027-04-12 09:00 (+731d) | 2025-05-19 13:00 → 2027-05-12 18:00 (+723d) | 22d → 23d |  | constraint must start on 2025-04-11 14:00 → must start on 2027-04-12 09:00; baseline start 2025-04-11 14:00 → 2027-04-12 09:00; baseline finish 2025-04-25 13:00 → 2027-05-12 18:00 |
| 27 | Реализация чатов с поддержкой банка | 2025-04-11 14:00 → 2027-04-12 09:00 (+731d) | 2025-05-13 13:00 → 2027-05-06 18:00 (+723d) | 18d → 19d |  | baseline start 2025-04-11 14:00 → 2027-04-12 09:00; baseline finish 2025-04-21 13:00 → 2027-05-06 18:00 |
| 28 | Реализация витрины продуктов и вкладов | 2025-04-11 14:00 → 2027-04-12 09:00 (+731d) | 2025-05-12 13:00 → 2027-05-05 18:00 (+723d) | 17d → 18d |  | baseline start 2025-04-11 14:00 → 2027-04-12 09:00; baseline finish 2025-04-18 13:00 → 2027-05-05 18:00 |
| 29 | Разработка офлайн-режима и механизма синхронизации | 2025-04-25 14:00 → 2027-04-26 09:00 (+731d) | 2025-05-15 13:00 → 2027-05-10 18:00 (+725d) | 10d → 11d |  | baseline start 2025-04-25 14:00 → 2027-04-26 09:00; baseline finish 2025-05-13 13:00 → 2027-05-10 18:00 |
| 30 | Интеграция с push-уведомлениями | 2025-04-03 14:00 A → 2027-04-05 09:00 A (+732d) | 2025-05-06 15:45 → 2027-05-04 15:45 (+728d) | 21.22d → 21.72d |  | baseline start 2025-04-03 14:00 → 2027-04-05 09:00; baseline finish 2025-04-09 13:00 → 2027-05-04 15:45 |
| 31 | Реализация модуля аналитики и персонализации | 2025-04-11 14:00 → 2027-04-12 09:00 (+731d) | 2025-04-21 13:00 → 2027-04-19 18:00 (+728d) |  |  | baseline start 2025-04-11 14:00 → 2027-04-12 09:00; baseline finish 2025-04-21 13:00 → 2027-04-19 18:00 |
| 32 | Реализация офлайн-кэша на стороне клиента | 2025-04-03 14:00 A → 2027-04-05 09:00 A (+732d) | 2025-05-12 15:45 → 2027-05-06 15:45 (+724d) | 23.22d → 23.72d | 6% → 5% | baseline start 2025-04-03 14:00 → 2027-04-05 09:00; baseline finish 2025-04-11 13:00 → 2027-05-06 15:45 |
| 33 | Реализация аналитических дашбордов | 2025-04-21 14:00 → 2027-04-21 14:00 (+730d) | 2025-05-12 13:00 → 2027-05-06 13:00 (+724d) |  |  | baseline start 2025-04-21 14:00 → 2027-04-21 14:00; baseline finish 2025-04-28 13:00 → 2027-05-06 13:00 |
| 34 | Написание unit-тестов (целевое покрытие 80%) | 2025-04-25 14:00 → 2027-04-26 09:00 (+731d) | 2025-05-09 16:00 → 2027-05-06 18:00 (+727d) | 6.25d → 9d |  | constraint start no earlier than 2025-04-25 14:00 → start no earlier than 2027-04-26 09:00; baseline start 2025-04-25 14:00 → 2027-04-26 09:00; baseline finish 2025-05-12 13:00 → 2027-05-06 18:00 |
| 35 | Нагрузочное тестирование API банка | 2025-04-30 14:00 → 2027-04-30 14:00 (+730d) | 2025-05-12 13:00 → 2027-05-07 13:00 (+725d) |  |  | resources Тестировщик; DevOps-инженер [50%] → Тестировщик [99%]; DevOps-инженер [50%]; baseline start 2025-04-30 14:00 → 2027-04-30 14:00; baseline finish 2025-05-12 13:00 → 2027-05-07 13:00 |
| 36 | Веха 3. Функциональное ядро разработано | 2025-05-07 14:00 → 2027-05-07 14:00 (+730d) | 2025-05-07 14:00 → 2027-05-07 14:00 (+730d) |  |  | baseline start 2025-05-07 14:00 → 2027-05-07 14:00; baseline finish 2025-05-07 14:00 → 2027-05-07 14:00 |
| 37 | **Этап 4. Интеграция с банковскими сервисами** | 2025-05-07 14:00 → 2027-05-07 14:00 (+730d) | 2025-06-17 13:00 → 2027-06-16 14:00 (+729d) | 26.5d → 28d |  | baseline start 2025-05-07 14:00 → 2027-05-07 14:00; baseline finish 2025-06-17 13:00 → 2027-06-16 14:00 |
| 38 | Разработка клиента REST API интернет-банка | 2025-05-07 14:00 → 2027-05-07 14:00 (+730d) | 2025-05-20 13:00 → 2027-05-19 13:00 (+729d) |  |  | resources Бэкенд-разработчик [150%] → Бэкенд-разработчик [149%]; baseline start 2025-05-07 14:00 → 2027-05-07 14:00; baseline finish 2025-05-20 13:00 → 2027-05-19 13:00 |
| 39 | Интеграция с платёжным шлюзом | 2025-05-19 14:00 → 2027-05-19 14:00 (+730d) | 2025-05-28 13:00 → 2027-05-28 13:00 (+730d) |  |  | baseline start 2025-05-19 14:00 → 2027-05-19 14:00; baseline finish 2025-05-28 13:00 → 2027-05-28 13:00 |
| 40 | Интеграция с системой биометрической аутентификации | 2025-05-19 14:00 → 2027-05-19 14:00 (+730d) | 2025-05-26 13:00 → 2027-05-26 13:00 (+730d) |  |  | baseline start 2025-05-19 14:00 → 2027-05-19 14:00; baseline finish 2025-05-26 13:00 → 2027-05-26 13:00 |
| 41 | Интеграция с push-сервисом банка | 2025-05-19 14:00 → 2027-05-19 14:00 (+730d) | 2025-05-23 13:00 → 2027-05-25 13:00 (+732d) |  |  | baseline start 2025-05-19 14:00 → 2027-05-19 14:00; baseline finish 2025-05-23 13:00 → 2027-05-25 13:00 |
| 42 | Интеграция с CRM и системой чатов | 2025-05-19 14:00 → 2027-05-19 14:00 (+730d) | 2025-05-27 13:00 → 2027-05-27 13:00 (+730d) |  |  | baseline start 2025-05-19 14:00 → 2027-05-19 14:00; baseline finish 2025-05-27 13:00 → 2027-05-27 13:00 |
| 43 | Настройка мониторинга и логирования (Sentry) | 2025-05-23 14:00 → 2027-05-19 14:00 (+726d) | 2025-05-29 13:00 → 2027-05-25 13:00 (+726d) |  |  | baseline start 2025-05-23 14:00 → 2027-05-19 14:00; baseline finish 2025-05-29 13:00 → 2027-05-25 13:00 |
| 44 | Проверка соответствия требованиям 152-ФЗ | 2025-05-26 14:00 → 2027-05-26 14:00 (+730d) | 2025-06-02 13:00 → 2027-06-02 13:00 (+730d) |  |  | baseline start 2025-05-26 14:00 → 2027-05-26 14:00; baseline finish 2025-06-02 13:00 → 2027-06-02 13:00 |
| 45 | Регрессионное тестирование интеграций | 2025-06-02 14:00 → 2027-06-02 14:00 (+730d) | 2025-06-10 13:00 → 2027-06-10 13:00 (+730d) |  |  | baseline start 2025-06-02 14:00 → 2027-06-02 14:00; baseline finish 2025-06-10 13:00 → 2027-06-10 13:00 |
| 46 | Тестирование отказоустойчивости каналов связи | 2025-06-10 14:00 → 2027-06-10 14:00 (+730d) | 2025-06-17 13:00 → 2027-06-16 13:00 (+729d) |  |  | baseline start 2025-06-10 14:00 → 2027-06-10 14:00; baseline finish 2025-06-17 13:00 → 2027-06-16 13:00 |
| 47 | Веха 4. Интеграционные работы завершены | 2025-06-16 14:00 → 2027-06-16 14:00 (+730d) | 2025-06-16 14:00 → 2027-06-16 14:00 (+730d) |  |  | baseline start 2025-06-16 14:00 → 2027-06-16 14:00; baseline finish 2025-06-16 14:00 → 2027-06-16 14:00 |
| 48 | **Этап 5. Тестирование и обеспечение качества** | 2025-05-07 14:00 → 2027-05-07 14:00 (+730d) | 2025-07-16 14:00 → 2027-07-16 14:00 (+730d) | 47.5d → 50d |  | baseline start 2025-05-07 14:00 → 2027-05-07 14:00; baseline finish 2025-07-16 14:00 → 2027-07-16 14:00 |
| 49 | Разработка тест-плана и тест-кейсов | 2025-05-07 14:00 → 2027-05-07 14:00 (+730d) | 2025-05-15 13:00 → 2027-05-14 13:00 (+729d) |  |  | resources Тестировщик; Бизнес-аналитик [50%] → Тестировщик [99%]; Бизнес-аналитик [50%]; baseline start 2025-05-07 14:00 → 2027-05-07 14:00; baseline finish 2025-05-15 13:00 → 2027-05-14 13:00 |
| 50 | Функциональное тестирование | 2025-06-10 14:00 → 2027-06-10 14:00 (+730d) | 2025-06-23 13:00 → 2027-06-22 13:00 (+729d) |  |  | baseline start 2025-06-10 14:00 → 2027-06-10 14:00; baseline finish 2025-06-23 13:00 → 2027-06-22 13:00 |
| 51 | Тестирование удобства использования (UX) | 2025-06-20 14:00 → 2027-06-21 09:00 (+731d) | 2025-06-26 13:00 → 2027-06-24 18:00 (+728d) |  |  | baseline start 2025-06-20 14:00 → 2027-06-21 09:00; baseline finish 2025-06-26 13:00 → 2027-06-24 18:00 |
| 52 | Тестирование защищённости (pentest) | 2025-06-20 14:00 → 2027-06-21 09:00 (+731d) | 2025-06-27 13:00 → 2027-06-25 18:00 (+728d) |  |  | baseline start 2025-06-20 14:00 → 2027-06-21 09:00; baseline finish 2025-06-27 13:00 → 2027-06-25 18:00 |
| 53 | Тестирование совместимости с устройствами и ОС | 2025-06-20 14:00 → 2027-06-21 09:00 (+731d) | 2025-06-27 13:00 → 2027-06-25 18:00 (+728d) |  |  | baseline start 2025-06-20 14:00 → 2027-06-21 09:00; baseline finish 2025-06-27 13:00 → 2027-06-25 18:00 |
| 54 | Тестирование офлайн-режима при потере связи | 2025-06-20 14:00 → 2027-06-21 09:00 (+731d) | 2025-06-25 13:00 → 2027-06-23 18:00 (+728d) |  |  | baseline start 2025-06-20 14:00 → 2027-06-21 09:00; baseline finish 2025-06-25 13:00 → 2027-06-23 18:00 |
| 55 | Исправление выявленных дефектов | 2025-06-27 14:00 → 2027-06-28 09:00 (+731d) | 2025-07-11 13:00 → 2027-07-09 18:00 (+728d) |  |  | constraint finish no later than 2025-07-16 13:00 → finish no later than 2027-07-14 18:00; baseline start 2025-06-27 14:00 → 2027-06-28 09:00; baseline finish 2025-07-11 13:00 → 2027-07-09 18:00 |
| 56 | Подготовка отчёта о тестировании | 2025-07-11 14:00 → 2027-07-12 09:00 (+731d) | 2025-07-16 13:00 → 2027-07-14 18:00 (+728d) |  |  | baseline start 2025-07-11 14:00 → 2027-07-12 09:00; baseline finish 2025-07-16 13:00 → 2027-07-14 18:00 |
| 57 | Веха 5. Тестирование завершено | 2025-07-16 14:00 → 2027-07-16 14:00 (+730d) | 2025-07-16 14:00 → 2027-07-16 14:00 (+730d) |  |  | baseline start 2025-07-16 14:00 → 2027-07-16 14:00; baseline finish 2025-07-16 14:00 → 2027-07-16 14:00 |
| 58 | **Этап 6. Подготовка к эксплуатации и выпуск** | 2025-07-16 14:00 → 2027-02-08 09:00 (+572d) | 2025-08-18 13:00 → 2027-08-17 18:00 (+729d) | 23d → 137d |  | baseline start 2025-07-16 14:00 → 2027-02-08 09:00; baseline finish 2025-08-18 13:00 → 2027-08-17 18:00 |
| 59 | Подготовка руководства пользователя | 2025-07-16 14:00 → 2027-07-16 14:00 (+730d) | 2025-07-22 13:00 → 2027-07-22 13:00 (+730d) |  |  | baseline start 2025-07-16 14:00 → 2027-07-16 14:00; baseline finish 2025-07-22 13:00 → 2027-07-22 13:00 |
| 60 | Обучение сотрудников поддержки | 2025-07-22 14:00 → 2027-07-22 14:00 (+730d) | 2025-07-25 13:00 → 2027-07-27 13:00 (+732d) |  |  | baseline start 2025-07-22 14:00 → 2027-07-22 14:00; baseline finish 2025-07-25 13:00 → 2027-07-27 13:00 |
| 61 | Настройка мониторинга продуктивной среды | 2025-07-23 14:00 → 2027-07-16 14:00 (+723d) | 2025-07-28 13:00 → 2027-07-21 13:00 (+723d) |  |  | baseline start 2025-07-23 14:00 → 2027-07-16 14:00; baseline finish 2025-07-28 13:00 → 2027-07-21 13:00 |
| 62 | Публикация в App Store и Google Play | 2025-07-16 14:00 → 2027-07-16 14:00 (+730d) | 2025-07-23 13:00 → 2027-07-23 13:00 (+730d) |  |  | baseline start 2025-07-16 14:00 → 2027-07-16 14:00; baseline finish 2025-07-23 13:00 → 2027-07-23 13:00 |
| 63 | Проведение приёмочных испытаний с заказчиком | 2025-07-25 14:00 → 2027-07-26 09:00 (+731d) | 2025-07-31 13:00 → 2027-07-29 18:00 (+728d) |  |  | constraint must finish on 2025-07-31 13:00 → must finish on 2027-08-01 08:00; baseline start 2025-07-25 14:00 → 2027-07-26 09:00; baseline finish 2025-07-31 13:00 → 2027-07-29 18:00 |
| 64 | Передача документации и исходного кода | 2025-07-23 14:00 → 2027-07-23 14:00 (+730d) | 2025-07-28 13:00 → 2027-07-28 13:00 (+730d) |  |  | baseline start 2025-07-23 14:00 → 2027-07-23 14:00; baseline finish 2025-07-28 13:00 → 2027-07-28 13:00 |
| 65 | Запуск рекламной кампании | 2025-07-31 14:00 → 2027-08-02 09:00 (+732d) | 2025-08-08 13:00 → 2027-08-09 18:00 (+731d) |  |  | baseline start 2025-07-31 14:00 → 2027-08-02 09:00; baseline finish 2025-08-08 13:00 → 2027-08-09 18:00 |
| 66 | Анализ первых отзывов и корректировка | 2025-08-08 14:00 → 2027-08-09 09:00 (+731d) | 2025-08-14 13:00 → 2027-08-12 18:00 (+728d) |  |  | baseline start 2025-08-08 14:00 → 2027-08-09 09:00; baseline finish 2025-08-14 13:00 → 2027-08-12 18:00 |
| 67 | Веха 6. Релиз мобильного приложения выполнен | 2025-08-14 14:00 → 2027-08-16 09:00 (+732d) | 2025-08-14 14:00 → 2027-08-16 09:00 (+732d) |  |  | baseline start 2025-08-14 14:00 → 2027-08-16 09:00; baseline finish 2025-08-14 14:00 → 2027-08-16 09:00 |
| 68 | **Совещание** | 2025-02-07 05:00 → 2027-02-08 09:00 (+731d) | 2025-08-15 06:00 → 2027-08-16 10:00 (+731d) | 130d → 135.12d |  | baseline start none → 2027-02-08 09:00; baseline finish none → 2027-08-16 10:00 |
| 69 | Совещание 1 | 2025-02-07 05:00 → 2027-02-08 09:00 (+731d) | 2025-02-07 06:00 → 2027-02-08 10:00 (+731d) |  |  | constraint start no earlier than 2025-02-07 05:00 → start no earlier than 2027-02-08 09:00; baseline start none → 2027-02-08 09:00; baseline finish none → 2027-02-08 10:00 |
| 70 | Совещание 2 | 2025-02-14 05:00 → 2027-02-15 09:00 (+731d) | 2025-02-14 06:00 → 2027-02-15 10:00 (+731d) |  |  | constraint start no earlier than 2025-02-14 05:00 → start no earlier than 2027-02-15 09:00; baseline start none → 2027-02-15 09:00; baseline finish none → 2027-02-15 10:00 |

| ID | Task | Start | Finish | Other |
| --- | --- | --- | --- | --- |
| 71 | Совещание 3 | 2025-02-21 05:00 → 2027-02-22 09:00 (+731d) | 2025-02-21 06:00 → 2027-02-22 10:00 (+731d) | constraint start no earlier than 2025-02-21 05:00 → start no earlier than 2027-02-22 09:00; baseline start none → 2027-02-22 09:00; baseline finish none → 2027-02-22 10:00 |
| 72 | Совещание 4 | 2025-02-28 05:00 → 2027-03-01 09:00 (+731d) | 2025-02-28 06:00 → 2027-03-01 10:00 (+731d) | constraint start no earlier than 2025-02-28 05:00 → start no earlier than 2027-03-01 09:00; baseline start none → 2027-03-01 09:00; baseline finish none → 2027-03-01 10:00 |
| 73 | Совещание 5 | 2025-03-07 05:00 → 2027-03-08 09:00 (+731d) | 2025-03-07 06:00 → 2027-03-08 10:00 (+731d) | constraint start no earlier than 2025-03-07 05:00 → start no earlier than 2027-03-08 09:00; baseline start none → 2027-03-08 09:00; baseline finish none → 2027-03-08 10:00 |
| 74 | Совещание 6 | 2025-03-14 05:00 → 2027-03-15 09:00 (+731d) | 2025-03-14 06:00 → 2027-03-15 10:00 (+731d) | constraint start no earlier than 2025-03-14 05:00 → start no earlier than 2027-03-15 09:00; baseline start none → 2027-03-15 09:00; baseline finish none → 2027-03-15 10:00 |
| 75 | Совещание 7 | 2025-03-21 05:00 → 2027-03-22 09:00 (+731d) | 2025-03-21 06:00 → 2027-03-22 10:00 (+731d) | constraint start no earlier than 2025-03-21 05:00 → start no earlier than 2027-03-22 09:00; baseline start none → 2027-03-22 09:00; baseline finish none → 2027-03-22 10:00 |
| 76 | Совещание 8 | 2025-03-28 05:00 → 2027-03-29 09:00 (+731d) | 2025-03-28 06:00 → 2027-03-29 10:00 (+731d) | constraint start no earlier than 2025-03-28 05:00 → start no earlier than 2027-03-29 09:00; baseline start none → 2027-03-29 09:00; baseline finish none → 2027-03-29 10:00 |
| 77 | Совещание 9 | 2025-04-04 05:00 → 2027-04-05 09:00 (+731d) | 2025-04-04 06:00 → 2027-04-05 10:00 (+731d) | constraint start no earlier than 2025-04-04 05:00 → start no earlier than 2027-04-05 09:00; baseline start none → 2027-04-05 09:00; baseline finish none → 2027-04-05 10:00 |
| 78 | Совещание 10 | 2025-04-11 05:00 → 2027-04-12 09:00 (+731d) | 2025-04-11 06:00 → 2027-04-12 10:00 (+731d) | constraint start no earlier than 2025-04-11 05:00 → start no earlier than 2027-04-12 09:00; baseline start none → 2027-04-12 09:00; baseline finish none → 2027-04-12 10:00 |
| 79 | Совещание 11 | 2025-04-18 05:00 → 2027-04-19 09:00 (+731d) | 2025-04-18 06:00 → 2027-04-19 10:00 (+731d) | constraint start no earlier than 2025-04-18 05:00 → start no earlier than 2027-04-19 09:00; baseline start none → 2027-04-19 09:00; baseline finish none → 2027-04-19 10:00 |
| 80 | Совещание 12 | 2025-04-25 05:00 → 2027-04-26 09:00 (+731d) | 2025-04-25 06:00 → 2027-04-26 10:00 (+731d) | constraint start no earlier than 2025-04-25 05:00 → start no earlier than 2027-04-26 09:00; baseline start none → 2027-04-26 09:00; baseline finish none → 2027-04-26 10:00 |
| 81 | Совещание 13 | 2025-05-02 05:00 → 2027-05-03 09:00 (+731d) | 2025-05-02 06:00 → 2027-05-03 10:00 (+731d) | constraint start no earlier than 2025-05-02 05:00 → start no earlier than 2027-05-03 09:00; baseline start none → 2027-05-03 09:00; baseline finish none → 2027-05-03 10:00 |
| 82 | Совещание 14 | 2025-05-09 05:00 → 2027-05-10 09:00 (+731d) | 2025-05-09 06:00 → 2027-05-10 10:00 (+731d) | constraint start no earlier than 2025-05-09 05:00 → start no earlier than 2027-05-10 09:00; baseline start none → 2027-05-10 09:00; baseline finish none → 2027-05-10 10:00 |
| 83 | Совещание 15 | 2025-05-16 05:00 → 2027-05-17 09:00 (+731d) | 2025-05-16 06:00 → 2027-05-17 10:00 (+731d) | constraint start no earlier than 2025-05-16 05:00 → start no earlier than 2027-05-17 09:00; baseline start none → 2027-05-17 09:00; baseline finish none → 2027-05-17 10:00 |
| 84 | Совещание 16 | 2025-05-23 05:00 → 2027-05-24 09:00 (+731d) | 2025-05-23 06:00 → 2027-05-24 10:00 (+731d) | constraint start no earlier than 2025-05-23 05:00 → start no earlier than 2027-05-24 09:00; baseline start none → 2027-05-24 09:00; baseline finish none → 2027-05-24 10:00 |
| 85 | Совещание 17 | 2025-05-30 05:00 → 2027-05-31 09:00 (+731d) | 2025-05-30 06:00 → 2027-05-31 10:00 (+731d) | constraint start no earlier than 2025-05-30 05:00 → start no earlier than 2027-05-31 09:00; baseline start none → 2027-05-31 09:00; baseline finish none → 2027-05-31 10:00 |
| 86 | Совещание 18 | 2025-06-06 05:00 → 2027-06-07 09:00 (+731d) | 2025-06-06 06:00 → 2027-06-07 10:00 (+731d) | constraint start no earlier than 2025-06-06 05:00 → start no earlier than 2027-06-07 09:00; baseline start none → 2027-06-07 09:00; baseline finish none → 2027-06-07 10:00 |
| 87 | Совещание 19 | 2025-06-13 05:00 → 2027-06-14 09:00 (+731d) | 2025-06-13 06:00 → 2027-06-14 10:00 (+731d) | constraint start no earlier than 2025-06-13 05:00 → start no earlier than 2027-06-14 09:00; baseline start none → 2027-06-14 09:00; baseline finish none → 2027-06-14 10:00 |
| 88 | Совещание 20 | 2025-06-20 05:00 → 2027-06-21 09:00 (+731d) | 2025-06-20 06:00 → 2027-06-21 10:00 (+731d) | constraint start no earlier than 2025-06-20 05:00 → start no earlier than 2027-06-21 09:00; baseline start none → 2027-06-21 09:00; baseline finish none → 2027-06-21 10:00 |
| 89 | Совещание 21 | 2025-06-27 05:00 → 2027-06-28 09:00 (+731d) | 2025-06-27 06:00 → 2027-06-28 10:00 (+731d) | constraint start no earlier than 2025-06-27 05:00 → start no earlier than 2027-06-28 09:00; baseline start none → 2027-06-28 09:00; baseline finish none → 2027-06-28 10:00 |
| 90 | Совещание 22 | 2025-07-04 05:00 → 2027-07-05 09:00 (+731d) | 2025-07-04 06:00 → 2027-07-05 10:00 (+731d) | constraint start no earlier than 2025-07-04 05:00 → start no earlier than 2027-07-05 09:00; baseline start none → 2027-07-05 09:00; baseline finish none → 2027-07-05 10:00 |
| 91 | Совещание 23 | 2025-07-11 05:00 → 2027-07-12 09:00 (+731d) | 2025-07-11 06:00 → 2027-07-12 10:00 (+731d) | constraint start no earlier than 2025-07-11 05:00 → start no earlier than 2027-07-12 09:00; baseline start none → 2027-07-12 09:00; baseline finish none → 2027-07-12 10:00 |
| 92 | Совещание 24 | 2025-07-18 05:00 → 2027-07-19 09:00 (+731d) | 2025-07-18 06:00 → 2027-07-19 10:00 (+731d) | constraint start no earlier than 2025-07-18 05:00 → start no earlier than 2027-07-19 09:00; baseline start none → 2027-07-19 09:00; baseline finish none → 2027-07-19 10:00 |
| 93 | Совещание 25 | 2025-07-25 05:00 → 2027-07-26 09:00 (+731d) | 2025-07-25 06:00 → 2027-07-26 10:00 (+731d) | constraint start no earlier than 2025-07-25 05:00 → start no earlier than 2027-07-26 09:00; baseline start none → 2027-07-26 09:00; baseline finish none → 2027-07-26 10:00 |
| 94 | Совещание 26 | 2025-08-01 05:00 → 2027-08-02 09:00 (+731d) | 2025-08-01 06:00 → 2027-08-02 10:00 (+731d) | constraint start no earlier than 2025-08-01 05:00 → start no earlier than 2027-08-02 09:00; baseline start none → 2027-08-02 09:00; baseline finish none → 2027-08-02 10:00 |
| 95 | Совещание 27 | 2025-08-08 05:00 → 2027-08-09 09:00 (+731d) | 2025-08-08 06:00 → 2027-08-09 10:00 (+731d) | constraint start no earlier than 2025-08-08 05:00 → start no earlier than 2027-08-09 09:00; baseline start none → 2027-08-09 09:00; baseline finish none → 2027-08-09 10:00 |
| 96 | Совещание 28 | 2025-08-15 05:00 → 2027-08-16 09:00 (+731d) | 2025-08-15 06:00 → 2027-08-16 10:00 (+731d) | constraint start no earlier than 2025-08-15 05:00 → start no earlier than 2027-08-16 09:00; baseline start none → 2027-08-16 09:00; baseline finish none → 2027-08-16 10:00 |
| 97 | Закрытие проекта и архивирование | 2025-08-14 14:00 → 2027-08-16 09:00 (+732d) | 2025-08-18 13:00 → 2027-08-17 18:00 (+729d) | baseline start 2025-08-14 14:00 → 2027-08-16 09:00; baseline finish 2025-08-18 13:00 → 2027-08-17 18:00 |

## Version 3 (data date 2027-04-01, saved 2026-11-18)

Note of the change: Reset project completion to 0% (Shisterin)

Last finish stays 2027-08-17. Complete tasks 19 → 0.

Changed:

| ID | Task | Start | Finish | Duration | Complete | Total float | Other |
| --- | --- | --- | --- | --- | --- | --- | --- |
| 1 | **Этап 1. Инициализация проекта и анализ требований** | 2027-02-03 09:00 A → 2027-02-03 09:00 | 2027-02-23 13:00 A → 2027-02-23 13:00 |  | 100% → 0% | none → 0d |  |
| 2 | Утверждение концепции и устав проекта | 2027-02-03 09:00 A → 2027-02-03 09:00 | 2027-02-05 18:00 A → 2027-02-05 18:00 |  | 100% → 0% |  |  |
| 3 | Анализ бизнес-процессов интернет-банка | 2027-02-05 14:00 A → 2027-02-05 14:00 | 2027-02-12 13:00 A → 2027-02-12 13:00 |  | 100% → 0% |  |  |
| 4 | Сбор и систематизация требований заказчика | 2027-02-10 14:00 A → 2027-02-10 14:00 | 2027-02-18 13:00 A → 2027-02-18 13:00 |  | 100% → 0% |  |  |
| 5 | Изучение нормативных требований (152-ФЗ, ГОСТ Р 56920) | 2027-02-12 14:00 A → 2027-02-12 14:00 | 2027-02-18 13:00 A → 2027-02-18 13:00 |  | 100% → 0% |  |  |
| 6 | Анализ конкурентных мобильных банков | 2027-02-12 14:00 A → 2027-02-12 14:00 | 2027-02-18 13:00 A → 2027-02-18 13:00 |  | 100% → 0% |  |  |
| 7 | Формирование бэклога и критериев приёмки | 2027-02-18 14:00 A → 2027-02-18 14:00 | 2027-02-23 13:00 A → 2027-02-23 13:00 |  | 100% → 0% |  |  |
| 8 | Создание репозитория и настройка CI/CD-конвейера | 2027-02-05 09:00 A → 2027-02-05 09:00 | 2027-02-09 18:00 A → 2027-02-09 18:00 |  | 100% → 0% |  |  |
| 9 | Развёртывание тестового стенда и средств автоматизации | 2027-02-10 09:00 A → 2027-02-10 09:00 | 2027-02-16 18:00 A → 2027-02-16 18:00 |  | 100% → 0% |  |  |
| 10 | Веха 1. Согласование требований и плана проекта | 2027-02-22 09:00 A → 2027-02-22 09:00 | 2027-02-22 09:00 A → 2027-02-22 09:00 |  | 100% → 0% |  |  |
| 11 | **Этап 2. Проектирование мобильного приложения** | 2027-02-22 09:00 A → 2027-02-22 09:00 | 2027-03-24 14:00 A → 2027-03-24 14:00 |  | 100% → 0% | none → 0d |  |
| 12 | Разработка целевой архитектуры мобильного приложения | 2027-02-22 09:00 A → 2027-02-22 09:00 | 2027-03-01 18:00 A → 2027-03-01 18:00 |  | 100% → 0% |  |  |
| 13 | Проектирование UX/UI мобильного интерфейса | 2027-02-22 09:00 A → 2027-02-22 09:00 | 2027-03-03 18:00 A → 2027-03-03 18:00 |  | 100% → 0% |  |  |
| 14 | Проектирование интеграционного слоя с API банка | 2027-03-03 14:00 A → 2027-03-03 14:00 | 2027-03-11 13:00 A → 2027-03-11 13:00 |  | 100% → 0% |  |  |
| 15 | Проектирование схемы БД офлайн-кэша | 2027-03-04 14:00 A → 2027-03-04 14:00 | 2027-03-11 13:00 A → 2027-03-11 13:00 |  | 100% → 0% |  |  |
| 16 | Проектирование модели безопасности и аутентификации | 2027-03-03 14:00 A → 2027-03-03 14:00 | 2027-03-10 13:00 A → 2027-03-10 13:00 |  | 100% → 0% |  |  |
| 17 | Разработка технического задания и API-контрактов | 2027-03-11 14:00 A → 2027-03-11 14:00 | 2027-03-19 13:00 A → 2027-03-19 13:00 |  | 100% → 0% |  |  |
| 18 | Разработка дизайн-макетов ключевых экранов | 2027-03-05 14:00 A → 2027-03-05 14:00 | 2027-03-15 13:00 A → 2027-03-15 13:00 |  | 100% → 0% |  |  |
| 19 | Согласование дизайн-макетов с заказчиком | 2027-03-15 09:00 A → 2027-03-15 09:00 | 2027-03-18 18:00 A → 2027-03-18 18:00 |  | 100% → 0% |  |  |
| 20 | Рецензирование архитектурных решений | 2027-03-19 14:00 A → 2027-03-19 14:00 | 2027-03-24 13:00 A → 2027-03-24 13:00 |  | 100% → 0% |  |  |
| 21 | Веха 2. Архитектура мобильного приложения согласована | 2027-03-24 14:00 A → 2027-03-24 14:00 | 2027-03-24 14:00 A → 2027-03-24 14:00 |  | 100% → 0% |  |  |
| 22 | **Этап 3. Разработка функционального ядра** | 2027-03-24 14:00 A → 2027-03-24 14:00 | 2027-05-12 18:00 → 2027-05-07 14:00 (-5d) | 35.5d → 32d | 5% → 0% |  | baseline finish 2027-05-12 18:00 → 2027-05-07 14:00 |
| 23 | Разработка каркаса приложения и навигации | 2027-03-24 14:00 A → 2027-03-24 14:00 | 2027-05-03 14:48 → 2027-04-05 13:00 (-28d) | 28.1d → 8d | 23% → 0% |  | baseline finish 2027-05-03 14:48 → 2027-04-05 13:00 |
| 24 | Реализация экрана аутентификации (PIN, биометрия) | 2027-04-05 09:00 A → 2027-04-05 09:00 | 2027-05-06 15:45 → 2027-04-12 18:00 (-24d) | 23.72d → 6d | 5% → 0% |  | baseline finish 2027-05-06 15:45 → 2027-04-12 18:00 |
| 25 | Реализация главного экрана и списка операций | 2027-04-05 09:00 A → 2027-04-05 09:00 | 2027-05-06 15:45 → 2027-04-12 18:00 (-24d) | 23.72d → 6d | 5% → 0% |  | baseline finish 2027-05-06 15:45 → 2027-04-12 18:00 |
| 26 | Реализация экрана платежей и переводов |  | 2027-05-12 18:00 → 2027-04-23 18:00 (-19d) | 23d → 10d |  |  | baseline finish 2027-05-12 18:00 → 2027-04-23 18:00 |
| 27 | Реализация чатов с поддержкой банка |  | 2027-05-06 18:00 → 2027-04-19 18:00 (-17d) | 19d → 6d |  |  | baseline finish 2027-05-06 18:00 → 2027-04-19 18:00 |
| 28 | Реализация витрины продуктов и вкладов |  | 2027-05-05 18:00 → 2027-04-16 18:00 (-19d) | 18d → 5d |  |  | baseline finish 2027-05-05 18:00 → 2027-04-16 18:00 |
| 29 | Разработка офлайн-режима и механизма синхронизации |  | 2027-05-10 18:00 → 2027-05-05 18:00 (-5d) | 11d → 8d |  |  | baseline finish 2027-05-10 18:00 → 2027-05-05 18:00 |
| 30 | Интеграция с push-уведомлениями | 2027-04-05 09:00 A → 2027-04-05 09:00 | 2027-05-04 15:45 → 2027-04-08 18:00 (-26d) | 21.72d → 4d | 6% → 0% |  | baseline finish 2027-05-04 15:45 → 2027-04-08 18:00 |
| 32 | Реализация офлайн-кэша на стороне клиента | 2027-04-05 09:00 A → 2027-04-05 09:00 | 2027-05-06 15:45 → 2027-04-12 18:00 (-24d) | 23.72d → 6d | 5% → 0% |  | baseline finish 2027-05-06 15:45 → 2027-04-12 18:00 |
| 33 | Реализация аналитических дашбордов |  | 2027-05-06 13:00 → 2027-04-28 13:00 (-8d) | 11d → 5d |  |  | baseline finish 2027-05-06 13:00 → 2027-04-28 13:00 |
| 34 | Написание unit-тестов (целевое покрытие 80%) |  | 2027-05-06 18:00 → 2027-05-04 18:00 (-2d) | 9d → 7d |  |  | baseline finish 2027-05-06 18:00 → 2027-05-04 18:00 |
| 69 | Совещание 1 |  |  |  |  | none → 136.88d | resources none → Руководитель проекта [50%]; Бизнес-аналитик; Архитектор; Мобильный разработчик; Бэкенд-разработчик; Тестировщик |
| 70 | Совещание 2 |  |  |  |  | none → 131.88d | resources none → Руководитель проекта [50%]; Бизнес-аналитик; Архитектор; Мобильный разработчик; Бэкенд-разработчик; Тестировщик |
| 71 | Совещание 3 |  |  |  |  | none → 126.88d | resources none → Руководитель проекта [50%]; Бизнес-аналитик; Архитектор; Мобильный разработчик; Бэкенд-разработчик; Тестировщик |
| 72 | Совещание 4 |  |  |  |  | none → 121.88d | resources none → Руководитель проекта [50%]; Бизнес-аналитик; Архитектор; Мобильный разработчик; Бэкенд-разработчик; Тестировщик |
| 73 | Совещание 5 |  |  |  |  | none → 116.88d | resources none → Руководитель проекта [50%]; Бизнес-аналитик; Архитектор; Мобильный разработчик; Бэкенд-разработчик; Тестировщик |
| 74 | Совещание 6 |  |  |  |  | none → 111.88d | resources none → Руководитель проекта [50%]; Бизнес-аналитик; Архитектор; Мобильный разработчик; Бэкенд-разработчик; Тестировщик |
| 75 | Совещание 7 |  |  |  |  | none → 106.88d | resources none → Руководитель проекта [50%]; Бизнес-аналитик; Архитектор; Мобильный разработчик; Бэкенд-разработчик; Тестировщик |
| 76 | Совещание 8 |  |  |  |  | none → 101.88d | resources none → Руководитель проекта [50%]; Бизнес-аналитик; Архитектор; Мобильный разработчик; Бэкенд-разработчик; Тестировщик |
| 77 | Совещание 9 |  |  |  |  | none → 96.88d | resources none → Руководитель проекта [50%]; Бизнес-аналитик; Архитектор; Мобильный разработчик; Бэкенд-разработчик; Тестировщик |
| 78 | Совещание 10 |  |  |  |  | none → 91.88d | resources none → Руководитель проекта [50%]; Бизнес-аналитик; Архитектор; Мобильный разработчик; Бэкенд-разработчик; Тестировщик |
| 79 | Совещание 11 |  |  |  |  | none → 86.88d | resources none → Руководитель проекта [50%]; Бизнес-аналитик; Архитектор; Мобильный разработчик; Бэкенд-разработчик; Тестировщик |
| 80 | Совещание 12 |  |  |  |  | none → 81.88d | resources none → Руководитель проекта [50%]; Бизнес-аналитик; Архитектор; Мобильный разработчик; Бэкенд-разработчик; Тестировщик |
| 81 | Совещание 13 |  |  |  |  | none → 76.88d | resources none → Руководитель проекта [50%]; Бизнес-аналитик; Архитектор; Мобильный разработчик; Бэкенд-разработчик; Тестировщик |
| 82 | Совещание 14 |  |  |  |  | none → 71.88d | resources none → Руководитель проекта [50%]; Бизнес-аналитик; Архитектор; Мобильный разработчик; Бэкенд-разработчик; Тестировщик |
| 83 | Совещание 15 |  |  |  |  | none → 66.88d | resources none → Руководитель проекта [50%]; Бизнес-аналитик; Архитектор; Мобильный разработчик; Бэкенд-разработчик; Тестировщик |
| 84 | Совещание 16 |  |  |  |  | none → 61.88d | resources none → Руководитель проекта [50%]; Бизнес-аналитик; Архитектор; Мобильный разработчик; Бэкенд-разработчик; Тестировщик |
| 85 | Совещание 17 |  |  |  |  | none → 56.88d | resources none → Руководитель проекта [50%]; Бизнес-аналитик; Архитектор; Мобильный разработчик; Бэкенд-разработчик; Тестировщик |
| 86 | Совещание 18 |  |  |  |  | none → 51.88d | resources none → Руководитель проекта [50%]; Бизнес-аналитик; Архитектор; Мобильный разработчик; Бэкенд-разработчик; Тестировщик |
| 87 | Совещание 19 |  |  |  |  | none → 46.88d | resources none → Руководитель проекта [50%]; Бизнес-аналитик; Архитектор; Мобильный разработчик; Бэкенд-разработчик; Тестировщик |
| 88 | Совещание 20 |  |  |  |  | none → 41.88d | resources none → Руководитель проекта [50%]; Бизнес-аналитик; Архитектор; Мобильный разработчик; Бэкенд-разработчик; Тестировщик |
| 89 | Совещание 21 |  |  |  |  | none → 36.88d | resources none → Руководитель проекта [50%]; Бизнес-аналитик; Архитектор; Мобильный разработчик; Бэкенд-разработчик; Тестировщик |
| 90 | Совещание 22 |  |  |  |  | none → 31.88d | resources none → Руководитель проекта [50%]; Бизнес-аналитик; Архитектор; Мобильный разработчик; Бэкенд-разработчик; Тестировщик |
| 91 | Совещание 23 |  |  |  |  | none → 26.88d | resources none → Руководитель проекта [50%]; Бизнес-аналитик; Архитектор; Мобильный разработчик; Бэкенд-разработчик; Тестировщик |
| 92 | Совещание 24 |  |  |  |  | none → 21.88d | resources none → Руководитель проекта [50%]; Бизнес-аналитик; Архитектор; Мобильный разработчик; Бэкенд-разработчик; Тестировщик |
| 93 | Совещание 25 |  |  |  |  | none → 16.88d | resources none → Руководитель проекта [50%]; Бизнес-аналитик; Архитектор; Мобильный разработчик; Бэкенд-разработчик; Тестировщик |
| 94 | Совещание 26 |  |  |  |  | none → 11.88d | resources none → Руководитель проекта [50%]; Бизнес-аналитик; Архитектор; Мобильный разработчик; Бэкенд-разработчик; Тестировщик |
| 95 | Совещание 27 |  |  |  |  | none → 6.88d | resources none → Руководитель проекта [50%]; Бизнес-аналитик; Архитектор; Мобильный разработчик; Бэкенд-разработчик; Тестировщик |
| 96 | Совещание 28 |  |  |  |  | none → 1.88d | resources none → Руководитель проекта [50%]; Бизнес-аналитик; Архитектор; Мобильный разработчик; Бэкенд-разработчик; Тестировщик |
